# SAP Activate for SAP S/4HANA Cloud Public Edition (3-system landscape)

Schedule from MS Project XML, 2024-07-24 to 2024-10-01.

## Calendars

- Standard: Mon-Fri 08:00-12:00, 13:00-17:00; Sat-Sun off.

## Resources

| Resource |
| --- |
| Business Process Expert |
| Project Lead |
| System Administrator |
| Extensibility Expert |
| Enterprise Architect |
| Organizational Change Management Expert |
| Education Expert |
| Technology Expert |
| Integration Implementation Expert |
| Data Migration Expert |
| Testing Expert |
| Analytics Expert |
| Configuration Expert |
| Output Management and Forms Expert |

## Schedule

| ID | WBS | Task | Duration | Start | Finish | Predecessors | Resources |
| --- | --- | --- | --- | --- | --- | --- | --- |
| 1 | 0 | **SAP Activate for SAP S/4HANA Cloud Public Edition (3-system landscape)** | 400h | 2024-07-24 08:00 | 2024-10-01 17:00 |  |  |
| 2 | 1 | **Discover** | 0d | 2024-07-24 08:00 | 2024-07-24 17:00 |  |  |
| 3 | 1.1 | **Discovery Assessment** | 0d | 2024-07-24 08:00 | 2024-07-24 17:00 |  |  |
| 4 | 1.1.1 | Executing a SAP Digital Discovery Assessment | 8h | 2024-07-24 08:00 | 2024-07-24 17:00 |  | Business Process Expert |
| 5 | 1.1.2 | Generate SAP Digital Discovery Report | 8h | 2024-07-24 08:00 | 2024-07-24 17:00 | 4 | Business Process Expert |
| 6 | 1.1.3 | Prepare Discovery Assessment (Partner) | 8h | 2024-07-24 08:00 | 2024-07-24 17:00 | 5 | Project Lead |
| 7 | 1.2 | **Partner Demonstration Landscape** | 0d | 2024-07-24 08:00 | 2024-07-24 17:00 |  |  |
| 8 | 1.2.1 | Order Partner Demonstration Landscape | 8h | 2024-07-24 08:00 | 2024-07-24 17:00 | 6 | Project Lead |
| 9 | 1.2.2 | Initial Access to SAP for Me | 8h | 2024-07-24 08:00 | 2024-07-24 17:00 | 8 | System Administrator |
| 10 | 1.2.3 | Request Cloud test, demo, and development for SAP S/4HANA Cloud | 8h | 2024-07-24 08:00 | 2024-07-24 17:00 | 9 | System Administrator |
| 11 | 1.2.4 | Access Partner Demonstration Landscape | 8h | 2024-07-24 08:00 | 2024-07-24 17:00 | 10 | System Administrator |
| 12 | 1.2.5 | Develop Cloud Extensions | 8h | 2024-07-24 08:00 | 2024-07-24 17:00 | 11 | Extensibility Expert |
| 13 | 1.3 | **Cloud Trial** | 0d | 2024-07-24 08:00 | 2024-07-24 17:00 |  |  |
| 14 | 1.3.1 | Learn on a SAP S/4HANA Cloud Trial System | 8h | 2024-07-24 08:00 | 2024-07-24 17:00 | 12 | Business Process Expert |
| 15 | 1.4 | **Cloud Mindset Assessment** | 0d | 2024-07-24 08:00 | 2024-07-24 17:00 |  |  |
| 16 | 1.4.1 | Execute the Cloud Mindset | 8h | 2024-07-24 08:00 | 2024-07-24 17:00 | 14 | Project Lead |
| 17 | 1.4.2 | Select the Right Cloud Partner | 8h | 2024-07-24 08:00 | 2024-07-24 17:00 | 16 | Project Lead |
| 18 | 1.5 | **Application Value and Scoping** | 0d | 2024-07-24 08:00 | 2024-07-24 17:00 |  |  |
| 19 | 1.5.1 | Discover the Value of SAP Business Technology Platform for Your Company | 8h | 2024-07-24 08:00 | 2024-07-24 17:00 | 17 | Business Process Expert |
| 20 | 1.5.2 | Perform a Digital Value Discovery Workshop | 8h | 2024-07-24 08:00 | 2024-07-24 17:00 | 19 | Business Process Expert |
| 21 | 1.5.3 | Perform Benchmarking Assessment for Value Baselining | 8h | 2024-07-24 08:00 | 2024-07-24 17:00 | 20 | Business Process Expert |
| 22 | 1.5.4 | Define the Implementation Strategy | 8h | 2024-07-24 08:00 | 2024-07-24 17:00 | 21 | Business Process Expert |
| 23 | 1.5.5 | Create a Strategic Road Map and Value Case | 8h | 2024-07-24 08:00 | 2024-07-24 17:00 | 22 | Business Process Expert; Enterprise Architect |
| 24 | 1.5.6 | Determine Functional Fit of SAP S/4HANA Cloud (ByDesign to S/4HANA Cloud)(Partner) | 8h | 2024-07-24 08:00 | 2024-07-24 17:00 | 23 | Business Process Expert |

Notes:
- 1: This Roadmap is intended to guide the implementation team through the SAP S/4HANA Cloud implementation. It is comprised of Phases, Deliverables, and Tasks in accordance with the SAP Activate methodology. In addition, accelerators are linked to the relevant deliverables and tasks making them easy to consume when they are needed. The Deliverables and Tasks are listed in sequential order based on the activity starting time. However, parallelization might be necessary to expedite the implementation. This roadmap covers the implementation of the core SAP S/4HANA Cloud solution. Projects that include SAP or third-party integrations may alter the procedures. SAP S/4HANA Cloud Public Edition (3-system landscape) See the Content tab for the structure breakdown of this implementation roadmap.View the Getting Started with SAP Roadmap Viewer presentation for roadmap assistance.Read the latest release notes here.Learn more about SAP S/4HANA Cloud Implementation Projects in the SAP S/4HANA Cloud 3-system landscape Onboarding Presentation.Discover how customers leveraged SAP Activate to achieve successful implementations by reading their stories here.Check out our SAP Activate Minute videos through our playlist.Release Date: July 24, 2024
- 2: The purpose of the Discover phase is to understand the functionality of SAP S/4HANA Cloud and how the solution can bring benefits to the business. Discover Phase Activities: User enablement via the trial system Solution scoping via the SAP Digital Discovery Assessment tool Value discovery By the end of this phase, the implementation scope, overall project timelines and target solution model are set and the implementation project is ready to begin.
- 3: The purpose of this deliverable is to document and capture project scope, through the SAP Digital Discovery, to generate a scoping report. The report will be used as a project scoping reference during the phases of the Implementation. The SAP Digital Discovery is a detailed assessment process that is used in the Discover phase to aid the project scoping process and to help position the customer for a successful implementation. The Digital Discovery Assessment app is used during the SAP Digital Discovery to: Provide clear visibility and insight into the current available capabilities of S/4HANA Cloud Centralize documentation and validation of business scope and integration requirements of SAP and non-SAP solutions within the customer’s landscape Document additional requirements identified in the customer’s landscape Generate a detailed report, that is used to validate integrations and outstanding questions that was captured during the detailed Digital Discovery Assessment workshop. Process Overview: Customer will receive an invitation email to join the SAP Digital Discovery Assessment. A scoping assessment is created for the customer in the Digital Discovery Assessment app which can be edited online before, during, and after the Digital Discovery Assessment workshop. The Account Team provides an enablement session of the Digital Discovery Assessment app. All key stakeholders are invited into the customer’s scoping assessment and can open the Digital Discovery Assessment app via the link provided in the invitation email Customer captures the systems, used in their systems landscape, and selects scope items for each functional area in the app. The customer can ask a question to SAP or take notes per business process in the app as well. Customer adds any additional integration requirements and selects relevant scope items. Generate a report from the Digital Discovery Assessment app that can be handed over to the Implementation team to use as the basis for the scoping of the project. / Workstream: Application Design and Configuration / Tags: GROW Adoption Plan, Hybrid Deployment (Two-Tier ERP)
- 4: The purpose of this task is for all key stakeholders to gain access to the Digital Discovery Assessment app and to capture the customer’s scope. The Account Team and all key stakeholders will use the Digital Discovery Assessment app to capture and continuously discuss the S/4HANA Cloud scoping in a centralized, web based, collaborative approach. Various members of the account team will work with the customer to define relevant business capabilities; identify integrations, and extensibility needed in the customer’s landscape; leverage Q&A sections; capture notes; and document any additional requirements specific to the customer’s journey to SAP S/4HANA Cloud. Prerequisites: Confirmation from an Account Executive that all key stakeholders have been invited to join the Digital Discovery Assessment. Key stakeholders have been enabled on how to use the Digital Discovery Assessment app. Results from the Transformation Navigator and/or a Business Scenario Recommendation (BSR) report have been provided to the Account Executive (AE), if the customer has gone through these assessments. For Retail processes, review Accel ID = S4H_2032. Outcome can be used as an input for this task. Apps Used: Digital Discovery Assessment Procedure: Use the SAP Digital Discovery Registration to self-register for access for the Digital Discovery Assessment app. Use the link in the registration confirmation email to access the Digital Discovery Assessment app. Document current, as is, system landscape in the Digital Discovery Assessment app. Document additional system landscape requirements, to be, system landscape in the Digital Discovery Assessment app. Review all the lines of business and their end-to-end solutions and select all scope items in the end-to-end solutions that meet the customer’s additional requirements. Select the scope item ID and review the scope item description in the SAP Signavio Process Navigator to gain further understanding of the scope item. Validate localizations and languages documented and chosen. Note(s): Links to the SAP Signavio Process Navigator scope items are imbedded in the Digital Discovery Assessment app. However, SAP Signavio Process Navigator can be used to review scope item’s descriptions and business benefits. Within the Digitial Discovery Assessment app, further details about the Integration Suite use case can be found under the SAP Cloud Platform use case in Left Panel. For customer considering SAP S/4HANA Cloud for retail, fashion, and vertical business, request the Accelerated Retail Assessment service from SAP to accelerate the evaluation of industry-specific solutions processes. / Workstream: Application Design and Configuration, Integration / Tags: GROW Adoption Plan, Hybrid Deployment (Two-Tier ERP), Industry Cloud Apps, Localization, SAP BTP Apps
- 5: The purpose of this task is to generate a report from the Digital Discovery Assessment app after the customer scoping is finalized. The report will be used as the basis for determining project scope during the phases of an implementation project(s). The report details: The percentage of scope items for functional business area selected Individual business capabilities selected Integration and additional requirements captured Questions raised by the customer around scope selected and additional requirements and the corresponding answers from the Account Team Apps Used: Digital Discovery Assessment Procedure: Generate the SAP Digital Discovery report from the Digital Discovery Assessment app. Hand report over to the Implementation team to use as the basis for the scoping of the project. Procedure Note(s): To upload the list of selected scope in Manage Scope app in Cloud ALM with your project, request an export in Excel format. To import the list of selected scope in Define Scope app in SAP Central Business Configuration, request an export in JSON format. / Workstream: Application Design and Configuration / Tags: GROW Adoption Plan, Hybrid Deployment (Two-Tier ERP)
- 6: The purpose of this task is for partners to use SAP Digital Discovery Assessment tool to help potential customer identify relevant solution processes with estimated implementation efforts. Procedure: Use SAP Digital Discovery Registration site to get access to SAP Digital Discovery Assessment tool. Login in with existing assigned SAP Universal ID of the partner. Access the Supply Chain of Selling tile to view license requirements, industry, localization information including estimation of efforts for the potential customer. Access the Digital Discovery Assessment tile to collaborate with customer on the selection of business content related scope for line of business and countries that are in scope. Procedure Note(s): Effort Estimation is provided by SAP to give an indication of effort required for the solution processes selected within the Digital Discovery Assessment tool. SAP suggests partner using the estimates as a baseline or foundation only. For complete project estimate, partner should also consider governance, testing, data migration, integrations, change management, number of countries and any other additional customer specific adaptation, extension and integration requirements. / Workstream: Application Design and Configuration
- 7: The purpose of this deliverable is to request and receive access to the cloud test, demo, and development for SAP S/4HANA Cloud landscape, the SAP Cloud ALM and the SAP Central Business Configuration tenants. Note that SAP Cloud ALM is not available in all countries/regions. / Workstream: Project Management, Technical Architecture & Infrastructure
- 8: The purpose of this task is to order the Cloud test, demo, and development for SAP S/4HANA Cloud landscape. The system provides access to an environment with the following capabilities: A Cloud test, demo, and development for SAP S/4HANA Cloud system with a tenant for customizing and configuration and a tenant for developer extensibility (ABAP environment). Access to an SAP Central Business Configuration tenant to activate and manage business configuration for the Cloud test, demo, and development for SAP S/4HANA Cloud SAP S/4HANA Cloud tenants. Access to an SAP Cloud ALM tenant to manage the entire landscape. The ordering process is offered by the SAP Non-Commercial Licensing. Refer to the SAP Partner Portal - How to Guides & FAQs accelerator. Once the order is complete, partners have access to the entitlement of the Cloud test, demo, and development for SAP S/4HANA Cloud and can start requesting the different tenants included in the landscape. Procedure: Access the SAP Partner Edge Demo Landscape and Click on the "Login" button. If you already have a profile, you don't need to create a new one. A new page will appear asking you to create a profile. Select the necessary options and complete your profile. Follow the instructions in the following onboarding video Accel ID = S4H_1037. Refer to this presentation S/4HANA Cloud Test, Demo and Development - Presentation to follow the process. Review the additional instructions in the Accel ID = S4H_1039. / Workstream: Project Management
- 9: The purpose of this task is to verify access and log into SAP for Me. In SAP for Me, customers and partners gain transparency and receive important alerts, metrics, and insights about their SAP product portfolio in one place. SAP for Me is a digital companion that helps customers and partners interact easily with SAP and get immediate guidance. SAP for Me is used in subsequent tasks to trigger the provisioning of different tenants and systems and check their status. SAP Cases (support tickets or service requests) can be created directly from SAP for Me. SAP Signavio Process Navigator required to review the SAP Best Practices content related to the scope items is accessible via SAP for Me. Prerequisites: SAP Support user (S-user) is available. Procedure: Access SAP for Me accelerator with the S-User account information received. If your IT contact is known but hasn't received your S-User Email, please check the SPAM email folder. If no emails were found, create an incident/service request. Follow the step via the SAP Note 1296527 - How to create a support case (contact SAP Product Support) - SAP for Me accelerator. Ensure you have access to the Dashboards: Validate access to the Systems & Provisioning Dashboard. Validate access to the Services & Support Dashboard. Validate access to the SAP Signavio Process Navigator or navigate to the Accel ID = S4H_176. Procedure Note(s): You need an SAP S-user ID to access SAP for Me Customer dashboards. Some content and cards require additional authorization. Contact your S-User Admin or Super Admin to get access. For additional questions or feedback about access to SAP for Me, customers can send an email via SAPforMe@sap.com Customers can contact a local SAP Customer Interaction Center via phone, email, or chat for all additional questions or feedback. / Workstream: Technical Architecture & Infrastructure
- 10: The purpose of this task is to request the Cloud test, demo, and development for SAP S/4HANA Cloud system access via the bundled provisioning in SAP for Me. The Initial Admin user makes the request in SAP for Me and will then receive an email with the access instructions. Partners will have the option to request multiple tenants within a single request: SAP Cloud ALM, Central Business Configuration tenants and Cloud test, demo, and development for SAP S/4HANA Cloud system are included in the bundled provisioning. Note that SAP Cloud ALM is not available in all countries/regions. The bundled provisioning request is associated with the Partner Demo Customizing tenant, and the provisioning of the Partner Demo Development is automatically triggered after this. Prerequisite: The Initial Admin user has been identified and has the right authorizations in SAP for Me Procedure: Request the Bundled Provisioning in SAP for Me via Accel ID = S4H_889. Locate the 'Partner Customizing tenant' in the ‘Provisioning’ section under ’Product Available for Provisioning' and click 'Start Provisioning. Select the appropriate dependent products if applicable, review and follow the instructions in the pop-up windows for next steps. Once the appropriate selections have been made and all details reviewed for each tenant, select ‘Submit’. The request will trigger the bundled system provisioning, and an email will be sent to the 'Initial Admin user' when the system/tenants are available. Note: The bundled provisioning request is associated with the Partner Demo Customizing tenant, and the provisioning of the Partner Demo Development is automatically triggered after this. Procedure Note(s): Customers are entitled to use SAP Cloud ALM if they subscribe to an SAP Cloud Service that includes SAP Enterprise Support and cloud editions. Note that SAP Cloud ALM is not available in all countries/regions. For further questions or feedback, please send an email to cloudalm@sap.com. Learn about SAP Cloud ALM by reviewing Help - SAP Cloud ALM or the Self-Enable on SAP Cloud ALM task. Learn more about SAP S/4HANA Cloud Starter system provisioning, including SAP Cloud ALM and SAP Central Business Configuration, via Accel ID = S4H_1051. For additional scenario information related to the required SAP Cloud Identity Services Administration, see the Accel ID = ACT_021. You need an SAP S-user ID to access SAP for Me Partner dashboards. Some content and cards require additional authorization. Contact your S-User Admin or Super Admin to get access. / Workstream: Technical Architecture & Infrastructure
- 11: The purpose of this task is to access the Request Cloud test, demo, and development for the SAP S/4HANA Cloud system, the SAP Cloud ALM tenant, and the SAP Central Business Configuration tenant. The System Administrator (or the partner contact) will receive various emails once the provisioning has been made via SAP for Me. Each email will provide a set of instructions and information on how to access the various tenants. Prerequisite: Order Partner Demonstration Landscape Request SAP Cloud ALM Tenant SAP Central Business Configuration provisioned. Procedure: Review the SAP Note 3481049 - SAP S/4HANA Cloud in a 3-system landscape: Release Restriction Note accelerator. Follow the instructions in the Cloud test, demo, and development for SAP S/4HANA Cloud accelerator, in the section below, to access the systems. Procedure Note(s): Partners can develop ABAP Cloud extensions in a Cloud test, demo, and development for SAP S/4HANA Cloud 1-system landscape and provide them to customers SAP S/4HANA Cloud Public Edition (3-system landscape) that is not connected to their current landscape. Refer to task Develop Cloud Extensions. If partners plan to use their namespace, ensure that they have created and installed the namespace as mentioned in Accel ID = S4H_1865. / Workstream: Technical Architecture & Infrastructure
- 12: The purpose of this task is to develop ABAP cloud extensions in the Cloud test, demo, and development for SAP S/4HANA Cloud 1-system landscape and deploy them to customers SAP S/4HANA Cloud 3-system target landscape that isn't connected to the 1-system landscape. Using Multi-Off delivery, partners can develop ABAP Cloud extensions and use the Git-Enabled Change and Transport System (gCTS) to deploy them to the customers S/4HANA Cloud landscape. Prerequisite: Received and accessed the Cloud test, demo, and development for SAP S/4HANA Cloud 1-system landscape Read all the prerequisites under ‘General Information’ section from Accel ID = S4H_1853. Procedure: Develop ABAP Cloud extensions by reading and following the step-by-step guide in the Accel ID = S4H_1853. Below is a summary of the activities: General Information and prerequisite before you start developing. Setup for Multi-Off Delivery Develop Cloud extensions Test the Cloud extensions Deliver the Cloud extension Patch and update the Cloud extensions. Troubleshooting Procedure Note(s): If partners plan to use their namespace, ensure that they have created and installed the namespace as mentioned in Accel ID = S4H_1865. / Workstream: Extensibility
- 13: The purpose of this deliverable is to get access to a SAP S/4HANA Cloud Trial system via the cloud trial. As a result, project members have access to the trial system for demoing, value identification, and impact evaluation. / Workstream: Customer Team Enablement
- 14: To support the value identification, and the impact evaluation in the Discover phase, it could be beneficial to have access to a trial system. SAP offers the SAP S/4HANA Cloud trial environment for users who want to discover the value of simplicity across concrete roles and predefined processes in finance, project management, and marketing. The trial system is available for limited period of 14 days. Procedure: To start your own trial, access the SAP S/4HANA trial pages via the SAP S/4HANA Cloud Trial accelerator. Users must first register in order to create a trial. If you don’t yet have sap.com account, you will need to create one using your e-mail address and providing information about you and your company. If you already have sap.com account, you may be asked to upgrade your account to access Cloud Appliance Library, which is required for running the trial. Users must also review and agree to Terms and Conditions for the 14-day free trial. The next screen will then provide you with your unique access link to the application and your User ID. Once you have completed registration process, SAP will also send you a confirmation e-mail with your logon details for SAP S/4HANA Cloud Trial. Keep the e-mail safe for the duration of the trial as it provides a unique User ID and application URL to access the trial environment. You are all set to start your trial system. / Workstream: Customer Team Enablement
- 15: The purpose of this deliverable is to assess user adoption risks levels and review recommendations for risk mitigation. Business software as a service may deliver sustained business value for organizations ready to implement standardized business processes and to adopt periodic product innovation shipments through frequent agile deployment. The deliverable assesses this organizational readiness and suggests action plans commensurate with the identified risk level to ensure sustained business success. / Workstream: Solution Adoption / Tags: GROW Adoption Plan
- 16: The purpose of this task is to assess organizational readiness for the cloud subscription business model and then use the results to create awareness for organizational change management (OCM) related topics and activities for the business stakeholders. Procedure: Gain insight through the use of the Customer Organizational Readiness for SAP S/4HANA Cloud Whitepaper accelerator. Watch the Cloud Mindset Video accelerator. Read the Cloud Mindset Now Blog accelerator. Review, distribute, and complete the Cloud Mindset Assessment accelerator(s). Review risk level determination value and recommendation for action. Procedure Note(s): Engage with SAP or the implementation partner prior to starting a project to assess OCM initiatives. / Workstream: Solution Adoption / Tags: GROW Adoption Plan
- 17: The purpose of this task is to find the right SAP Partner for the SAP S/4HANA Cloud implementation. The key to a successful implementation is a partner’s understanding and embracing of SAP Activate for S/4HANA Cloud and a deep solution knowledge in SAP S/4HANA Cloud, proven through a fully certified, dedicated delivery team. Procedure: Review and follow the RISE with SAP S/4HANA Cloud Service Partner Selection Guidance accelerator to get more insight on the process of selecting the right partner for a Cloud-centric implementation. Find the right partner via SAP Partner Finder accelerator. The search tool provides customers with an easy-to-use interface that searches through SAP's directory of thousands of SAP partners, to help them find the best match for their needs. / Workstream: Solution Adoption
- 18: The purpose of this deliverable is to create a strategic roadmap that serves as key input into the customer business case. Furthermore, a first impact analysis may have identified show stoppers or road blocks, which could affect the implementation strategy, and which need to be addressed in additional planning and preparation activities. / Workstream: Application Design and Configuration, Extensibility, Integration, Operations and Support / Tags: 2nd Wave Project / Rollout Project, GROW Adoption Plan, Hybrid Deployment (Two-Tier ERP)
- 19: The purpose of this task is to become familiar with SAP Business Technology Platform and discover the value it may bring to your company. Procedure Review the Learning Journey - Discovering SAP Business Technology Platform accelerator to explore the SAP Business Technology Platform capabilities, its features and business benefits and understand how you can use the latest technologies and intelligent automation to transform business processes. Refer accelerator Customer Stories - SAP Business Technology Platform to understand how customers have successfully leveraged the capabilities of SAP BTP. Review the Help - SAP Business Technology Platform (SAP BTP) accelerator to get more details on the following: Solutions and Services within SAP BTP Best Practices for SAP BTP What's New for SAP BTP Use Cases and Strategy related whitepaper. Read the ‘The business value of SAP Business Technology Platform’ section within SAP Business Technology Platform to access the following IDC SAP BTP business value whitepaper SAP BTP Business value webcast IDC SAP BTP business value assessment / Workstream: Application Design and Configuration, Extensibility / Tags: Artificial Intelligence Technology
- 20: The purpose of this task is to perform a value discovery workshop using an online game like tool that is powerful, interactive and hands-on, to uncover value of SAP solutions in a fun and engaging way. Prerequisites: Your SAP team has created the online, virtual workshop for your company and send you invitation. Procedure: Review the email and accept the workshop invitation to participate in the workshop Each participant can record pain points, strategic priorities for the company from the line of business that she/he represents. Reference the SAP Persona Value Discovery function for samples. Explore vision, strategy, industry trends and analysis for respective industry. Data collected from participants will be transferred to SAP Value Lifecycle Manager tools for Move the Needle, Benchmarking Report, etc. Build own case in modular approach to discover SAP solution capabilities based on Benchmarked Key Performance Indicators (KPIs) and Primary Value Drivers. Review SAP solution capability information to confirm relevancy. Create customer specific Innovation Map for the relevant solution capabilities with rough timeline (i.e. short, medium vs. long term), highlighting your current and future roadmap with clear owners assigned to each capability item. Transfer data to SAP Value Lifecycle Manager to create a business case. Generate a Point of View document that summarizes all the findings from the workshop. Procedure Note(s): Usage of SAP Value Lifecycle Manager tool is required when building own case in Module 1 of the modular approach. SAP Account Executive will be engaged towards the end of the of workshop. Customer can also submit questions to SAP Value Advisory and Solution Advisory during the workshop. / Workstream: Application Design and Configuration / Tags: 2nd Wave Project / Rollout Project
- 21: The purpose of this task is to perform a business process baseline, with the Line of Business heads, prior to the implementation of SAP S/4HANA Cloud. This analysis will help to determine the scope for the SAP S/4HANA Cloud implementation and prioritize the implementation of the scope. The results from this baseline will be used later in the Run phase to compare and to track the actual improvement in process maturity and key performance indicators. The SAP S/4HANA Benchmarking Assessment includes key business performance metrics and best practices for all process areas covered by SAP S/4HANA, such as: Procurement, Sales, Service, R&D Engineering, Supply Chain, Manufacturing, Asset Management, Finance, Human Resources, and Information Technology. Upon participation, you will receive a personalized scorecard in real-time showcasing the Key Performance Indicator (KPI) analysis and process maturity gap on best practices in comparison to industry peers. Procedure: Review the SAP Performance Benchmarking Assessment - Video Introduction accelerator to become self-enabled on the SAP S/4HANA Benchmarking Assessment. Self-enable on the output of Benchmarking exercise by reviewing the SAP S/4HANA Cloud Benchmarking Assessment – Sample accelerator. Self-enable on how to fill an assessment by reviewing the SAP S/4HANA Cloud Benchmarking Assessment – Tutorial accelerator. Register for the SAP S/4HANA Benchmarking Assessment via the SAP S/4HANA Cloud Benchmarking Assessment Registration accelerator. Fill out the SAP S/4HANA Benchmarking Assessment. Review the SAP S/4HANA Cloud Benchmarking Assessment – Overview accelerator for further step by step information on how to fill out the assessment. Download the results and store in a central location that can be referred to after the implementation. Procedure Notes: For any questions about the SAP S/4HANA Benchmarking Assessment or SAP’s Performance Benchmarking Program, please contact valuemanagement@sap.com. / Workstream: Application Design and Configuration / Tags: 2nd Wave Project / Rollout Project
- 22: The objective of this task is to define an implementation strategy for functional enhancements, based on the “to-be state” of the business architecture. The definition of the implementation strategy should cover aspects like: Should I re-shape the existing landscape when introducing the new functionality? Consider two-tier? What are dependencies, and what is the ideal sequence in the context of the overall release plan? What is the strategy for custom development of SAP Fiori UI’s and other custom objects? Are there any updates required in the security strategy? Those questions can be addressed jointly with SAP, by using a structured SAP Best Practices approach: Define the right set of decision criteria, and rank the options per criteria. The strategy in general should be driven by business needs. The more business critical a system is, the more serious to take the IT constraints. There is a document available which documents and explains the customer specific implementation strategy. Prerequisites: There is a draft version of the “to-be” state of the business architecture available already. Procedure: Define the implementation strategy. Document the results. Upload all documents to a central location so information can be shared across the project team. Procedure Notes: Learn how SAP Cloud ALM can help support the implementation journey by reviewing the content in the SAP Cloud ALM – Support Portal Home accelerator. / Workstream: Application Design and Configuration / Tags: 2nd Wave Project / Rollout Project, GROW Adoption Plan, Hybrid Deployment (Two-Tier ERP)
- 23: The objective of this task is to derive a strategic roadmap for continuous improvement of SAP S/4HANA Cloud considering the findings from previous tasks. The value case is based on identified business benefits leveraging SAP S/4HANA Cloud. All documents should be uploaded and stored in a central location so information can be shared across the project team. The road map should also consider having new organizational model (i.e. Help Desk, Key User, Customer Center of Expertise) to manage all SAP-related topics in order to achieve company’s goals and objectives. Prerequisites: There is a documented implementation roadmap available. The definition of the road map is based on key findings from previous tasks, identified architecture impact, and consideration of parallel initiatives and projects. Procedure: Agree on business transformation initiatives, and map the value contribution to the segmented areas. Compose a consolidated strategic roadmap for the implementation of SAP S/4HANA Cloud. Agree on requirements and conditions for the business case calculation. Define Key Performance Indicators (KPIs), and link them to the identified value drivers. Determine the value driver. Determine the cost driver. Review the Customer CoE Strategy Governance and Organization accelerator to understand the overall strategy and governance and the importance of having a Customer Center of Expertise organization. Review Backup and Disaster Recovery for S/4 HANA Cloud accelerator for the list of supported data centers and the difference between standard and add-on service. / Workstream: Application Design and Configuration, Operations and Support / Tags: 2nd Wave Project / Rollout Project
- 24: The objective of this task is to evaluate how well SAP S/4HANA Cloud aligns with the functional requirements of the current end-to-end procedures implemented using SAP Business ByDesign. Procedure: Review the attached accelerator Best fit of SAP S/4HANA Cloud for SMB to compare the coverage of existing end-to-end scenarios on SAP Business ByDesign with that of SAP S/4HANA Cloud Solution. The scenario coverage map provides the percentage of coverage on the SAP S/4HANA Cloud Public Edition broken down by end-to-end business scenarios Additional license requirements have been called out where end-to-end coverage can be achieved through other solutions. Extensions and Addons have not been considered for the coverage analysis. / Workstream: Application Design and Configuration / Tags: ByDesign to S/4HANA Cloud Transition (Partner)

| ID | WBS | Task | Duration | Start | Finish | Predecessors | Resources |
| --- | --- | --- | --- | --- | --- | --- | --- |
| 25 | 1.6 | **Organizational Change Management Overview** | 0d | 2024-07-24 08:00 | 2024-07-24 17:00 |  |  |
| 26 | 1.6.1 | Understand the Fundamentals of Organizational Change Management | 8h | 2024-07-24 08:00 | 2024-07-24 17:00 | 24 | Organizational Change Management Expert |
| 27 | 1.6.2 | Comprehend the Approach to Organizational Change Management | 8h | 2024-07-24 08:00 | 2024-07-24 17:00 | 26 | Organizational Change Management Expert |
| 28 | 1.6.3 | Provide Information on Organizational Change Management to Project Stakeholders | 8h | 2024-07-24 08:00 | 2024-07-24 17:00 | 27 | Organizational Change Management Expert |
| 29 | 2 | **Prepare** | 0d | 2024-07-24 08:00 | 2024-07-24 17:00 |  |  |
| 30 | 2.1 | **Getting Started with your SAP Implementation** | 0d | 2024-07-24 08:00 | 2024-07-24 17:00 |  |  |
| 31 | 2.1.1 | Join Embedded Launch Activities in SAP S/4HANA Cloud Public Edition Onboarding Journey | 8h | 2024-07-24 08:00 | 2024-07-24 17:00 | 28 | Project Lead |
| 32 | 2.1.2 | Review Overview Documentation for SAP S/4HANA Cloud Public Edition | 8h | 2024-07-24 08:00 | 2024-07-24 17:00 | 31 | Project Lead |
| 33 | 2.1.3 | Define Guardrails for the Implementation Project (ByDesign to S/4HANA Cloud) | 8h | 2024-07-24 08:00 | 2024-07-24 17:00 | 32 | Project Lead |
| 34 | 2.2 | **Supporting Tools for Implementation** | 0d | 2024-07-24 08:00 | 2024-07-24 17:00 | 30 |  |
| 35 | 2.2.1 | Verify Initial Admin/Technical Administrator | 8h | 2024-07-24 08:00 | 2024-07-24 17:00 | 33 | System Administrator |
| 36 | 2.2.2 | Initial Access to SAP for Me | 8h | 2024-07-24 08:00 | 2024-07-24 17:00 | 35 | System Administrator |
| 37 | 2.2.3 | Grant Access to Partner for Creating and Managing Cases | 8h | 2024-07-24 08:00 | 2024-07-24 17:00 | 36 | System Administrator |
| 38 | 2.2.4 | Ensure Project Team Members Access to the SAP Learning Hub | 8h | 2024-07-24 08:00 | 2024-07-24 17:00 | 37 | Education Expert |
| 39 | 2.2.5 | Ensure Project Team Members Access to the SAP Activate Community | 8h | 2024-07-24 08:00 | 2024-07-24 17:00 | 38 | System Administrator |
| 40 | 2.3 | **Request Initial System Access** | 0d | 2024-07-24 08:00 | 2024-07-24 17:00 | 34 |  |
| 41 | 2.3.1 | Request Initial System Access of SAP S/4HANA Cloud | 8h | 2024-07-24 08:00 | 2024-07-24 17:00 | 36 | System Administrator |
| 42 | 2.3.2 | Request SAP Analytics Cloud | 8h | 2024-07-24 08:00 | 2024-07-24 17:00 | 36 | System Administrator |
| 43 | 2.4 | **Initial System Access for SAP Cloud ALM** | 0d | 2024-07-24 08:00 | 2024-07-24 17:00 | 40 |  |
| 44 | 2.4.1 | Required Setup for SAP Cloud ALM | 8h | 2024-07-24 08:00 | 2024-07-24 17:00 | 41 | System Administrator |
| 45 | 2.5 | **Initial System Access for SAP Central Business Configuration System** | 0d | 2024-07-24 08:00 | 2024-07-24 17:00 | 34 |  |
| 46 | 2.5.1 | Access SAP Central Business Configuration Tenant | 8h | 2024-07-24 08:00 | 2024-07-24 17:00 | 44 | System Administrator |
| 47 | 2.5.2 | Set Up Starter Customizing and Development Tenants in SAP Central Business Configuration | 8h | 2024-07-24 08:00 | 2024-07-24 17:00 | 46 | System Administrator |
| 48 | 2.5.3 | Set Up SAP Central Business Configuration Integration to SAP Cloud ALM | 8h | 2024-07-24 08:00 | 2024-07-24 17:00 | 44 | System Administrator |

Notes:
- 25: The purpose of this deliverable is to establish a solid foundation for supporting an upcoming SAP cloud implementation through well-suited change management activities. Developing comprehensive expertise in handling the people aspects of a cloud implementation prior to the project start enables a realistic evaluation of both the organizational change management’s added value and the corresponding effort involved. A shared understanding of these aspects within the project team allows informed decision-making regarding the early-stage configuration of change management. This, in turn, facilitates a prompt initiation of change management activities, aligning with the fast pace of technological advancements in the cloud project. / Workstream: Solution Adoption / Tags: Organizational Change Management
- 26: The purpose of this task is to establish a shared perspective on the upcoming cloud implementation as a holistic business transformation, emphasizing the systematic handling of people-related challenges. This involves gaining fundamental insights into user adoption, understanding the usual progression of user adoption during an implementation project, and recognizing the importance of user adoption post go-live. This knowledge is crucial for understanding the concept of organizational change management and its benefits for the cloud project. Additionally, it enables a clear distinction between organizational change management and project management, clarifying the specific contributions each discipline makes to the overall success of the cloud implementation. Procedure: Familiarize yourself with the people side of cloud projects by consulting the explanations and videos available in the Why is the People Side of Cloud Projects Important accelerator. Explore the concept of user adoption by referring to the explanations and videos provided in the Why Does User Adoption Matter in Cloud Projects accelerator. Understand the role of organizational change management by reviewing the explanations and videos presented in the What is the Role of Organizational Change Management in SAP Cloud Projects accelerator. / Workstream: Solution Adoption / Tags: Organizational Change Management
- 27: The purpose of this task is to acquire an overview of the fundamental principles of organizational change management and the various dimensions of change management that need attention when supporting the people aspects of a cloud implementation. This facilitates a broader perspective on organizational management that extends beyond simply applying tools and assists in managing expectations towards change management. Furthermore, gaining more detailed information about the specific deliverables encompassed within these dimensions offers initial insights into the specific activities required to support the SAP cloud implementation project. Procedure: Understand the principles of organizational change management by referring to the section “Organizational Change Management as an Attitude” in the What is SAP's Understanding of Organizational Change Management accelerator. Gain insight into the organizational change management approach through the “Introduction of SAP's Organizational Change Management Framework” section in the How is SAP's Organizational Change Management Framework Structured accelerator. Enhance your understanding of the six dimensions of the approach by referring to the respective sections in the How is SAP's Organizational Change Management Framework Structured accelerator. / Workstream: Solution Adoption / Tags: Organizational Change Management
- 28: The purpose of this task is to raise awareness about the importance of people aspects in the cloud project and to ensure that relevant project stakeholders have a foundational understanding of organizational change management. These stakeholders include decision makers, leaders of affected business units, as well as project managers and team members. Particularly in larger implementation projects with diverse project roles and multiple roll-out phases, it is recommended to identify specific target groups and determine the particular change management knowledge each group needs. Given that the project team set-up may not be finalized at this stage, integrating information on change management into the project onboarding material is a viable option. Procedure: Choose the organizational change management content to be shared with relevant stakeholders, consulting the Discover Organizational Change Management for SAP Cloud Projects accelerator. Determine the delivery approach (e.g., info session, emails with links, onboarding material) and document decisions using the Knowledge Transfer Tracker accelerator. Distribute content and provide status updates, referencing the Knowledge Transfer Tracker accelerator. / Workstream: Solution Adoption / Tags: Organizational Change Management
- 29: The purpose of this phase is to provide the initial planning and preparation for the project. In this phase, the project is started, plans are finalized, project team is assigned, and work is under way to start the project optimally. Prepare Phase Activities: Define project goals, a high-level scope, and a project plan Identify and quantify business value objectives Secure executive sponsorship Establish project standards, organization and governance Define and secure approval for the implementation/upgrade strategy Define roles and responsibilities for the project team Validate the project objectives Establish project management, tracking, and reporting mechanisms for value delivery Begin self-enablement Receive and access the Cloud Starter System Kick off the project
- 30: Welcome to the SAP Activate implementation roadmap. This roadmap will act as a step-by-step guide throughout your implementation journey. The purpose of this deliverable is to start the journey of implementing your SAP solution using SAP Activate Methodology and to become familiar with the implementation process. / Workstream: Project Management, Technical Architecture & Infrastructure / Tags: 2nd Wave Project / Rollout Project, GROW Adoption Plan, Hybrid Deployment (Two-Tier ERP)
- 31: The purpose of this task is to prepare for participation in the Embedded Launch Activities within SAP customer onboarding. During the onboarding process, the SAP Onboarding Advisor will organize two Welcome & Introduction calls, introduce guided enablement, and facilitate the adoption touchpoint to conclude the initial implementation. Procedure: Attend the Welcome and Introduction workshop, where the main objective is to ensure the customer has received expected communications from SAP and can access the systems. In the case you have not been contacted by an SAP Onboarding Advisor, please reach out to your account manager. This workshop offers insights and guidance on the onboarding journey and plan, system provisioning, entitlements for SAP S/4HANA Cloud Public Edition, and SAP support, including an overview of Quality Checks. Review the GROW with SAP - Onboarding Resource Center and Blog - GROW with SAP S/4HANA Onboarding - New to SAP S/4HANA Cloud accelerators for additional information on the onboarding process. Become familiar with the Guided Enablement offered in the Onboarding Resources Center. Schedule your participation (either live or by watching the recording) for the 1:m onboarding sessions according your project schedule. Review SAP S/4HANA Cloud - Application Lifecycle Operational Responsibilities.pptx to help determine customer, partner and SAP responsibilities. Review the Continuous Quality Check & Improvement Services accelerator and submit a request for the Continuous Quality Check Transformation Assessment . Explore the SAP Business Technology Platform (BTP) Onboarding Resource Center accelerator to gain additional information and receive further guidance on the SAP Business Technology Platform. / Workstream: Project Management / Tags: 2nd Wave Project / Rollout Project, GROW Adoption Plan, Hybrid Deployment (Two-Tier ERP)
- 32: The purpose of this task is to become familiar with the SAP S/4HANA Cloud solution and SAP Activate Methodology. Procedure: Review the SAP S/4HANA Cloud 3-system Landscape Onboarding Presentation accelerator for an overview about SAP Activate and the implementation journey. Learn how an SAP implementation project works and how to get started by using the Key User Onboarding Guide accelerator. Review Using SAP S/4HANA Cloud for Single and Multi-Country Deployments accelerator to gain an insight into SAP Activate project practices applicable to both single and multi-country deployments. Review the Accel ID = S4H_1051. The accelerator contains the provisioning process for the SAP S/4HANA Cloud Starter tenants, including SAP Cloud ALM and SAP Central Business Configuration tenants. The details steps of the provisioning process can also be found detailed in the Technical Architecture and Infrastructure workstream. Review the SAP for Me Initial Access and User Setup accelerator. The accelerator has been created to guide customers from the contract signature until the first access to SAP for Me, the new digital companion for all support-related queries. Review the release restrictions including supported internet browser applications. See the SAP Note 3450904 - SAP S/4HANA Cloud Release Restrictions accelerator for more details. Review the Service Level Agreement for Cloud Services accelerator for downtime and maintenance windows. Review the SAP Activate for Upgrade of SAP S/4HANA Cloud Public Edition (3-system landscape) roadmap for an overview of the upgrade process. Review, bookmark, and refer to the SAP Notes for SAP S/4HANA Cloud Public Edition - FAQs collection for any questions or clarifications where you cannot find the answer in this implementation roadmap. Verify the Initial Admin User with the SAP account team. The Initial Admin User is the person that will receive communications from SAP including the system credentials and upgrade information. Procedure Note(s): If the person receiving the cloud system emails (Initial Admin User) is incorrect, Create an Incident/Service Request with the Subject ‘'Request update to the Initial Admin User, Description ‘'Please change the Initial Admin User to <NAME>, <EMAIL ADDRESS>' and component XX-S4C-OPR-SRV. Only one person is assigned as an Initial Admin User. This person receives the system provisioning notifications and is the main contact for the systems. Multiple people can be assigned as a Communication Contact. These people receive general communications related to the SAP S/4HANA Cloud system. Refer to the Initial Access to SAP for Me task for guidance on establishing access to SAP Signavio Process Navigator and submitting support tickets. / Workstream: Project Management / Tags: 2nd Wave Project / Rollout Project, GROW Adoption Plan, Hybrid Deployment (Two-Tier ERP), Industry Cloud Apps
- 33: The purpose of this task is to define strategic and program-specific goals for the customer’s cloud implementation project. Procedure: Gathering of challenges and elaboration of internal and external requirements from a business and IT perspective. Derivation of lighthouses and fields of action along the dimensions of Products / Portfolio Processes Technology and IT Organization Prioritization and scheduling of fields of action and goals using a structured method. Formulate the guardrails and design principles for customer’s cloud implementation project. Use the attached accelerator Guardrails for ByDesign Transition Project to help define the guardrails for your implementation project. / Workstream: Solution Adoption / Tags: ByDesign to S/4HANA Cloud Transition (Partner)
- 34: The purpose of this deliverable is to set up the access for all team members to the SAP Support Portal, SAP Signavio Process Navigator, SAP Activate Community and other tools which are used in the implementation. / Workstream: Application Design and Configuration, Customer Team Enablement, Integration, Project Management, Technical Architecture & Infrastructure / Tags: 2nd Wave Project / Rollout Project
- 35: The purpose of this task to verify and confirm the Initial Admin user (called Technical Administrator on the contract). The Initial Admin user refers to the individual designated to receive communications from SAP, including the system credentials and upgrade information. This person is listed on the contract/sales order as the Technical Administrator and will have the role of a super administrator or cloud administrator. If this is a new SAP customer and has not had any S-users yet, a new S-User is created and assigned to this user. This administrator will receive all authorizations that are required to fulfill SAP related tasks on the SAP for Me portal. The role and responsibilities of administrators include, but are not limited to: Creating additional S-user IDs Maintaining access authorizations for all users Receiving system provisioning communication emails 2896942 - How Super and Cloud Administrators manage Cloud Notification subscriptions for other users Prerequisite: SAP Universal ID created Procedure: Verify the Initial Admin User/ Technical Administrator listed in the sales order. This user is designated to receive the communications emails from SAP including the systems credentials and is listed as the person responsible to request the systems. If the person's name is correct, start with the provisioning request by following task Initial Access to SAP for Me for the next steps. If the person's name is incorrect, find the User Onboarding Token. It is included in the sales order and should be shared with the correct person fulfilling the role of Initial Admin. This token should be used by the customer if the technical administrator's name in the contract is not correct. Redeem the Onboarding Token by following the User Onboarding Token site. Verify access to the SAP Universal ID Account Manager. If the customer has not yet received the S-User email, contact SAP support using Contact Us (sap.com) If the SAP Universal ID entered is incorrect, check your company email to retrieve an existing SAP Universal ID or register an account by following the steps provided on the SAP Universal ID page. If the SAP Universal ID is correct and want to change or reset the SAP Universal ID password, refer to the SAP Universal ID password change and reset. If you still face challenges, please create an official support ticket for the support team to investigate further by contacting SAP support using Contact Us (sap.com) Manage Cloud notification subscriptions for other users. SAP for Me - Manage Cloud Service Availability Notifications is used to add, customize and manage subscription to Cloud Availability notifications. SAP Cloud customers can remain informed and receive timely updates regarding their SAP Cloud Services. Setup Cloud notification subscription for other users by follow the steps in the SAP for Me Help 2896942 - How Super and Cloud Administrators manage Cloud Notification subscriptions for other users. Ensure the right authorizations are assigned. If authorizations are missing, reach out to your company SAP Super admin user or if unavailable contact SAP support using Contact Us (sap.com). Procedure Note(s): You need an SAP S-user ID to access SAP for Me Customer dashboards. Some content and cards require additional authorization. Contact your S-User Admin or Super Admin to get access. Create an SAP Universal ID. This is required to use the token. Follow the steps provided on the SAP Universal ID page. Only one token is provided per Sales Order. If the onboarding token has already been used and need to update the Initial Admin contact, enter an incident under the component XX-S4C-OPR-SRV and Title 'Request update to the Contact Person IT.' In the text, please request an update to the IT Contact and Communication User. SAP's recommendation is to create at least two additional super administrators who can support or substitute if needed. Customers can reach out to their Account Executive if they have not yet received their S-User email. / Workstream: Technical Architecture & Infrastructure
- 36: The purpose of this task is to verify access and log into SAP for Me. In SAP for Me, customers and partners gain transparency and receive important alerts, metrics, and insights about their SAP product portfolio in one place. SAP for Me is a digital companion that helps customers and partners interact easily with SAP and get immediate guidance. SAP for Me is used in subsequent tasks to trigger the provisioning of different tenants and systems and check their status. SAP Cases (support tickets or service requests) can be created directly from SAP for Me. SAP Signavio Process Navigator required to review the SAP Best Practices content related to the scope items is accessible via SAP for Me. Prerequisites: SAP Support user (S-user) is available. Procedure: Access SAP for Me accelerator with the S-User account information received. If your IT contact is known but hasn't received your S-User Email, please check the SPAM email folder. If no emails were found, create an incident/service request. Follow the step via the SAP Note 1296527 - How to create a support case (contact SAP Product Support) - SAP for Me accelerator. Ensure you have access to the Dashboards: Validate access to the Systems & Provisioning Dashboard. Validate access to the Services & Support Dashboard. Validate access to the SAP Signavio Process Navigator or navigate to the Accel ID = S4H_176. Procedure Note(s): You need an SAP S-user ID to access SAP for Me Customer dashboards. Some content and cards require additional authorization. Contact your S-User Admin or Super Admin to get access. For additional questions or feedback about access to SAP for Me, customers can send an email via SAPforMe@sap.com Customers can contact a local SAP Customer Interaction Center via phone, email, or chat for all additional questions or feedback. / Workstream: Technical Architecture & Infrastructure
- 37: The purpose of this task is to grant access to partner S-user ID(s) so that they can create and manage SAP cases on behalf of the customer using the Service Partner Management Application in SAP for Me. The application plays an import role in enhancing the quality of support services provided by partners, optimizing troubleshooting processes, and facilitating collaboration between SAP and partners. SAP advises customers and partners to leverage the Service Partner User Management application in situations where partners interact with SAP support upon customer request and on their behalf. Some of the benefits of using the Service Partner Management Application for SAP customers and Partners include, but not limited to: Accelerated troubleshooting by partners on behalf of customer Closer collaboration between SAP and partners Higher transparency Increased efficiency in managing partner authorizations Increased efficiency in case handling across customers For detailed information about this process, please refer to Accel ID = S4H_2143. Prerequisite: SAP Support user (S-user) is available Customer S-user ID who is providing authorizations must be listed as Cloud Administrator Customer S-user ID (Cloud Admin) who is providing authorizations must have the same customer number as the installation(s) in question Procedure: Provide access to partner S-user IDs to enable them to assist in creating and managing cases on behalf of the customer. Refer to the procedure in SAP Note 2518600 - How to grant support authorization to a service partner S-user using the Service for detailed steps. Procedure Note(s): You need an SAP S-user ID to access SAP for Me Customer dashboards. Some content and cards require additional authorization. Contact your S-User Admin or Super Admin to get access. For additional questions or feedback about access to SAP for Me, customers can send an email via SAPforMe@sap.com Customers can contact a local SAP Customer Interaction Center via phone, email, or chat for all additional questions or feedback. / Workstream: Technical Architecture & Infrastructure / Tags: 2nd Wave Project / Rollout Project, Hybrid Deployment (Two-Tier ERP)
- 38: The purpose of this task is to ensure that the project team can access the SAP Learning Hub. SAP Learning Hub The SAP Learning Hub is the central location that provides access to various learning offerings and the SAP Learning Rooms. With the SAP Learning Hub there are different editions available, which will be based on the support subscription. By default, all SAP S/4HANA Cloud customers are entitled to use the SAP Learning Hub, edition for SAP Enterprise Support. This edition provides users with access to all SAP Enterprise Support learning content powered by SAP Enterprise Support Academy. Contact SAP_ES_Academy@sap.com for related feedback and questions. In addition to utilizing the SAP Enterprise Support Academy content available in the SAP Learning Hub, edition for SAP Enterprise Support, you can enroll and join the SAP S/4HANA Cloud Implementation Learning Room to access a selection of support offerings, including live fundamental sessions. If you have any questions or feedback regarding this aspect, please contact e-learning@sap.com. Procedure: Go to the accelerator Accel ID = S4H_192. Click on ‘Learn More and Sign Up’ and follow the steps outlined. Select ‘Program Entitlement’ to check eligibility and find out more information. Click on ‘Sign-Up’ and register with your S-User ID and password. A welcome email will be sent shortly after signing up. Confirm the popup message (only relevant for first time access to the Accel ID = S4H_207. Please note that S-User assignment to the SAP Learning Hub, edition for SAP Enterprise Support can take up to two hours from the time you have received the welcome email. Login using the link provided in the registration email. Search a topic under the ‘Quick Access’ section. To search all content related to SAP S/4HANA use the search tag “SAP S/4HANA” (including the quotations) or use the accelerator Accel ID = S4H.1214. Procedure Note: The SAP Learning Hub - Editions accelerator provides an overview of the Learning Hub. / Workstream: Customer Team Enablement / Tags: 2nd Wave Project / Rollout Project
- 39: The purpose of this task is to ensure that all project team members access the SAP Activate Community. This community allows for collaboration with other customers, partners and experts on SAP Activate Methodology and provides valuable information throughout your implementation. Procedure: Access the SAP Activate Community the via the SAP Activate Community accelerator link in the Accelerator section. Select the “Follow button” to receive updates and notifications on new content. Submit questions to the community on SAP Activate throughout the implementation project by selecting “Create a Post” hyperlink. / Workstream: Project Management / Tags: 2nd Wave Project / Rollout Project
- 40: The purpose of this deliverable is to request initial access to your system/tenant through SAP for Me. / Workstream: Technical Architecture & Infrastructure
- 41: The purpose of this task is to request initial system/tenant access in SAP for Me. The Initial Admin user makes the request in SAP for Me and will then receive an email with the access instructions. Customers have the option to request multiple tenants within a single request. SAP Cloud ALM tenant, SAP Central Business Configuration tenant and SAP S/4HANA Cloud Starter System are included in the initial provisioning. Note that SAP Cloud ALM is not available in all countries/regions. There are two tenants in the SAP S/4HANA Cloud Starter System: Starter Customizing and Starter Development and both will be provisioned with the initial systems. The Initial Admin user has been identified and has the right authorizations in SAP for Me Procedure: Request the systems in SAP for Me via the SAP for Me - Dashboards > Systems & Provisioning > Provisioning . Locate the 'SAP S/4HANA Cloud Starter Customizing tenant' entry in the ‘Systems to be Provisioned’ section of the ’Provisioning tab' and click 'Start Provisioning. Select the appropriate dependent products if applicable, then review and follow the instructions in the pop-up windows for the next steps. Once the appropriate selections have been made and all details reviewed for each tenant, select ‘Submit’. The request will trigger the system provisioning, and an email will be sent to the 'Initial Admin user' when the system/tenants are available. Note: The Starter Development tenant will be provisioned along with the Starter Customizing tenant. Procedure Note(s): Customers are entitled to use SAP Cloud ALM if they subscribe to an SAP Cloud Service that includes SAP Enterprise Support and cloud editions. Note that SAP Cloud ALM is not available in all countries/regions. For further questions or feedback, please send an email to cloudalm@sap.com. Learn about SAP Cloud ALM by reviewing Help - SAP Cloud ALM or the Self-Enable on SAP Cloud ALM task. Learn more about SAP S/4HANA Cloud Starter system provisioning, including SAP Cloud ALM and SAP Central Business Configuration, via Accel ID = S4H_1051. For additional scenario information related to the required SAP Cloud Identity Services Administration, see the Accel ID = ACT_021. You need an SAP S-user ID to access SAP for Me Customer dashboards. Some content and cards require additional authorization. Contact your S-User Admin or Super Admin to get access. / Workstream: Technical Architecture & Infrastructure
- 42: The purpose of this task is to request an SAP Analytics Cloud tenant via SAP for Me. SAP Analytics Cloud is a single solution for business intelligence and enterprise planning, augmented with the power of artificial intelligence, machine learning technology, and predictive analytics. Customers are entitled to use SAP Cloud Analytics if they have subscribed to a RISE with SAP S/4HANA Cloud Public edition premium package. An SAP account Executive (AE) can be contacted for additional information on the different packages available. Prerequisite: Initial Access to SAP for Me Procedure: Request the SAP Cloud Analytics tenant in SAP for Me - Dashboards > Systems and Provisioning > Provisioning accelerator. Locate the SAP Cloud Analytics in the 'Provisioning' section under 'Product Available for Provisioning' and click on 'Start Provisioning'. Follow the prompt to select the respective SAP Cloud Analytics tenant. Click on the 'Submit' button. The request will trigger the tenant provisioning, and an email will be sent when the tenant is available. Procedure Note(s): You need an SAP S-user ID to access SAP for Me Customer dashboards. Some content and cards require additional authorization. Contact your S-User Admin or Super Admin to get access. / Workstream: Technical Architecture & Infrastructure
- 43: The purpose of this deliverable is to request and access the SAP Cloud ALM tenant to perform the initial setup of project team environment, including selection of SAP Activate template, user setup, definition of milestones, etc. The tasks below will help guide you through this process. SAP Cloud ALM has the same great SAP Activate content as the Roadmap Viewer but offers extended features allowing both project managers and implementation experts to better manage their work. Some examples of the features are: Assigning tasks to teams and users Adding project specific tasks Tracking completion status as part of the project management capabilities. / Workstream: Technical Architecture & Infrastructure / Tags: Identity and Access Management
- 44: The purpose of this task is to perform the required setup for SAP Cloud ALM before starting productive use of the solution. If the SAP Cloud ALM tenant already exists and has been fully configured, then this task can be skipped. In SAP Cloud ALM, the content of SAP Activate is integrated and provides enhanced project and task management functionality. It should be the primary source for following SAP Activate once this task is completed. Note that SAP Cloud ALM is not available in all countries/regions. Prerequisite: Received email with access information to SAP Cloud ALM tenant. Procedure: Read the overviews and follow the procedures for each of the three steps listed under Help - Required Setup for SAP Cloud ALM to complete the required setup of SAP Cloud ALM. If you need help, refer to our Help - Troubleshooting and FAQ for SAP Cloud ALM or SAP for Me - Schedule an Expert (component SV-CLM-INF-ONB). Create a project for your implementation using the Projects and Setup app within SAP Cloud ALM. For guidance, see the in-app help and/or topic ‘Projects and Setup’ in Accel ID = S4H_1803. / Workstream: Technical Architecture & Infrastructure / Tags: Identity and Access Management
- 45: The purpose of this deliverable is to access the SAP Central Business Configuration tenant, perform scoping and initial settings, and set up the two starter projects. There are two tenants in the SAP S/4HANA Cloud Starter System: Starter Customizing and Starter Development. The Starter Customizing tenant is used to review the pre-delivered standard business processes during the fit-to-standard workshops while the Starter Development tenant is used for exploring available APIs, CDS view and released developer objects. / Workstream: Technical Architecture & Infrastructure / Tags: Identity and Access Management
- 46: The purpose of this task is to access the SAP Central Business Configuration tenant and the Administration Console of the Identity Authentication Service and perform the initial system setup. Prerequisite: Received email with access information to SAP Central Business Configuration tenant and Identity Authentication Service provisioning tenant. Procedure: Locate the Identity Authentication Service email sent to the ‘Initial Admin User’ and follow the instructions to access and set up the Administration Console of the Identity Authentication Service. Locate the SAP Central Business Configuration provisioning emails sent to the ‘Initial Admin User' and access the tenant using the link provided in the email. Access the SAP Central Business Configuration and follow the instructions provided in the provisioning email to do the initial setup of the SAP Central Business Configuration users. Initial setup tasks must be performed to enable additional users to work in SAP Central Business Configuration. Follow the step-by-step guide in the Help - Set Up SAP Central Business Configuration accelerator. Below is the summary of the required steps: Creating Business Users and Providing Access Rights Running Jobs for User Provisioning Enabling Business Users to Access the SAP Central Business Configuration System Procedure Note(s): The SAP Central Business Configuration tenant uses the same identity authentication tenant as the SAP S/4HANA Cloud tenant, and therefore, no additional notification is sent. If the person receiving the cloud system emails (IT Contact) is incorrect, Create an Incident/Service Request with the Subject ‘'Request update to the Contact Person IT’, Description ‘'Please change the IT Contact to <NAME>, <EMAIL ADDRESS>' and component XX-S4C-OPR-SRV. Only one person is assigned as an IT Contact. This person receives the system provisioning notifications and is the primary contact for the systems. Multiple people can be assigned as Communication Contacts. These people receive general communications related to the SAP S/4HANA Cloud system. / Workstream: Technical Architecture & Infrastructure / Tags: Identity and Access Management, Localization, Parallel Project Line
- 47: The purpose of this task is to set up an SAP Central Business Configuration Evaluation Project for the SAP S/4HANA Cloud Customizing tenant in SAP Central Business Configuration and activate content in your Starter Customizing tenant. There are two tenants in the Starter System: Starter Customizing and Starter Development. This process is followed twice: once for the Starter Customizing tenant and once for the Starter Development tenant. Prerequisite: Received provisioning email with access information for SAP S/4HANA Cloud Starter System Procedure for the Starter Customizing Tenant: Login to the Project Experience in the SAP Central Business Configuration and create an Evaluation Project for the Starter Customizing tenant. See the section 'Selecting Your Project (Initial Logon)' in the Help - Project Experience. accelerator for detailed steps to complete the activity. Complete SAP Central Business Configuration activities and milestones for setting up the Starter Customizing tenant. See the section 'Evaluation Project' in the Help - Project Experience accelerator for additional information on completing the activities. Below is a summary of the activities: Scoping Assign a Deployment Target Milestone Confirming Scoping is Completed Primary Finance Settings Setup Organizational Structure Milestone Confirming the Scope and Organizational Structure Phase is Completed Procedure for the Starter Development Tenant: Login to the Project Experience in the SAP Central Business Configuration and create an Evaluation Project for the Starter Development tenant. See the section 'Selecting Your Project (Initial Logon)' in the Help - Project Experience accelerator for the detailed steps for completing the activity. Complete the SAP Central Business Configuration activities and milestones for setting up the Starter Development Tenant. See the section 'Evaluation Project' in the Help - Project Experience accelerator for additional information on completing the activities. Below is a summary of the activities: Scoping Assign a Deployment Target Milestone Confirming Scoping is Completed Primary Finance Settings Setup Org Structure Milestone Confirming the Scope and Organizational Structure Phase is Completed Procedure Note(s): Only the Starter System gets connected to the Evaluation project in SAP Central Business Configuration. The main purpose of the Starter System customizing tenant is to run through pre-delivered standard business processes during the fit-to-standard workshops. The recommended use of the Starter Development tenant is mainly for exploring available APIs, CDS view and released developer objects. On first use, it is recommended to select only one country/region and use the default settings provided by SAP to get the Starter System activated. JSON file of your scope selection from Digital Discovery Assessment can be uploaded in Define Scope app. Reference the Importing Scope section under Scoping in Help - Project Experience accelerator. / Workstream: Technical Architecture & Infrastructure
- 48: The purpose of this task is to set up integration between SAP Central Business Configuration and SAP Cloud ALM systems. The integration will help customers easily navigate to the SAP Central Business Configuration tasks list from SAP Cloud ALM tasks. Note that SAP Cloud ALM is not available in all countries/regions. Procedure: Follow the step-by-step guidance in the Help - Setup and Administration for SAP Cloud ALM accelerator. The steps include the procedure for the technical setup and the integration during project creation. Navigate to the SAP Central Business Configuration via the respective tasks in SAP Cloud ALM. / Workstream: Technical Architecture & Infrastructure

| ID | WBS | Task | Duration | Start | Finish | Predecessors | Resources |
| --- | --- | --- | --- | --- | --- | --- | --- |
| 49 | 2.6 | **Initial System Access for SAP Cloud Analytics** | 0d | 2024-07-24 08:00 | 2024-07-24 17:00 | 40 |  |
| 50 | 2.6.1 | Initial System Access for SAP Analytics Cloud | 8h | 2024-07-24 08:00 | 2024-07-24 17:00 | 42 | System Administrator |
| 51 | 2.7 | **Initial System Access for SAP S/4HANA Cloud Starter System** | 0d | 2024-07-24 08:00 | 2024-07-24 17:00 | 34 |  |
| 52 | 2.7.1 | Initial System Access for SAP S/4HANA Cloud Starter System | 8h | 2024-07-24 08:00 | 2024-07-24 17:00 | 48 | System Administrator |
| 53 | 2.8 | **Initial System Access for SAP Business Technology Platform** | 0d | 2024-07-24 08:00 | 2024-07-24 17:00 | 34 |  |
| 54 | 2.8.1 | Access to SAP Business Technology Platform | 8h | 2024-07-24 08:00 | 2024-07-24 17:00 |  | System Administrator |
| 55 | 2.8.2 | Create Users in the SAP Business Technology Platform Cockpit | 8h | 2024-07-24 08:00 | 2024-07-24 17:00 | 54 | System Administrator |
| 56 | 2.8.3 | Set Up SAP Business Technology Platform Global Account | 8h | 2024-07-24 08:00 | 2024-07-24 17:00 | 55 | System Administrator |
| 57 | 2.8.4 | Activate SAP Build Entitlements | 8h | 2024-07-24 08:00 | 2024-07-24 17:00 | 56 | Technology Expert |
| 58 | 2.8.5 | Subscribe to Cloud Integration Automation Service within SAP BTP | 8h | 2024-07-24 08:00 | 2024-07-24 17:00 | 56 | Integration Implementation Expert |
| 59 | 2.8.6 | Set Up SAP Start and SAP Mobile Start | 8h | 2024-07-24 08:00 | 2024-07-24 17:00 | 58 | Technology Expert |
| 60 | 2.9 | **Customer Team Self-Enablement** | 0d | 2024-07-24 08:00 | 2024-07-24 17:00 | 30 |  |
| 61 | 2.9.1 | Request Knowledge Assessment | 8h | 2024-07-24 08:00 | 2024-07-24 17:00 | 31, 32 | Project Lead |
| 62 | 2.9.2 | Create Self-Enablement Plan | 8h | 2024-07-24 08:00 | 2024-07-24 17:00 | 31, 61 | Education Expert |
| 63 | 2.9.3 | Review Getting Started Tutorials in S/4HANA Cloud | 8h | 2024-07-24 08:00 | 2024-07-24 17:00 | 62 | Education Expert |
| 64 | 2.9.4 | Self-Enable on Transport Management | 8h | 2024-07-24 08:00 | 2024-07-24 17:00 | 62 | System Administrator |
| 65 | 2.9.5 | Self-Enable on Two-Tier ERP with SAP S/4HANA Cloud | 8h | 2024-07-24 08:00 | 2024-07-24 17:00 | 62 | Project Lead |
| 66 | 2.9.6 | Self-Enable on SAP Cloud ALM | 8h | 2024-07-24 08:00 | 2024-07-24 17:00 | 62 | Education Expert |
| 67 | 2.9.7 | Access the SAP S/4HANA Cloud Public Edition Support Value Map and Implementation Learning Room | 8h | 2024-07-24 08:00 | 2024-07-24 17:00 | 62 | Education Expert |
| 68 | 2.9.8 | Self-Enable on Experience Management | 8h | 2024-07-24 08:00 | 2024-07-24 17:00 | 62 | Project Lead |
| 69 | 2.9.9 | Self-Enable on SAP Central Business Configuration | 8h | 2024-07-24 08:00 | 2024-07-24 17:00 | 62 | Project Lead |
| 70 | 2.9.10 | Self-Enable on the Fit-to-Standard Process | 8h | 2024-07-24 08:00 | 2024-07-24 17:00 | 62 | Business Process Expert |
| 71 | 2.9.11 | Self-Enable on SAP S/4HANA Migration Cockpit | 8h | 2024-07-24 08:00 | 2024-07-24 17:00 | 62 | Data Migration Expert |
| 72 | 2.9.12 | Self-Enable on Test Management and Tools | 8h | 2024-07-24 08:00 | 2024-07-24 17:00 | 62 | Testing Expert |
| 73 | 2.9.13 | Self-Enable on Artificial Intelligence Technologies | 8h | 2024-07-24 08:00 | 2024-07-24 17:00 | 62 | Integration Implementation Expert |
| 74 | 2.9.14 | Self-Enable on SAP S/4HANA Cloud Embedded Analytics | 8h | 2024-07-24 08:00 | 2024-07-24 17:00 | 62 | Analytics Expert |
| 75 | 2.9.15 | Self-Enable on Extensibility | 8h | 2024-07-24 08:00 | 2024-07-24 17:00 | 62 | Extensibility Expert |
| 76 | 2.9.16 | Self-Enable on SAP Business Technology Platform | 8h | 2024-07-24 08:00 | 2024-07-24 17:00 | 62 | Extensibility Expert; Enterprise Architect; Technology Expert; Integration Implementation Expert |
| 77 | 2.9.17 | Self-Enable on SAP BTP Apps | 8h | 2024-07-24 08:00 | 2024-07-24 17:00 | 62 | Business Process Expert; Integration Implementation Expert |
| 78 | 2.9.18 | Self-Enable on SAP S/4HANA Cloud Identity and Access Management | 8h | 2024-07-24 08:00 | 2024-07-24 17:00 | 62 | System Administrator |

Notes:
- 49: The purpose of this deliverable is to receive and access the SAP Analytics Cloud tenant. The tasks below will help guide you through this process. / Workstream: Technical Architecture & Infrastructure / Tags: Identity and Access Management
- 50: The purpose of this task to access the SAP Analytics Cloud tenant. The Initial Admin User will receive a provisioning email with instruction needed to access and setup the tenant. Prerequisite: Request SAP Analytics Cloud via SAP for Me SAP Analytics Cloud URL and initial logon credentials were received. Procedure: Follow the procedure provided in the provisioning email. / Workstream: Technical Architecture & Infrastructure / Tags: Identity and Access Management
- 51: The purpose of this deliverable is to receive the new Starter System and create the initial users. The Starter System contains configuration and data so the customer can execute business processes during the Explore phase. There are two tenants in the Starter System: Starter Customizing and Starter Development. The Starter Customizing tenant is used to review the pre-delivered standard business processes during the fit-to-standard workshops while the Starter Development tenant is used for exploring available APIs, CDS view and released developer objects. / Workstream: Technical Architecture & Infrastructure / Tags: Identity and Access Management
- 52: The purpose of this task is to access the SAP S/4HANA Cloud Starter System and create the initial users of the implementation project team. Additional users can be added at any time in the future. This process is followed twice: once for the Starter Customizing tenant and once for the Starter Development tenant. The Starter System includes configuration for the enablement of the project team on the standard processes and is used in the fit-to-standard workshops. Corresponding test scripts and process flows are available in the Implementation Portal and the SAP Signavio Process Navigator. The SAP S/4HANA Cloud Starter System will be automatically decommissioned by SAP 30 calendar days after the SAP S/4HANA Cloud Production System provisioning email is sent. Prerequisite: Starter Customizing Tenant in SAP Central Business Configuration has been set up. Starter Development Tenant in SAP Central Business Configuration has been set up. Procedure for the Starter Customizing Tenant: Locate the provisioning email sent to the ‘Initial Admin User’. Access the Starter Customizing System URL provided in the provisioning email. Create and activate users in the Starter System by following the instructions provided in the Help - Initial System Access to SAP S/4HANA Cloud accelerator. Procedure for the Starter Development Tenant: Locate the provisioning email sent to the ‘Initial Admin User’. Access the Development System URL provided in the provisioning email. Create and activate users in the Starter System by following the instructions provided in the Help - Initial System Access to SAP S/4HANA Cloud accelerator. Procedure Note(s): For the SAP S/4HANA Cloud system, the initial user has administration rights. It can be used to create additional users with the same administration responsibilities. If the SAP Business Technology Platform IAS account is already active, no new notification will be sent. In this case, the SAP S/4HANA Cloud system was connected to the existing test IAS tenant. Please get in touch with your IAS Administrator to gain access. If additional SAP Cloud systems (SAP SuccessFactors, Concur, etc.) are to be integrated and have the same subscription start date, additional provisioning emails will be received for those systems. For login issues, create a case (incident) with the component XX-S4C-OPR-INC. See task Ensure Project Team Members Access to the SAP Support Portal for more information on using support. If the person receiving the cloud system emails (Initial Admin User) is incorrect, enter an incident under the component XX-S4C-OPR-SRV and Title 'Request update to the Contact Person IT.' In the text, please request an update to the IT Contact and Communication User. This will apply to future communications. Only one person is assigned as an IT Contact. This person receives the system provisioning notifications and is the primary contact for the systems. Additional people can be assigned as Communication Contacts to receive general communications related to the SAP S/4HANA Cloud system. These assignments can be requested via the SAP for Me - Manage Cloud Service Availability Notifications accelerator. For additional information on the cloud product availability and maintenance, refer to the Cloud Availability Center & Cloud System Notification Subscriptions accelerator. The app IAM Information System can be used to determine the existing roles that allow access to specific apps. To find the roles, set the Main Entity = Application, enter the app name in the Search field, and press ‘Go.’ For additional information on creating an admin business user, initially, see the topic “SAP S/4HANA Cloud - Initial System Access” in the SAP S/4HANA Cloud Tutorials accelerator. Person-ID External used in SAP SuccessFactors Employee Central needs to be the same as the Employee ID in SAP S/4HANA Cloud. The user name used in SAP SuccessFactors Employee Central needs to be the same as that in SAP S/4HANA Cloud. / Workstream: Technical Architecture & Infrastructure
- 53: The purpose of this deliverable is to receive the new cloud SAP Business Technology Platform entitlements and start the onboarding process. SAP Business Technology Platform is an integration, extension, and application development platform. Once the commercial agreement is signed, SAP will send two (2) separate emails with all necessary information to access the SAP Business Technology Platform. Reach out to your SAP representative for questions regarding provisioning details, available credits, usage information, and pricing. / Workstream: Technical Architecture & Infrastructure / Tags: Industry Cloud Apps
- 54: The purpose of this task is to access the SAP Business Technology Platform system. The ‘IT Contact’ maintained in the contract will receive an email with the URL, SAP ID User and Login instructions for the SAP Business Technology Platform. Procedure: Locate the SAP Business Technology Platform provisioning emails sent to the ‘IT Contact’. Follow the instructions provided in the provisioning email to perform the the initial onboarding activities. Refer SAP Business Technology Platform Onboarding Resource Center for details on getting the initial access. For additional guidance review the mission Accel ID = S4H_1014. Procedure Note(s): If customers have an existing account for SAP Business Technology Platform, the "IT Contact" would have received emails about the provisioning of SAP BTP Entitlements. All new entitlements should have been provisioned to the existing global account and customers can distribute the entitlements as needed. Only the 'IT Contact' user will have initial access to the Global Account and have authorization to distribute entitlements. / Workstream: Technical Architecture & Infrastructure / Tags: Industry Cloud Apps
- 55: The purpose of this task is to create users in the SAP Business Technology Platform Cockpit. SAP recommends customers to create at least one additional Global Account Administrator who can support or substitute the initial Global Account Administrator if necessary. SAP cannot assign additional user IDs on the company's behalf. Procedure: Follow the instructions in the Help - SAP Business Technology Platform: Add Members to Your Global Account accelerator, to add additional users in the SAP Business Technology Platform account. / Workstream: Technical Architecture & Infrastructure / Tags: Industry Cloud Apps
- 56: The purpose of the task is to access your SAP BTP global account, verify entitlements and quotas for the SAP BTP apps and to setup your subaccount structure in accordance with your intended usage. Prerequisite: A finalized list of SAP BTP Apps to be setup based on the scope items that were selected in 'Executing a SAP Digital Discovery Assessment' Task. Procedure: Review accelerator Landscape Modelling Recommendations for Selected Business Technology Platform (BTP) Apps for guidance on how to map the subaccount structure of selected SAP BTP Apps with the tenants of SAP S/4HANA Cloud. For SAP BTP Apps that are not specifically mentioned within this guidance, please refer to their app-specific documentation. Login and access the SAP BTP global account using the login credentials and URL provided in the Access Information for SAP Business Technology Platform email that was sent to the 'IT Contact' maintained in your SAP BTP contract. Verify that the entitlements for the SAP BTP Apps to be implemented have been added to your global account using a global administrator user. Create the subaccount structure as required. The global administrator can then distribute the entitlements to the subaccounts as required. Go to the Products with Integration Capabilities section within the accelerator Help - S/4HANA Cloud Integration and locate the corresponding SAP BTP apps and review the Setup Instructions within the Administration Section. Identify the SAP BTP Services that are required as prerequisites for the setup and ensure that they are subscribed to within the corresponding subaccounts. Procedure Note(s): Refer section ‘Systems & Tenants in a 3-System Landscape’ within the accelerator Help - The SAP S/4HANA Cloud Universe for additional guidance on how to setup your subaccounts and choose the corresponding regions based on the data center availability of the SAP BTP Apps required. / Workstream: Integration / Tags: Industry Cloud Apps, SAP BTP Apps
- 57: The purpose of this task is to activate the SAP Build entitlements that are included as a part of your RISE with SAP or GROW with SAP Packages. Prerequisite: SAP Business Technology Platform Global Account has been setup as mentioned in task Set Up SAP Business Technology Platform Global Account Procedure: Ensure that the required entitlements assigned to your SAP BTP global account. Use the following accelerators to activate the corresponding SAP Build components SAP Help - Getting Started with SAP Build Work Zone, standard edition SAP Help - Activate Your SAP Build Process Automation Package SAP Help - Activate Your SAP Build Apps Package / Workstream: Integration
- 58: The purpose of this task is to subscribe to the Cloud Integration Automation Service that provides you a guided workflow to integrate SAP cloud solutions Prerequisite: Customer has SAP Business Technology Platform (BTP) Cloud Foundry subaccount in one of the data centers supported by Cloud Integration Automation Service or an SAP Cloud Integration account. Customer system instances of licensed SAP products that are in scope of the Cloud Integration Automation Service Procedure: Review the accelerator Help - Cloud Integration Automation Service and check the section "Supported Scenarios for Cloud Integration Automation Service" to determine if Cloud Integration Automation Service is relevant for your project depending on the planned Integration Scenarios. Subscribe to the Cloud Integration Automation Service If you have requested SAP Cloud ALM tenant and have received access, the Cloud Integration Automation Service will automatically be subscribed to within the BTP subaccount where SAP Cloud ALM is provisioned. In this scenario, verify that the Cloud Integration Automation Service tenant has been provisioned. No further action is required. If you have an existing SAP Cloud ALM tenant through another cloud subscription or if you want to provision a separate Cloud Integration Automation Service instance in a supported data center of your choice, subscribe to the Cloud Integration Automation Service within your SAP BTP subaccount as described in the "Subscription to Cloud Integration Automation Service" section of the Cloud Integration Automation Service User Guide accelerator. Procedure Note(s): Customers who are yet to request their SAP Cloud ALM tenant are recommended to the use the Cloud Integration Automation Service that will be automatically subscribed within the SAP BTP subaccount used for SAP Cloud ALM provisioning. / Workstream: Integration / Tags: SAP BTP Apps
- 59: The purpose of this task is to set up SAP Start including SAP Mobile Start to create a central entry point for Business Users. Prerequisite: Customer has setup the SAP BTP Global Account Customer has entitlements to SAP Task Center and SAP Cloud Management Service The customer has registered their SAP S/4HANA Cloud System to their SAP BTP Global account. Refer to Help - Register an SAP S/4HANA Cloud System in a Global Account in SAP BTP for additional details. Procedure: Execute the steps to set up SAP Start as described in Accel ID = S4H_2061. This will lead to a subscription of SAP Build Work Zone, standard edition (plan: foundation) Open the SAP Start site via the URL provided in the SAP Build Work Zone tenant. Refer Help - Launch SAP Start for additional details. Install SAP Mobile Start on end user mobile device and connect it to the SAP Start instance as is described in Accel ID = S4H_2063. Integrate additional SAP solutions to the SAP Start instance by following steps detailed in Accel ID = S4H_2064. Content will also be available within SAP Mobile Start afterwards. / Workstream: Integration
- 60: The purpose of this deliverable is for the customer to learn different elements of the SAP system and SAP Activate methodology using self-paced enablement materials. SAP cloud projects are intended to be completed in a shorter time period which requires more focus on learning tools. It is important that self-enablement begins prior to the project kickoff in order to maximize the time for learning and create efficiencies in later deliverables. / Workstream: Analytics, Application Design and Configuration, Customer Team Enablement, Data Management, Extensibility, Integration, Solution Adoption, Technical Architecture & Infrastructure, Testing / Tags: 2nd Wave Project / Rollout Project, Artificial Intelligence Technology, Identity and Access Management
- 61: The purpose of this task is to conduct a knowledge assessment by requesting the Continuous Quality Check (CQC) for transformation assessment service. The CQC for transformation assessment service reports assess your project team’s awareness of SAP S/4HANA Cloud Public Edition critical topics and provides you with individualized recommendations for tools and training resources. The goal of the CQC for transformation assessment service is to provide you with high-level recommendations in line with SAP best practices and ensure your project team moves in the right direction during the various SAP Activate phases. At the end of the service, you will receive an individualized knowledge assessment report which will include an executive summary, action plan and detailed recommendations. All findings and recommendations detailed in the service report can be used to help create the enablement plan for your project team and business owners. The topics covered within the CQC for transformation assessment include the following: project timelines, SAP Activate, Central Business Configuration, SAP Cloud ALM, functional aspects and pre-set parameters, data migration, Identity and Access Management, extensibility, integration, analytics, release upgrade and enablement/community. Procedure: Review the SAP Support Portal info sheet accelerator to become familiar with the assessment service offering. Request the service via two options: Option 1: directly request the service via CQC for Transformation Assessment – Request form for SAP S/4HANA Cloud, Public Edition. Option 2: Sign up via the SAP Enterprise Support value map for SAP S/4HANA Cloud, public edition. Within the value map select the tab “Continuous Quality Check” and click the “Request CQC for Transformation Assessment” button. If you have any questions about the service, make sure to post them on the value map platform. Procedure Notes: The CQC for transformation assessment is embedded in your SAP S/4HANA Cloud Public Edition contract. There are no extra fees required for this service. A service questionnaire will need to be filled and sent back to SAP in order to receive the final report with SAP findings and recommendations. / Workstream: Customer Team Enablement, Project Management
- 62: The purpose of this task is to understand why self-enablement is key for a successful SAP S/4HANA Cloud implementation and how a customer specific enablement plan can be created. Procedure: Schedule a half of a day workshop with your implementation partner and your dedicated Customer Success Manager (CSM), if Preferred Success is a part of your SAP subscription. Review the Customer Self-Enablement Workshop.pptx accelerator and use the Customer Self-Enablement Plan.xlsx accelerator in the workshop. Nominate Customer Lead to monitor the progress of team members. Specify your project and future RUN tasks for SAP S/4HANA Cloud with your implementation partner. Identify learning items per task with your implementation partner and CSM to gain maximum content of Enterprise Support and Preferred Success offerings including SAP Learning Hub. Define your future organizational roles to map all tasks and learning items to your team members. Execute and monitor progress of your self-enablement learning plan. Procedure Note(s): Please review all tasks below Customer Team Self-Enablement Deliverable for more self-enablement activities. / Workstream: Customer Team Enablement / Tags: 2nd Wave Project / Rollout Project
- 63: The purpose of this task is to use the in-app help to learn about the SAP S/4HANA Cloud. Procedure: Log in to the SAP S/4HANA Cloud System. Choose the 'Help' button in the shell bar ('?' button in the upper right corner) to open the in-app help. Select the 'Learning' tile to open the 'Recommended Learning' list. From the 'Recommended Learning' list, select the 'Working with the Launchpad' package and view the ‘Working with the Launchpad’ tutorials. Note that there are three options associated with the tutorials: Interactive Demo, Try it yourself, and Print (PDF). From the 'Recommended Learning' list, select the ‘Working with Apps’ package and view the tutorials. Procedure Note(s): Tutorials can also be accessed externally via the SAP S/4HANA Cloud Tutorials accelerator. SAP developed the tutorials using the SAP tool called SAP Enable Now. If the customer has the license for SAP Enable Now, additional content can be developed by the customer. / Workstream: Customer Team Enablement
- 64: The purpose of this task is to provide you with an overview of the 3-system landscape in SAP S/4HANA Cloud, and the process of transporting customizations, key user configurations, and developer extensions between systems. Procedure: Review the 3-system landscape overview using the Help - 3-System Landscape and Transport Management accelerator. Review the 3-System Landscape - Transport Management Fundamentals e-learning accelerator. In order to acquire authorization details, refer to the task Ensure Project Team Members Access to the SAP Learning Hub. Use the tag ‘Transport Management’ to access the list of tasks related to Transport Management. Review all tasks' descriptions, steps, and notes including accelerators. Review the Manage Transports task to learn how to manage transports. Procedure Note(s): In SAP Cloud ALM, Features can be used to bundle dependent transports of different transport types e.g, Customizing and Key User Extensibility. Exported transports can be assigned to Features, and the Feature Traceability app provides a quick overview of the deployment status per Feature. Prerequisite is the creation of Communication Arrangement SAP Cloud ALM - Change and Deployment Management Integration (SAP_COM_0690). / Workstream: Customer Team Enablement / Tags: Transport Management
- 65: The purpose of this task is to become familiar with the Two-Tier ERP Deployment strategy for SAP S/4HANA Cloud. The Two-Tier ERP Deployment strategy enables customers to maximize their existing investment in their ERP system while allowing the necessary flexibility and agility needed to run their business. Procedure: Review the accelerator Two-Tier ERP Deployment for SAP S/4HANA Cloud. This document describes what it means to operate your business in the cloud, explains how successful companies embraced cloud technology for their ERP systems, showcases key business scenarios, and helps start their transformation journey. Review the Two-Tier ERP Community Page accelerator. The community page is a valuable resource in becoming familiar and staying up to date with the Two-Tier ERP Deployment strategy. Review the relevant scope items available for Two-Tier on SAP Signavio Process Navigator using the Two-Tier ERP accelerator. Review the Blog - Master Data and Integration approaches in Hybrid cloud deployment with S/4HANA. / Workstream: Customer Team Enablement / Tags: Hybrid Deployment (Two-Tier ERP)
- 66: The purpose of to review the training material and become familiar with SAP Cloud Application Lifecycle Management (ALM). SAP Cloud ALM is an essential how-to solution for managing all aspects of any SAP cloud solution. It assists customers through the initial implementation, to going live, to monitoring integrations, to running and continuously optimizing your instance. Customers are entitled to use SAP Cloud ALM if they subscribe to an SAP Cloud Service that includes SAP Enterprise Support, and cloud editions. Procedure: Learn about SAP Cloud ALM by reviewing the SAP Cloud ALM - Support Portal Home and SAP Cloud ALM for Implementation pages. Test Drive SAP Cloud ALM using the Accel ID = S4H_828. Upskill yourself by accessing the Accel ID = S4H_1042. Be sure to review the demos in section ‘End to End Implementation Process in SAP Cloud ALM’. Learn how to use SAP Cloud ALM to efficiently manage your cloud - centric landscape by accessing the SAP Cloud ALM for Operations accelerator. Align with your implementation team on interest in using SAP Cloud ALM. Procedure Note(s): For further questions or feedback, please send an email to cloudalm@sap.com. See the in-app help within the SAP Cloud ALM tool for additional documentation, best practices, and videos on the apps and processes. / Workstream: Technical Architecture & Infrastructure
- 67: The purpose of this task is to access the SAP Enterprise Support value map for SAP S/4HANA Cloud Public Edition. This learning resource guides users in accessing the necessary SAP Support services, tools, and offerings at the right moment for the successful implementation and operation of SAP S/4HANA Cloud Public Edition. If you have any inquiries or feedback related to this, please reach out to SAP_ES_Academy@sap.com. To kickstart your journey with SAP S/4HANA Cloud Public Edition, you should complete the respective SAP S/4HANA Cloud Onboarding for 3SL or SAP S/4HANA Cloud Onboarding for 2SL accelerator available in the SAP Learning Hub, edition for SAP Enterprise Support, accessible through the SAP Enterprise Support value map during the prepare phase. In addition to utilizing the SAP Enterprise Support value map, you can join the SAP S/4HANA Cloud Implementation Learning Room to access a selection of support offerings, including live fundamental sessions. If you have any questions or feedback regarding this aspect, please contact e-learning@sap.com. Prerequisite: Users need to be registered in the SAP Learning Hub, edition for SAP Enterprise Support. If any users are not yet registered, please refer to the task ‘Ensure Project Team Members Gain Access to the SAP Learning Hub.' Procedure: To access SAP Enterprise Support value map for SAP S/4HANA Cloud Public Edition Navigate to the SAP Enterprise Support Value Maps Landing page using the SAP Enterprise Support Value Maps Landing Page accelerator. Select the ‘Access Value Maps’ option. Choose the ‘SAP S/4HANA Cloud Public Edition’ value map from the available options in the ‘Select a Value Map’ section Click the ‘Join Group’ button on the SAP S/4HANA Cloud Public Edition value map landing page. To access SAP S/4HANA Cloud Implementation Learning Room Navigate to the SAP Enterprise Support Academy Landing page using the SAP Enterprise Support Academy Landing page accelerator. Select ‘Access SAP Learning Hub.’ Click on the ‘Learning Room’ tab. In the ‘Explore SAP Learning Rooms’ section, enter “SAP S/4HANA Cloud Implementation Learning Room” and initiate the search. Access the SAP S/4HANA Cloud Implementation Learning Room from the search results. Follow the instructions in the email invitation and accept it. / Workstream: Customer Team Enablement
- 68: The purpose of this task is to review the documentation available and become familiar with Experience Management (XM) transformation to learn how to safeguard the success of the implementation of SAP S/4HANA Cloud, using Experience Management. This is achieved by capturing the project team’s experiences throughout the course of the implementation, to ensure teams are functioning well and the features and functions being implemented will meet the needs of end-users. Procedure: Understand the value of Experience Management (XM) Review the Introduction to Experience Management accelerator, to understand the core benefits of Experience Management (XM). Consider how you would apply XM within your organizational structure, including incorporating it into your Organizational Change Management and Continuous Improvement activities. Key areas of consideration will be governance, stakeholders and technology. Review how Experience Management transformation applies to your Implementation. Review the XM Transformation Procedure accelerator, to understand how XM can be applied to your implementation. Use the listed accelerators to support the development of your XM strategy for this particular implementation; with special reference to stakeholder mapping, reporting structures, and what technology will be required to support the program. Utilize the XM Transformation Procedure and XM Transformation Survey Questions accelerators throughout your implementation, to support your XM program. Procedure Note(s): Ensure the core Project Team (customer and partner PMO staff) understand the principles of Experience Management (XM) programs, including how they enable innovation and agility in Enterprises, using continuous feedback mechanisms that deliver data-driven, actionable insights. These principles are especially useful in large enterprises with diverse business processes, heterogeneous IT landscapes, disparate teams or reporting lines, a high number of individual stakeholders, and/or multiple languages. Ensure the project team is aware of what will be required to implement an Experience Management (XM) transformation program in an implementation; ensuring implementation issues can be rapidly identified and mitigated prior to any escalations. / Workstream: Solution Adoption / Tags: XM Transformation
- 69: The purpose of this task is to learn about SAP Central Business Configuration and the Project Experience. Procedure: Learn about SAP Central Business Configuration using the Learning Journey: SAP S/4HANA Cloud – SAP Central Business Configuration accelerator in the SAP Learning Hub. The learning journey accelerator contains openSAP courses focused on SAP Central Business Configuration and periodically updated What’s New – SAP Central Business Configuration eLearning courses to help you stay up-to-date on release innovations. All openSAP courses are free of charge. Review the Help - SAP Central Business Configuration accelerator for SAP Central Business Configuration Project Experience. Use the Tutorial Library for SAP Central Business Configuration accelerator to, step-by-step, learn how to navigate and use different features and apps of the tool. You can also access the tutorials within SAP Central Business Configuration from the in-app help. / Workstream: Application Design and Configuration, Customer Team Enablement
- 70: The purpose of this task is to learn about the Fit-to-Standard process so effective discussion around solution configuration can take place during the Fit-to-Standard workshops. Every customer needs to go through a series of Fit-to-Standard workshops to create a backlog to adjust the out of the box settings to optimize the solution based on customer specific requirements. The backlog of requirements will be further refined during the planning and design workshops, to plan for work during the Realize phase. Self-enabling on these topics will help the project team members understand what needs to be documented before, during, and after the fit-to-standard workshops. Procedure: Review the How to Approach Fit-to-Standard Analysis accelerator to learn the Fit-to-Standard process overall and to learn what to expect during each phase. Review the How to Approach Remote Fit-to-Standard Workshops accelerator if the Fit-to-Standard workshops are to be conducted in a remote setting. Review the Blog - Fit-to-Standard How Does It Support the Picture? accelerator to learn how the Fit-to-Standard supports the overall implementation project. Review the Blog - Fit-to-Standard: Input and Output accelerator to deep dive into details of the process. Review the Blog - Fit-to-Standard: Mural Template to learn how to facilitate the workshop with online tools in a remote setting. Procedure Note(s): See product specific accelerator when available. / Workstream: Application Design and Configuration, Customer Team Enablement
- 71: The purpose of this task is to learn about data migration including the SAP S/4HANA migration cockpit. The SAP S/4HANA migration cockpit is a template-based migration solution built into SAP S/4HANA and SAP S/4HANA Cloud. Apps Used: Migrate Your Data Procedure: View the Introducing the SAP S/4HANA Migration Cockpit click-through tutorial to understand the process of using SAP S/4HANA Migration Cockpit (Migrate Your Data app). The tutorial can be accessed via the SAP S/4HANA Cloud Tutorials accelerator. Use the path: Implementation and Configuration Tutorials → SAP S/4HANA Data Migration. Review the overview presentation Accel ID = S4H_2034. Please be aware that there are 2 migration approaches included in the Migrate your Data app: Migrate Data using Staging Tables and Migrate Data Directly from SAP system. Review the following Solution Process accelerators: Accel ID = BPSI_2Q2. If you plan to use staging tables with remote database connection, check the set-up instructions. Data Migration to SAP S/4HANA from SAP (BH3) The communication arrangement setup is necessary for using the Direct Transfer approach and is include in the set-up instructions. Review the content in the Help - Data Migration accelerator. This includes sections on Getting Started, Learning, Application Help, Migration Objects, Project Organization. Select the topics in the graphic. Review Upgrade and Maintenance Schedule - 3 System Landscape and Hotfix Collection Deployment Restrictions.pdf to know when there is no access to the system due to an upgrade or system maintenance. Include these periods in your migration project planning. Review the SAP S/4HANA Migration Cockpit - Data Migration Testing in SAP S/4HANA Cloud Public Edition to gain insights on testing. Open the SAP S/4HANA Migration Cockpit Community and view the related community information. Find additional insight via community blogs using the Blogs - Migration Cockpit Search in the SAP Community with SAP S/4HANA Cloud tag accelerator. Find Knowledge Based Articles (KBA) using the Notes - Migration Cockpit Search in SAP for Me accelerator. Access the SAP S/4HANA migration cockpit to gain hands-on experience. / Workstream: Data Management
- 72: The purpose of this task is to enable the team on the chosen test management and tools for the project. Risk-based test planning helps to analyze the impact of SAP software changes on critical business processes and provides adequate test plan proposals. SAP customers who have already a defined test solution from partners or third parties, have the choice of using it in combination with test management apps in SAP Cloud ALM (Cloud Application Lifecycle Management) and the Test Automation Tool. Procedure: Review the Test Strategy for Cloud-Centric Customer and the Test Management Overview via the SAP Cloud ALM for Implementation accelerator which covers testing challenges in Cloud ALM (if using SAP Cloud ALM for Implementation). Follow the path: Capabilities > Test: Planning, Manual Testing, Test Automation > Test Management Overview. Review the SAP S/4HANA Cloud Tutorials accelerator for enablement on the Test Automation Tool. Follow the path: Implementation and Configuration > SAP S/4HANA Cloud - Test Automation Tool. Review the SAP Cloud ALM Tutorials accelerator for enablement on SAP Cloud ALM. Follow the path: Implementation > Management Competence. Review the Test Management Guide accelerator for SAP S/4HANA Cloud test management and best practices. Review selected third party testing automation tool documentation, if applicable. Procedure Note(s): To access the documents from the SAP Cloud ALM for Implementation Support Portal, see the SAP Cloud ALM for Implementation accelerator and choose Capabilities and expand the: Planning, Manual Testing, Test Automation Section. For additional information and blogs on the Test Automation Tool, refer to the Blogs - SAP S/4HANA Cloud Test Automation Tool Tag in the SAP Community accelerator. / Workstream: Testing
- 73: The purpose of this task is to become familiar with the Artificial Intelligence technologies and scenarios that are supported by SAP S/4HANA Cloud Artificial Intelligence technology offerings are available to support SAP S/4HANA Cloud customers either embedded directly within SAP S/4HANA Cloud or a side by side service offering in SAP Business Technology Platform. Machine Leaning, Situational Handling and Augmented Analytics are examples of technologies embedded within SAP S/4HANA Cloud. SAP Build Process Automation is available as a service within SAP BTP to be consumed as a standalone service. Procedure: Review the help documentation available for SAP Build Process Automation using accelerator Help - SAP Build Process Automation Review the accelerator Blog - Resources and journey to machine learning with SAP S/4HANA for guidance on the usage of Machine Learning use cases for SAP S/4HANA Cloud Review the help documentation available for Situation Handling using the accelerator Help - Situation Handling / Workstream: Integration / Tags: Artificial Intelligence Technology
- 74: The purpose of this task is to learn about embedded analytics in SAP S/4HANA Cloud. It enables a customer to get started with SAP S/4HANA embedded analytics and integrate with best-in-class analytical platform and solutions from SAP. Procedure: Review the learning content in the Blogs - SAP S/4HANA Embedded Analytics Tag in the SAP Community accelerator. Review the Help - SAP S/4HANA Cloud Analytics accelerator. Review scope items available for SAP Best Practices for Analytics with SAP S/4HANA Cloud accelerator. Review the Help - SAP S/4HANA Cloud Analytics accelerator to learn the following: The foundations of embedded analytics Integrations with embedded Analytics and the solutions available Insights and updates from Community experts Review and learn all available Learning Journeys for the embedded analytics topic via the Help - SAP Learning Journeys accelerator. Follow the path: click the Help - SAP Learning Journeys accelerator > search with the terms “embedded analytics.” Self-enable and review the courses in the OpenSAP - SAP S/4HANA Embedded Analytics accelerator. Self-enable using the SAP Enterprise Support content by referring to the SAP community blogs SAP Blog: 5 Steps 2 Analytics in SAP S/4HANA and SAP Blog: Expert Guided Implementation - SAP S/4HANA embedded analytics accelerators. / Workstream: Analytics, Customer Team Enablement
- 75: The purpose of this task is to learn about the various Extensibility scenarios that are supported in SAP S/4HANA Cloud Public Edition. Procedure: Review the Extend SAP S/4HANA in the cloud and on premise with ABAP based extensions to become familiar with the guidelines for choosing extensibility options within SAP S/4HANA Cloud. Review the ABAP Cloud - Technical Use Cases and Recommended Technologies to understand the recommended technologies for various extensibility use cases. Review the SAP Extensibility Explorer to determine sample scenarios and extensibility patterns. Review the Open SAP course - Introduction to ABAP in Cloud listed in the accelerator section below. Refer to the SAP Community - ABAP Extensibility topic for additional discussions and enablement content on Extensibility topics within SAP S/4HANA Cloud. Review the accelerator Solution Standardization Board (SSB) [public cloud] for information about governance that SAP introduced for SAP S/4HANA Cloud customers to help them stay as close to the SAP standards as possible. Procedure Note(s): Extensibility for key users is deactivated by default within the customizing tenant of the Starter System. Extensibility can be activated with Fiori application "Extensibility Settings". Refer to SAP Note - 2283716 - Key User Application is not configured for additional information. Refer to Blog - SAP S/4HANA Extensibility: All You Need to Know for more details about extensibility options and use cases. Use the SAP Help links Help - Key User Extensibility and Help - Developer Extensibility to access help materials for extensibility. Senior IT leaders should review this document to understand the extensibility options Accel ID = S4H_881. / Workstream: Extensibility
- 76: The purpose of this task is to learn about SAP Business Technology Platform (SAP BTP) and its capabilities. SAP BTP is the foundation for the Intelligent Suite, our industry cloud, as well as extensions developed by our customers or partners. SAP BTP environments provide comprehensive application development services and capabilities that let customers develop new cloud applications, extend existing solutions, and integrate applications in the cloud. With SAP Extension Suite, customers can extend solutions in a fast and agile way without disrupting key business processes and via the SAP Integration Suite, customers can integrate various applications while securely connecting people, processes data ,and devices. Procedure: Review the accelerator SAP Business Technology Platform-Basic Concept to get an introduction to SAP BTP. Review the SAP Discovery Center accelerator to learn how to adopt SAP BTP and turn data into business value. Review the integration paper in the accelerator Accel ID = S4H.1541. In this paper, SAP provides customer proof points with key processes and gives an outlook of the innovation and integration scenarios that are yet to come. Also review the accelerator Integration Architecture Guide for Cloud and Hybrid Landscapes for guidance on the design of Integration Architecture. Review the following accelerators to familiarize yourself with the capabilities of SAP Business Technology Platform Integration Suite Cloud Integration using Integration Suite. Refer to accelerator Accel ID = S4H.1277. Consume and deploy predefined integration content provided by SAP. Refer to accelerators Accel ID = S4H_995. Transport Integration Content between CPI tenants. Refer to accelerator Accel ID = S4H_996. Review the following section to enable yourself on the Cloud Integration Automation Service. This setup option is provided for selected scope items. It will provide a guided workflow to integrate SAP cloud solutions. Supported integration scenarios are published in the ‘Plan for Cloud Integration Scenario’ tile on the Accel ID = S4H.0620. Verify with the project manager that scope items with Cloud Integration Automation Service option are in the project scope. Make yourself familiar with this service by reading the accelerator Accel ID = S4H_983. Also see related accelerator Accel ID = S4H_524. Make yourself familiar with release information, maintenance, and interoperability of the service in Accel ID = S4H_525. Review the accelerator Accel ID = S4H_870. Customers can build reports, dashboards, and visuals into their business application to make confident decisions. Review SAP BTP Guided Answers for an interactive documentation designed to help troubleshoot issues, navigate processes and guide through tasks Procedure Notes: RISE with SAP and GROW with SAP customers receive a specified amount of CPEA credits that can consumed using services on SAP Business Technology Platform. Customers can contact their SAP representative for questions regarding the credits, usage, and pricing. This Cloud Integration Automation Service has to be subscribed to and instantiated in your BTP Global Account. Refer to task 'Subscribe to Cloud Integration Automation Service in BTP' for further details. Reflect your BTP Architecture and extensions based on the Reference Architecture Content in LeanIX. Check with your SAP Account Executive on license entitlement of LeanIX products. / Workstream: Customer Team Enablement, Extensibility / Tags: SAP BTP Apps
- 77: The purpose of this task is to self-enable on SAP delivered BTP business solution apps and services. Prerequisite: A finalized list of SAP BTP Apps to be setup based on the scope items that were selected in Discover Assessment phase. Procedure: Go to the Products with Integration Capabilities section within the accelerator Help - S/4HANA Cloud Integration and locate the corresponding SAP BTP apps and review the product related feature and scope descriptions. The SAP BTP Apps listed below are examples of how the SAP BTP Apps can be implemented and integrated with S/4HANA Cloud with an enhanced degree of automation. Help - SAP Cloud for Real Estate Help - SAP Market Rates Management, Bring Your Own Rates data option Help - SAP S/4HANA Cloud for Projects Help - SAP Subscription BIlling Help - Central Invoice Management Help - SAP Ariba Buying For partner delivered integrated applications, reach out to the corresponding partner for Help and User documentation. Procedure Note(s): We recommend setting up this integration scenario using the Cloud Integration Automation Service. Cloud Integration Automation Service provides a guided workflow that features: Customer-specific system information (for example, target URLs) Reusable configuration settings between tasks Automated execution capabilities Please refer task Self-Enable on Cloud Integration Automation Service for additional details. / Workstream: Integration / Tags: Industry Cloud Apps, SAP BTP Apps
- 78: The purpose of this task is to learn about Identity and Access Management in SAP S/4HANA Cloud. Identity and Access Management (IAM) is the security control that allows the right individuals to access the appropriate resources during the authorized time for the authorized reasons. In SAP S/4HANA Cloud, the IAM launchpad enable customers to view, monitor and control business users, business roles, business catalogs and access restrictions. Procedure: Review the learning content in the Open SAP - Accelerating IAM Activities with SAP Activate accelerator with SAP Activate to learn on how to use the SAP Activate Methodology to identify the relevant IAM tasks in your implementation project. Review the learning content in the Open SAP - User Management Overview - SAP S/4HANA Cloud Deployment accelerator to learn how to first access the SAP S/4HANA Cloud systems. Review the Blog - SAP S/4HANA Cloud, Identity and Access Management – SAP Enterprise Support Academy recorded learning accelerator to learn the following: The foundations of IAM in SAP S/4HANA Cloud The IAM tools available in SAP S/4HANA Cloud The implementation methodology of IAM in SAP S/4HANA Cloud The authorization concept, project planning and project phases of IAM Procedure Note(s): Use Help - Identity and Access Management and Help - Authorization and User Concept in SAP S/4HANA Cloud for reference / Workstream: Technical Architecture & Infrastructure / Tags: Identity and Access Management

| ID | WBS | Task | Duration | Start | Finish | Predecessors | Resources |
| --- | --- | --- | --- | --- | --- | --- | --- |
| 79 | 2.10 | **Project Initiation and Governance** | 0d | 2024-07-24 08:00 | 2024-07-24 17:00 | 30 |  |
| 80 | 2.10.1 | Create Project Charter and Scope Statement | 8h | 2024-07-24 08:00 | 2024-07-24 17:00 | 32, 33, 39, 42, 44, 48, 50, 52, 59 | Project Lead |
| 81 | 2.10.2 | Establish Project Governance | 8h | 2024-07-24 08:00 | 2024-07-24 17:00 | 80 | Project Lead |
| 82 | 2.10.3 | Establish Solution Standardization Board | 8h | 2024-07-24 08:00 | 2024-07-24 17:00 | 80, 81 | Project Lead |
| 83 | 2.10.4 | Establish the Center of Expertise | 8h | 2024-07-24 08:00 | 2024-07-24 17:00 | 82 | Project Lead |
| 84 | 2.10.5 | Define Project Communications and Reporting | 8h | 2024-07-24 08:00 | 2024-07-24 17:00 | 81, 82, 83 | Project Lead |
| 85 | 2.11 | **Project Plans, Schedule and Budget** | 0d | 2024-07-24 08:00 | 2024-07-24 17:00 | 79 |  |
| 86 | 2.11.1 | Create Project Schedule and Budget | 8h | 2024-07-24 08:00 | 2024-07-24 17:00 | 84 | Project Lead |
| 87 | 2.11.2 | Assign Resources and Refine Project Tasks in SAP Cloud ALM | 8h | 2024-07-24 08:00 | 2024-07-24 17:00 | 86 | Project Lead |
| 88 | 2.11.3 | Align Project Schedules | 8h | 2024-07-24 08:00 | 2024-07-24 17:00 | 86 | Project Lead |
| 89 | 2.12 | **Project Standards, Infrastructure, and Solution** | 0d | 2024-07-24 08:00 | 2024-07-24 17:00 | 85 |  |
| 90 | 2.12.1 | Define Project Standards | 16h | 2024-07-24 08:00 | 2024-07-25 17:00 | 87, 88 | Project Lead |
| 91 | 2.12.2 | Set Up Project Team Logistics and Infrastructure | 8h | 2024-07-24 08:00 | 2024-07-24 17:00 | 90 | Project Lead |
| 92 | 2.12.3 | Verify Project Team Certification and Experience for SAP S/4HANA Cloud | 8h | 2024-07-24 08:00 | 2024-07-24 17:00 | 91 | Project Lead |
| 93 | 2.12.4 | Create a Document Repository for the Implementation Project Team | 8h | 2024-07-24 08:00 | 2024-07-24 17:00 | 92 | Project Lead |
| 94 | 2.13 | **Project Kick-Off and On-Boarding** | 0d | 2024-07-24 08:00 | 2024-07-24 17:00 | 89 |  |
| 95 | 2.13.1 | On-board Project Team | 8h | 2024-07-24 08:00 | 2024-07-24 17:00 | 93 | Project Lead |
| 96 | 2.13.2 | Conduct Kickoff Workshop | 8h | 2024-07-24 08:00 | 2024-07-24 17:00 | 95 | Project Lead |
| 97 | 2.14 | **Change Concept** | 0d | 2024-07-24 08:00 | 2024-07-24 17:00 | 94 |  |
| 98 | 2.14.1 | Define Organizational Change Management Roles | 8h | 2024-07-24 08:00 | 2024-07-24 17:00 | 96 | Organizational Change Management Expert |
| 99 | 2.14.2 | Staff Organizational Change Management Resources | 8h | 2024-07-24 08:00 | 2024-07-24 17:00 | 98 | Organizational Change Management Expert |
| 100 | 2.14.3 | Define Organizational Change Management Set-up | 8h | 2024-07-24 08:00 | 2024-07-24 17:00 | 99 | Organizational Change Management Expert |
| 101 | 2.15 | **Change Plan** | 0d | 2024-07-24 08:00 | 2024-07-24 17:00 | 97 |  |
| 102 | 2.15.1 | Determine Action Areas for Organizational Change Management | 8h | 2024-07-24 08:00 | 2024-07-24 17:00 | 100 | Organizational Change Management Expert |
| 103 | 2.15.2 | Develop First Version of the Change Plan | 8h | 2024-07-24 08:00 | 2024-07-24 17:00 | 102 | Organizational Change Management Expert |
| 104 | 2.15.3 | Establish Updating Procedure for the Change Plan | 8h | 2024-07-24 08:00 | 2024-07-24 17:00 | 103 | Organizational Change Management Expert |

Notes:
- 79: The purpose of the Project Initiation and Governance deliverable is to formally recognize that a new project exists and to initiate the work on the project. During this time the project sponsor and project manager work to align stakeholders – such as customers, partners and SAP management – around a project and its scope, provide updated information for planning, and obtain a commitment to proceed. As part of the initiation activities, the project manager conducts handover from pre-project phase, creates a project charter document, scope statement document and establishes the project governance that ensures proper management process for the project. This ensures alignment between the implementation partner(s), the customer's project team, company's strategic direction, and the satisfaction of operational requirements. / Workstream: Project Management / Tags: 2nd Wave Project / Rollout Project, GROW Adoption Plan
- 80: The purpose of this task is to create a project charter and scope statement. If you skip this task, the project is not formally approved by the customer sponsor and the project manager is not authorized to apply organizational resources to project activities. Also, the scope of the project will not be understood. Procedure: Develop the project charter by reviewing documents from the pre-project negotiation process and through interactive meetings with the customer to facilitate an understanding of the project’s goals, business case, external assumptions, and constraints. The project charter clearly and explicitly defines the objectives of the project, analyzes all possible benefits, and quantifies benefits in financial terms, and illustrates clearly project acceptance criteria. This information and supporting documents align key stakeholders around the strategic intent of the project. Please feel free to utilize the Project Charter Template accelerator as a reference template. Produce a reviewed and approved scope statement that is documented and communicated to the project team, enabling integrated change control. The scope statement facilitates an initial understanding of the project scope and associated project-related assumptions and constraints. The project scope statement evolves through the initiation and planning of the project and clearly and explicitly defines Key Performance Indicators (KPIs), tolerances, and deliverables of the project. This information and supporting documents align key stakeholders around what the project is going to deliver. Please feel free to utilize the Scope Statement Template accelerator as a reference template. Assess whether the customer has existing: Organizational policies and procedures, standard product and project life cycles, and quality policies Standardization guidelines and work instructions Guidelines and criteria for tailoring the organization’s set of standard processes to satisfy the specific needs of the project Organizational communication requirements, data retention policies and security requirements Procedures for issue and defect management, including controls, identification and resolution, and action item tracking Change control procedures, including the steps by which the company modifies, approves, and validates official company standards, policies, plans, and procedures as well as project documents Risk control procedures including: probability definition and impact, risk categories, and probability and impact matrix / Workstream: Project Management / Tags: 2nd Wave Project / Rollout Project, GROW Adoption Plan
- 81: The purpose of this task is to establish project governance. Project governance is a management framework setup for the project to ensure the decisions are made in a structured manner. The project governance establishes a policy for the project team, project stakeholders, executives and system integrator that clearly specifies roles, responsibilities, accountability, and organizational setup. The project governance provides a decision making framework that is robust and logical in order to ensure the decisions are made timely and on an appropriate level. Procedure: Establish various levels of governance structure according to committee’s daily tasks and duties. Place Executive Sponsors & Steering Committee in level 1 and 2. The responsibilities in these levels include: Business priorities, goals and objectives Decision rights and decisions criteria Ownership: change, process & data Economic justification and funding prioritization Place Project Management Office in Level 3. The responsibilities in this level includes: On time, On Budget, On Value monitoring Process strategy development Drive Business Standardization & Best Practices Adoption Prioritization criteria and deployment options IT requirements and dependencies Communication Place Project team in Level 4. The responsibilities in this level includes: Day-to-day execution and delivery of project tasks, identifying, documenting and resolving issues and risk within the framework of their authority. Identification, resolution and communication of issues and risk to PMO Status reporting and communication to the PM Please find below a graphical example: / Workstream: Project Management / Tags: 2nd Wave Project / Rollout Project, GROW Adoption Plan, Localization, Parallel Project Line
- 82: The purpose of this task is to provide guidance on the setup and execution of governance activities with Solution Standardization Board (SSB). The role of the SSB is to act as a body overseeing the compliance with 5 Golden Rules and Clean Core philosophy. It is approving all extensions, integrations, data activities, adoption of processes deviating from these rules and philosophy. The SSB governance is setup in the customer IT organization and reports to the project sponsor and steering committee (after the initial go-live it will transition to report to CIO or COO during the Run phase). Procedure: Review the Solution Standardization Board template Determine participants, structure of the board and meeting cadence Schedule SSB meetings as required Define process for reviewing / approving and documenting the objects that go beyond the 5 Golden Rules for deployment of the SAP Solution following the Clean Core philosophy / Workstream: Application Design and Configuration, Extensibility, Integration, Project Management
- 83: The purpose of this task is to set up a Customer Center of Expertise (Customer COE). The Customer COE is a core team of experts that will drive the realization of tangible business value via the SAP solution(s). They are drivers for continuous success and are crucial to maximizing the return on investment. This team will have or develop strong SAP skills and knowledge, and by collaborating with their business's key teams, be in the best position to identify the solution functionalities that will best meet the business priorities. Procedure: Review the Customer COE guidance in the Accel ID = S4H_911. This includes the resources “Customer COE Intro”, “Customer COE One Pager” and “Customer COE Accreditation Guide” listed under the heading “Customer COE Must Haves” Create the Customer Center of Expertise as per the guidance in the “Customer COE Accreditation Guide”. Submit the questionnaire in the Accreditation guidance to gain your Customer COE Accreditation. / Workstream: Project Management / Tags: 2nd Wave Project / Rollout Project, GROW Adoption Plan, Hybrid Deployment (Two-Tier ERP)
- 84: The purpose of this task is to define and agree on the project communications and reporting strategies. Procedure: Identify who needs to see what information, when, and how, in addition to the intent of each message. The project manager defines the project’s communication strategy. Distribute information to the steering committee, senior management, the project team, subject matter experts, clients, contractors, and other internal or external personnel. Define the communication strategy, so that it also involves determining which key project deliverables are communicated. (for example, objectives/scope, project schedules, work plans, project status reports, cost information, and so on). Define the frequency and format of the regular status reports that the project manager and project teams provide to the key stakeholders. Use the Project Status Report for SAP Activate/S/4HANA accelerator throughout the whole process to provide a status of the overall project to interested parties. Create a Communication Plan using the Communication Plan Overview template accelerator as a starting point. The purpose of the creation of Communication Plan is to define the communication rules and how information will be distributed to and feedback received from all stakeholders. It serves as a guide for communications throughout the life of the project. It is a working document that defines: Stakeholder communication requirements Communication approval process Define the Risk Management process by completing the Sample Risk Register and Sample Stakeholder Management Plan accelerators. / Workstream: Project Management / Tags: 2nd Wave Project / Rollout Project, GROW Adoption Plan
- 85: The purpose of this deliverable is to plan activities during the early stages of the project, including the development of project plans, preparation of project WBS, definition of the project schedule and budget development. The project management plan development is critical for ensuring the project is managed according to structured approach that covers all aspects of project management necessary for size and complexity of the project. The project management plan is a comprehensive document (or collection of documents), including plans for managing the schedule, budget, issues, risk, project changes, etc. The management plans cover all PMI PMBOK knowledge areas as appropriate. Once the project scope is refined and the work breakdown structure (WBS) is developed, the project manager and planning team define and sequence required tasks. With dependencies identified, the project manager adds resources, estimated effort (hours), and estimated duration to create an initial draft of the project schedule. As requirements are identified, the project schedule and budget are refined. / Workstream: Integration, Project Management / Tags: 2nd Wave Project / Rollout Project, GROW Adoption Plan, Upgrade
- 86: The purpose of this task is to create a project schedule and budget. Procedure: Create a project schedule. The detailed project schedule defines the work to be performed, the resources and associated time commitments required for the project, and the individual phases of the project. The work breakdown structure (WBS) serves as the foundation for the project schedule and deliverables to be produced as part of the project. Ensure, at a minimum, the project schedule includes: Deliverables and tasks for the current phase Estimated effort (work) and duration Task dependencies (such as predecessors and successors) Scheduled start and finish dates for each task, based on dependencies Task constraints (such as must-start-on date and must-finish-on date) Resources assigned to each task High-level schedule for subsequent phases Transport freeze periods related to software updates Set the first approved Schedule as the Project Baseline. Elaborate this schedule during subsequent planning activities during the project, using a “rolling wave” planning approach. Create a project budget, that outlines all the costs associated with the project, including labor, hardware, software, cloud provisioning, contracting fees, and facilities. Set the budget baseline and will manage the budget according to the cost management plan that is developed as part of the Project Management Plans task. Maintain the project budget throughout the whole project. / Workstream: Project Management / Tags: 2nd Wave Project / Rollout Project, GROW Adoption Plan, Upgrade
- 87: The purpose of this task is to expand the task template and assign teams or people to tasks in SAP Cloud ALM. The task template assigned during the project creation provides the essential elements for implementing SAP solutions and flexibility for expansion to meet the project needs for additional supporting deliverables and tasks. Resource assignment is critical in managing work as well as ensuring proper reporting in the SAP Cloud ALM Dashboard. Procedure: Determine use of Teams, Roles, Responsibilities and Individuals in the Task list. Setup Teams and Roles. See the ‘Best Practices’ section and topic, ‘Roles, Teams, and User Assignment’ in the SAP Cloud ALM for Implementation - Expert Portal accelerator for additional information. Review the project tasks and add new deliverables and tasks as necessary. See topic Project and Task Management > Project Tasks in the SAP Cloud ALM for Implementation - Expert Portal accelerator. Assign users to project tasks. Procedure Note(s): Reporting should be considered in the formulation of Teams, Roles, and Tasks. See topic ‘Analytics’ in the SAP Cloud ALM for Implementation - Expert Portal accelerator for more information. / Workstream: Project Management / Tags: 2nd Wave Project / Rollout Project, GROW Adoption Plan
- 88: The purpose of this task is to align the product schedules for the products in an integrated scenario. Procedure: Review and align individual project schedules accordingly. Key milestones to be considered are: Different system landscapes provisioning (including integrated applications) System landscape configuration start date System landscape configuration completion date Testing in the Test System and migrate to Production System (including integrated applications). System operations related to Software updates schedule. Ensure the overall master schedule is updating accordingly. / Workstream: Integration, Project Management / Tags: 2nd Wave Project / Rollout Project, GROW Adoption Plan, Industry Cloud Apps, Upgrade
- 89: The purpose of this deliverable is to provide consistent means of executing and governing project work in an efficient and effective manner. The key objective of Project Standards is to identify, define, approve, and communicate standards related to project execution. Where and when applicable, the current customer processes and procedures, related to the project standards should be taken into account when defining the most suitable standards for the project. Requirements and Constraints Project support tools have been set up already. / Workstream: Project Management / Tags: 2nd Wave Project / Rollout Project
- 90: The purpose of this task is to identify, define, approve, and communicate standards related to project execution. Project standards provide a consistent means of executing and governing project work in an efficient and effective manner. Project standards are elaborated throughout the Prepare phase (some may be fine-tuned in a later stage of the project). Procedure: Establish, at minimum, the project standards for the following areas: Requirements Management Business Process Modeling Solution Configuration and Documentation Custom Code / Development Authorizations / Security Test Planning and Execution Change and Release Management Post-implementation Support and Operations. Define, approve, and communicate foundational project standards to the project team. Include project communication standards in project on-boarding for project team members. Manage changes in accordance with the integrated change control procedure. / Workstream: Project Management / Tags: 2nd Wave Project / Rollout Project
- 91: The purpose of this task is to establish a project team environment and ensure that team members have the necessary access levels. For on-site or hybrid project delivery, also account for physical access to the customer facility and project room. The project manager, in collaboration with the technical team, will address the setup of the following areas (the questions in each section are designed to provide guidance). Procedure: Setup the following areas (the questions in each section provide guidance): Project Experience: Is there a requirement for hardware (e.g. servers, laptops, etc.)? Are additional software licenses needed? Have they been purchased? Are additional consulting services required? Has the software been installed for the project team members? Is there a designated area for the project equipment? Is the project equipment located in different geographical sites? IT Infrastructure and Access Is Wi-Fi or LAN access available to the project team? Has the Wi-Fi or LAN access been tested? Is white listing required? Have soft token / hard token requirements been communicated? Has IT access been granted for: E-mail Internet and/or Intranet access Team collaboration tools like Sharepoint, Jira, Slack MS Office with Teams Customer Policies Is there a specific project policy applicable (e.g., communication, confidentiality, backup)? Has the project policy been communicated? Telephone / Voicemail: Is there a central repository with each team member's contact details? Project Team Member Equipment Is the required equipment (computer, laptops, mobile devices, etc) available to all project team members? Are office supplies available to the project members (on-site / hybrid)? Are the necessary software licenses purchased (if needed)? Physical Project Environment (on-site or hybrid only): Has the required workspace been arranged at all project sites? Are sufficient conference rooms planned for the project team? Has multimedia equipment been planned for all conference rooms (e.g., video conferencing, projectors)? Has physical access been granted for all project team members at different geographical sites? Is there a working area assigned to the project members? Physical Security (on-site or hybrid only): Has all necessary access been granted at different project sites? Have all site policies been communicated (e.g., security, safety, emergency exits)? Use the Project Guideline Template accelerator below to provide new project members with the essential information needed to understand the project and its associated administrative and technical regulations for setup. / Workstream: Project Management / Tags: 2nd Wave Project / Rollout Project
- 92: The purpose of this task is to ensure that the project team members at least have the minimum level of knowledge and experience needed to successfully implement an SAP S/4HANA Cloud system. It’s imperative that every implementation team member hold the SAP S/4HANA Cloud certifications in the areas they are working and that the service lead/project manager and Finance lead have hands-on experience on a successful SAP S/4HANA Cloud implementation project. Procedure: Project Team Certification Ask the team members for their personal SAP Acclaim link. After passing an SAP certification test the individual will have received instructions on how to claim the link. The link will be in the following format: https://www.youracclaim.com/user/<unique name> Load the individual’s Acclaim link. If the page is not found, then confirm the link with the individual. Check the individual’s Acclaim certification page to determine if the individual holds the certifications required by their role on the project. The service lead, project manager, solution architect, and technical architects should have a current "SAP Certified Application Associate - SAP S/4HANA Cloud Onboarding". The functional consultants should have an “SAP Certified Application Associate – S4HC [name] Implementation” where “name” is the Line of Business each consultant will be working with. If the necessary certifications are not held then ensure a plan is in place for the person to obtain the certification before project kickoff. Repeat this check prior to project kickoff. Project Team Experience Ask the team members if they have hands-on experience implementing an SAP S/4HANA Cloud system that has successfully gone live and is in productive use. If the individual does not have hands-on experience, then consider filling that role with a person who does have experience. If that is not possible then initiate a mentoring/oversight relationship with an individual who has experience in that role. It is strongly recommended that teams new to SAP S/4HANA Cloud utilize SAP Value Assurance service for their first implementation. Please contact your Partner Business Manager for more information. / Workstream: Project Management / Tags: 2nd Wave Project / Rollout Project
- 93: The purpose of this task is to determine and create a document repository for the project implementation team. Procedure: Determine a document repository for the project. A quality document repository allows teams to collaborate and share documents in real time for status updates, event meetings, milestone creation, and internal/external communications to accelerate learning, collaboration, and adoption. The project team should agreed which document repository system works best for their implementation project. Ensure a repository is created and all project team members have access. / Workstream: Project Management / Tags: 2nd Wave Project / Rollout Project
- 94: The purpose of this deliverable is to kick-off the project and ensure that all needed information is shared with the project team resources, key stakeholders, and anybody involved in the project. The goal of the kickoff meeting is to ensure that everybody involved in the project understands the goals and objectives of the project, as well as the schedule that the project team will follow, which is one of the key ingredients for a successful project execution. / Workstream: Project Management / Tags: 2nd Wave Project / Rollout Project, GROW Adoption Plan
- 95: The purpose of this activity is to prepare the onboarding package for external consultants and new project team members from SAP and partner companies coming to the project. The onboarding package contains the essential information that each new team member needs to understand, which is the purpose of the project, goals, operating procedures, and other key information. Procedure: Ensure the onboarding package contains all the necessary information to properly onboard the team members. The onboarding package typically contains the following information: Project objectives, scope, and goals including SAP solutions being implemented Project schedule including milestones Project governance including key project stakeholders Organizational chart for the project- showing both internal and external resources Outline of regular project meetings Travel policies, dress code, project location, and other project guidelines as needed. / Workstream: Project Management / Tags: 2nd Wave Project / Rollout Project, GROW Adoption Plan
- 96: The purpose of this task is to schedule, prepare, and conduct the project kickoff meeting. Procedure: Finalize the attendance list for the kickoff meeting. Participants typically include: project team, key stakeholders, project sponsor and company executives. Schedule the kickoff meeting. Some resources may attend the kickoff meeting remotely; in such cases it is important to ensure good audio and video infrastructure so the remote participants can take full part in the kickoff meeting session. Use the Project Kick-off Template accelerator as a template to prepare kickoff meeting materials specific to your project. Conduct the Project Team Kickoff Meeting. The kickoff meeting should include discussion of project objectives, organizational structure, roles and responsibilities, project governance, schedule, scope, communication standards, change request process, and decision making process. The project manager should also utilize the meeting to ensure a mutual understanding of the Project Plan. Furthermore, the project manager can use this meeting to communicate methods that will be used to manage and control the project. / Workstream: Project Management / Tags: 2nd Wave Project / Rollout Project, GROW Adoption Plan
- 97: The purpose of this deliverable is to create the foundation for the organizational change management support of the SAP implementation project. By discussing and aligning on relevant aspects of the change management set-up, it promotes a shared understanding among key project stakeholders. This clarity regarding the scope and benefits of organizational change management helps to manage expectations and prevents unrealistic assumptions. The change concept should be developed at the beginning of the project and only modified when significant parameters of the organizational change management delivery are adjusted, such as resource replacements or scope changes. / Workstream: Solution Adoption / Tags: GROW Adoption Plan, Organizational Change Management
- 98: The purpose of this task is to identify the responsibilities related to providing organizational change management support for the SAP project. Depending on the project’s specific characteristics, such as scope, complexity, number of affected users, and anticipated change impacts, one or more roles for organizational change management need to be established. Common roles in larger implementation projects include the change management lead, change management expert, and communication expert. It is important to clearly distinguish and document the respective areas of responsibility and duties in a transparent manner. Procedure: Assess the anticipated level of effort needed for organizational change management in the SAP implementation project. Describe roles and responsibilities, referring to the section “Typical Project Roles for Organizational Change Management” in the How do you set up Organizational Change Management for your Cloud Project accelerator. Align and agree with the project leadership team on role descriptions, and incorporate the documented information into the Change Concept accelerator. / Workstream: Solution Adoption / Tags: GROW Adoption Plan, Organizational Change Management
- 99: The purpose of this task is to ensure that organizational change management for the SAP project is carried out by qualified resources. In smaller implementation projects, a project team member may handle change management activities in addition to their primary project role. In larger and more complex programs, it may be necessary to assign multiple resources, either on a full-time or part-time basis. If internal resources are unavailable, engaging external consultants is recommended. This option becomes particularly valuable when there is a desire to develop internal change management expertise. Procedure: Identify potential organizational change management resources. Familiarize yourself with the video “Acting as a Change Manager in Cloud Projects,” accessible by scrolling down the Which Skills do you bring along to act as a Change Manager accelerator. Evaluate skills using the Individual Skill Assessment – Analysis accelerator. Interpret ratings with the Individual Skill Assessment – Results accelerator. Assign organizational change management resources and document their assignments, including their available time for project work, in the Change Concept accelerator. / Workstream: Solution Adoption / Tags: Organizational Change Management
- 100: The purpose of this task is to establish the integration of organizational change management within the project organization. This step is essential for determining the governance structure and reporting line. While often overlooked, it is equally important to discuss the delivery approach for organizational change management. This includes fundamental principles, success criteria, scope, and overall objectives. Reaching an agreement on these aspects within the core project team helps to create a shared understanding of organizational change management and sets the strategic direction of future activities. Procedure: Integrate organizational change management within the project organization, utilizing the video “Organizational Change Management in the Project Organization” accessible when scrolling down in the How do you set up Organizational Change Management for your Cloud Project accelerator, and define governance and communication structure. Develop and agree on the shared understanding of organizational change management for the SAP implementation project. Collaborate with the project leadership team to ensure alignment of the developed content, and incorporate the documentation into the Change Concept accelerator. / Workstream: Solution Adoption / Tags: Organizational Change Management
- 101: The purpose of this deliverable is to provide a high-level overview of the organizational change management activities supporting the SAP implementation project. Typically, the change plan is organized into distinct sections, each addressing a specific area of action that will be managed by the change management team, such as change communication. The change plan is closely aligned with the overall project plan, ensuring synchronization. Change management activities are scheduled in accordance with the project milestones and reflect the specific requirements of the different project phases. Initially, the focus is typically on generating awareness and securing commitment for the project. As the project nears completion, the emphasis shifts towards adequately preparing users for the upcoming go-live. Whenever modifications are made to the project plan, the change plan must be adjusted accordingly. / Workstream: Solution Adoption / Tags: GROW Adoption Plan, Organizational Change Management
- 102: The purpose of this task is to establish a focused approach to organizational change management, maximizing its value for the SAP implementation project. This involves differentiating between essential activities (“must have”) and optional activities (“nice to have”). By discussing priorities and determining general action areas for organizational change management, the project team gains clarity. This process also aids in managing expectations and defining the scope of organizational change management. The identified action areas serve as the foundation for developing a more detailed change plan. Procedure: Identify people-related challenges of the SAP implementation project. Explore both the current strengths and weaknesses of the organization in addressing these challenges. Collaborate with the project leadership team to identify essential areas of action for organizational change management, and document them in the Change Plan accelerator. / Workstream: Solution Adoption / Tags: GROW Adoption Plan, Organizational Change Management
- 103: The purpose of this task is to break down the identified action areas in organizational change management activities. This step can be challenging due to the lack of complete information available. Therefore, the initial version of the change plan typically includes high-level activities, particularly for later project phases. These activities will need to be refined and detailed as the project progresses. However, it is recommended to establish an initial version of the change plan during the early stages of the project, as it serves as the “single point of truth” for all organizational change management activities. Procedure: Define high-level organizational change management activities for all action areas. Schedule activities according to project plan and project milestones. Document results in the Change Plan accelerator. / Workstream: Solution Adoption / Tags: GROW Adoption Plan, Organizational Change Management
- 104: The purpose of this task is to ensure that the change plan is always well aligned with the project plan. Additionally, it involves integrating insights obtained throughout the project’s execution of organizational change management. This guarantees that the change plan consistently incorporates the most up-to-date information. This is important, as the change plan typically serves as a significant reference for reporting on the status of organizational change management. Procedure: Establish a regular updating cycle, such as biweekly or monthly, in accordance with project status reporting. Collect feedback on implemented activities, for instance, from business leaders, and assess the project timeline and milestones for any necessary changes. Incorporate updates in the Change Plan accelerator. / Workstream: Solution Adoption / Tags: GROW Adoption Plan, Organizational Change Management

| ID | WBS | Task | Duration | Start | Finish | Predecessors | Resources |
| --- | --- | --- | --- | --- | --- | --- | --- |
| 105 | 2.16 | **Business Driven Configuration Assessment** | 0d | 2024-07-24 08:00 | 2024-07-24 17:00 | 94 |  |
| 106 | 2.16.1 | Perform Initial Business Process Assessment for SAP S/4HANA Cloud | 8h | 2024-07-24 08:00 | 2024-07-24 17:00 | 96 | Business Process Expert |
| 107 | 2.17 | **Solution Scope** | 0d | 2024-07-24 08:00 | 2024-07-24 17:00 | 105 |  |
| 108 | 2.17.1 | Determine Process Scope for SAP S/4HANA Cloud | 8h | 2024-07-24 08:00 | 2024-07-24 17:00 | 106 | Configuration Expert |
| 109 | 2.18 | **Stakeholder Analysis** | 0d | 2024-07-24 08:00 | 2024-07-24 17:00 | 107 |  |
| 110 | 2.18.1 | Identify Stakeholders | 16h | 2024-07-24 08:00 | 2024-07-25 17:00 | 108 | Organizational Change Management Expert |
| 111 | 2.18.2 | Assess Stakeholders | 8h | 2024-07-24 08:00 | 2024-07-24 17:00 | 110 | Organizational Change Management Expert |
| 112 | 2.18.3 | Derive Stakeholder Engagement Activities | 8h | 2024-07-24 08:00 | 2024-07-24 17:00 | 111 | Organizational Change Management Expert |
| 113 | 2.19 | **Communication Analysis and Plan** | 0d | 2024-07-24 08:00 | 2024-07-24 17:00 | 109 |  |
| 114 | 2.19.1 | Analyze Communication Channels | 8h | 2024-07-24 08:00 | 2024-07-24 17:00 | 112 | Organizational Change Management Expert |
| 115 | 2.19.2 | Analyze Communication Needs | 8h | 2024-07-24 08:00 | 2024-07-24 17:00 | 114 | Organizational Change Management Expert |
| 116 | 2.19.3 | Create Communication Plan | 8h | 2024-07-24 08:00 | 2024-07-24 17:00 | 115 | Organizational Change Management Expert |
| 117 | 2.20 | **Fit-to-Standard Analysis Preparation** | 0d | 2024-07-24 08:00 | 2024-07-24 17:00 | 105 |  |
| 118 | 2.20.1 | Prepare for Fit-to-Standard Workshops | 8h | 2024-07-24 08:00 | 2024-07-24 17:00 | 76, 106 | Business Process Expert; Configuration Expert |
| 119 | 2.20.2 | Create Initial Integration and API List | 8h | 2024-07-24 08:00 | 2024-07-24 17:00 | 118 | Integration Implementation Expert |
| 120 | 2.20.3 | Create Initial Artificial Intelligence List | 8h | 2024-07-24 08:00 | 2024-07-24 17:00 | 119 | Integration Implementation Expert |
| 121 | 2.20.4 | Create Initial Analytics List for SAP S/4HANA Cloud | 8h | 2024-07-24 08:00 | 2024-07-24 17:00 | 120 | Analytics Expert |
| 122 | 2.20.5 | Create Initial Application - Workplace List | 8h | 2024-07-24 08:00 | 2024-07-24 17:00 | 121 | Business Process Expert |
| 123 | 2.20.6 | Review Data Protection Requirements and Functionality | 8h | 2024-07-24 08:00 | 2024-07-24 17:00 | 122 | Configuration Expert |
| 124 | 2.20.7 | Review Tax Processing Solution | 8h | 2024-07-24 08:00 | 2024-07-24 17:00 | 118 | Configuration Expert |
| 125 | 2.21 | **Fit-to-Standard System Preparation** | 0d | 2024-07-24 08:00 | 2024-07-24 17:00 | 117 |  |
| 126 | 2.21.1 | Create Configuration Transport | 8h | 2024-07-24 08:00 | 2024-07-24 17:00 | 123 | Configuration Expert |
| 127 | 2.21.2 | Verify Configuration for Fit-to-Standard Workshop for SAP S/4HANA Cloud | 8h | 2024-07-24 08:00 | 2024-07-24 17:00 | 47, 52, 126 | Business Process Expert; Configuration Expert |
| 128 | 2.21.3 | Verify Data and Settings for Fit-to-Standard Workshops for SAP S/4HANA Cloud | 24h | 2024-07-24 08:00 | 2024-07-26 17:00 | 127 | Configuration Expert |
| 129 | 2.21.4 | Activate New Scope or Country/Region | 8h | 2024-07-24 08:00 | 2024-07-24 17:00 | 47, 128 | Configuration Expert |

Notes:
- 105: The purpose of this deliverable is to provide preliminary configuration and further insight into the customer's process based on the solution scope and the customer’s current operational processes. This information is used in planning and executing the fit-to-standard workshops (including maintenance of sample data to be used during fit-to-standard). / Workstream: Application Design and Configuration, Integration / Tags: 2nd Wave Project / Rollout Project, Artificial Intelligence Technology, Hybrid Deployment (Two-Tier ERP)
- 106: The purpose of this task is to discuss the customer’s current business processes to gain a foundational understanding of the business that can be used in the planning and the execution of the fit-to-standard workshops for SAP S/4HANA Cloud. The Business Driven Configuration Questionnaires can be leveraged by the configuration expert to help drive and document the business process discussion. Questions are written in business language, allow for customer responses, and provide a cross reference to self-service configuration activities. Procedure: Download the Business Driven Configuration Questionnaire accelerators that are applicable to the solution scope. Refine each questionnaire by eliminating questions that are not part of the implementation scope. Initiate a discussion with the Business Process Expert on the business’ process based on the refined questionnaires. Incorporate the findings in the planning of the fit-to-standard workshops. Add the links to the completed documents to this task in SAP Cloud ALM. Procedure Notes: The Business Driven Configuration questions are categorized by levels: Level 2 questions are geared to collect information prior to running the fit-to-standard workshops. The goal is to prevent stop/go execution of fit-to-standard workshops due to missing information. Level 3 questions provide more detailed information needed to make a business decision and define specific configuration values in the backlog during the Fit-to-Standard workshops. Note, level 1 questions are used during Discovery phase before signing contract. Use Digital Discovery Assessment tool when available. You must sign into the Roadmap Viewer to be able to view and download the Business Driven Configuration Questionnaires or other non-public accelerators. For customer who has an existing ERP system and adopting a Two-Tier enterprise resource planning (ERP) strategy to run their business with the S/4HANA Cloud implementation, use the Business Process Scope Questionnaire for Two Tier accelerator to determine the applicable scope for the implementation. / Workstream: Application Design and Configuration / Tags: 2nd Wave Project / Rollout Project, Artificial Intelligence Technology, Hybrid Deployment (Two-Tier ERP), Industry Cloud Apps, Localization, Parallel Project Line
- 107: The purpose of this deliverable is to determine and document the scope of the pre-configuration and, where applicable, data that will be deployed and available for the fit-to-standard workshops. The pre-configured system helps accelerate the implementation by providing commonly used executable scenarios in the SAP System to evaluate fit to the customer business processes. / Workstream: Application Design and Configuration / Tags: 2nd Wave Project / Rollout Project, Hybrid Deployment (Two-Tier ERP), Localization, Parallel Project Line
- 108: The purpose of this task is to determine the initial solution scope including standard content, integration, and extension scenarios for fit to standard workshops. This should also include a list of countries where localization is required. Scope developed during the Discovery phase and prior to the project start should be used as an input. Reference Discovery Assessment deliverable and tasks for details. Procedure: Review the results of the SAP Digital Discovery Report from the Discovery phase. For customer using SAP Cloud ALM, upload preselected in scope business processes from the report via Manage Scopes app. Review the scope items including country availability, descriptions, process flows, and test scripts. For customer using SAP Cloud ALM, access the information using the Processes app. The same information is also available in SAP Signavio Process Navigator for S/4HANA Cloud Confirm or revise what is in scope for the implementation project. For customer using SAP Cloud ALM, update scope in Processes app. Reference the Process Scoping section of the SAP Cloud ALM for Implementation - Expert Portal for more details. New solution processes can be created to account for scope not included in the solution process content for extension discussion during Fit-to-Standard workshops. For customers using SAP Cloud ALM, draft the new process using Processes app. Solution Processes that are not included in the solution process content but are fulfilled by integrated applications should also be captured and discussed during Fit-to-Standard workshops. Procedure Note(s): For customer who has an existing ERP system and adopting a Two-Tier enterprise resource planning (ERP) strategy to run their global business, select Two-Tier ERP in SAP Signavio Process Navigator for a list of supported processes. Please get in touch with SAP or Partner sales contact or email digitaldiscovery@sap.com to have a copy of discovery assessment if didn't export the report in Discovery phase. For Retail processes, review Retail Relevant Solution Processes and Scope Selection.xlsx to determine the project scope of industry-specific solution processes. / Workstream: Application Design and Configuration / Tags: 2nd Wave Project / Rollout Project, Hybrid Deployment (Two-Tier ERP), Industry Cloud Apps
- 109: The purpose of this deliverable is to get a systematic overview of the stakeholder landscape for the SAP implementation project. Project stakeholders are individuals or groups who can either be impacted by the project or have the ability to influence its outcome. Conducting a stakeholder analysis early on in the project is crucial as it provides clarity on how various individuals and groups view the project and the level of investment they hold in the project. Being aware of the stakeholders’ attitudes towards the SAP project and the power to influence the project success are the prerequisites for setting up a systematic stakeholder management. / Workstream: Solution Adoption / Tags: Organizational Change Management
- 110: The purpose of this task is to get a comprehensive list and description of all impacted user groups and key individual stakeholders (e.g., top management members, IT and business leaders, process owners, or important project team members). This includes capturing information like the number, business unit allocation and geographic location of the various stakeholders. Stakeholders who share similar characteristics or requirements should be categorized into groups. This may include diverse user groups like controllers, recruiters, or production schedulers. The stakeholder identification is not only an input for the stakeholder analysis, but also the basis for setting up stakeholder specific training and communication activities. Overall, identifying stakeholders helps to customize organizational change management activities to the respective needs. Procedure: Identify IT and business areas affected by the project. Collect relevant data for stakeholder identification (e.g. org charts, user lists of legacy systems to be replaced, HR lists). Cluster and describe stakeholder groups in the Stakeholder List accelerator. / Workstream: Solution Adoption / Tags: Organizational Change Management
- 111: The purpose of this task is to exchange and discuss the viewpoints and assumptions among designated project team members regarding the identified stakeholders of the SAP project, with the goal of establishing a common understanding. Using a matrix for positioning the various stakeholders allows to visualize existing assumptions regarding the stakeholders, to get a good mutual understanding of the stakeholders’ attitudes and engagement levels, and to anticipate the reactions towards the changes triggered by the implementation project. As a stakeholder assessment contains sensitive data, it is vital that the resulting documentation is handled with confidentiality. Procedure: Set up a workshop with the selected project representatives. Discuss the stakeholders’ level of influence and attitude towards the project and document the results in the Stakeholder Matrix accelerator. Map the stakeholders using the Stakeholder Matrix accelerator. / Workstream: Solution Adoption / Tags: Organizational Change Management
- 112: The purpose of this task is to identify interventions to influence the stakeholder landscape to both reduce concerns and resistance, and to foster understanding and commitment for the implementation project. Based on the results of the stakeholder assessment, the responsible project team members agree on activities such as rallying supporters, addressing and persuading opponents, organizing informational events, and scheduling training sessions. Deriving and documenting stakeholder management activities is not a one-time endeavor, but the starting point into an ongoing stakeholder management process. Procedure: Discuss results of stakeholder assessment. Document concrete stakeholder engagement activities in the Stakeholder Engagement Plan accelerator. Define review and update cadence. / Workstream: Solution Adoption / Tags: Organizational Change Management
- 113: The purpose of this deliverable is to establish the foundation for effective and proficient change communication throughout the SAP project. Delivering the appropriate messages about the implementation project through the appropriate channels to the appropriate individuals at the appropriate time is crucial. It generates awareness and commitment for the SAP project, reduces uncertainty and resistance, and enhances motivation and user adoption. Therefore, it is recommended to allocate sufficient time for a comprehensive as-is analysis and a structured planning and implementation of the change communication during the initial stages of the implementation project. / Workstream: Solution Adoption / Tags: Organizational Change Management
- 114: The purpose of this task is to determine the best way to distribute information about the implementation project to the various stakeholder groups. To minimize the effort and expenses associated with change communication activities, it is recommended to utilize existing communication channels, such as collaboration platforms, intranet pages, newsletters, and meetings. Overall, it is important to ensure that the communication channels used by the implementation project are in line with the companies’ communication strategy and habits. Procedure: List and evaluate available communication channels using the Communication Channel Analysis accelerator. Select appropriate channels for different stakeholder groups. Define additional communication channels, if necessary. / Workstream: Solution Adoption / Tags: Organizational Change Management
- 115: The purpose of this task is to tailor change communication to meet the specific needs of the various impacted stakeholder groups. Typically, project stakeholders vary significantly in their knowledge level about the SAP implementation project and their information requirements to handle the changes associated with their respective roles. Furthermore, an SAP implementation project is often accompanied by distinct expectations, objectives, and concerns that must also be addressed. To effectively capture all relevant information while limiting the analysis effort to an appropriate level, the communication needs analysis should be conducted at an appropriate level of detail and with stakeholder groups clustered in a suitable manner. Procedure: Identify contact persons for each stakeholder group. Conduct short interviews to collect required information. Align and document interview results in the Communication Needs Analysis accelerator. / Workstream: Solution Adoption / Tags: Organizational Change Management
- 116: The purpose of this task is to provide a comprehensive outline of all intended communication actions concerning the SAP implementation project. The objective is to identify interrelationships and to synchronize different communication measures, regarding both the timing and messaging. Furthermore, taking a comprehensive approach to planning in advance ensures that the necessary resources for producing content and delivering communication activities are available. The communication activities should encompass a wide variety of approaches, for example: push channels (like e-mails), pull media (like videos), and both traditional and digital media. Moreover, it is important not only to provide information, but also to encourage and facilitate dialogue and engagement. Procedure: Review results from communication channel analysis and communication needs analysis. Derive and document concrete communication activities in the Communication Plan accelerator. Align communication plan with project management. / Workstream: Solution Adoption / Tags: Organizational Change Management
- 117: The purpose of this deliverable is to prepare for the fit-to-standard workshops. / Workstream: Analytics, Application Design and Configuration, Extensibility, Integration / Tags: 2nd Wave Project / Rollout Project, Artificial Intelligence Technology, Hybrid Deployment (Two-Tier ERP), Identity and Access Management
- 118: The purpose of this task is to prepare for the Fit-to-Standard workshops. This involves reviewing project objectives, process scopes, solution design principles, and expected project value and benefits. Additionally, it includes preparing materials for the workshops and ensuring all participants have access to necessary tools and information. Prerequisites: Complete task Self-Enable on Fit-to-Standard Process. Procedure: Review project objectives, process scopes, solution design principles, and expected project value and benefits. Prepare material for workshops. For remote or hybrid fit-to-standard workshops, leverage the Fit-to-Standard Workshops - Mural Template accelerator to: Pre-fill with all the workshop enablement materials. Share with participants prior to the execution of workshops. Have participants fill out questions or topics in advance. Ensure all participants of the workshop have access to SAP Signavio Process Navigator for S/4HANA Cloud to understand standard business processes supported for the initial list of selected scope items from Discovery Assessment. For customers using SAP Cloud ALM, get familiar with the Processes app to view process information. Leverage sample template accelerators (i.e. Accel ID = PM_216, Accel ID = PM.45, Accel ID = S4H_966, Accel ID = PM.211) to create a tracker to capture requirements and notes to create a backlog. For customers who use SAP Cloud ALM, get familiar with the Requirements and Notes app. Determine how to categorize requirements (i.e., using Tag field or Workstream field for configuration vs customer-specific development, etc) to capture findings from the Fit-to-Standard workshop. Use the SAP S/4HANA Cloud Road Map Explorer or SAP S/4HANA Cloud - What's New Viewer to include the latest information when discussing potential customer-specific requirements. Access the Regulatory Change Manager tool to review current and upcoming regulatory changes and add topics to the fit-to-standard workshop in respective business process areas when needed. Schedule Fit-to-Standard workshops. Reference the sample schedules in the How to Approach Fit-to-Standard Analysis - S/4HANA Cloud.pptx accelerator to structure workshops by line of business, and, in some cases, more detailed workshops by business areas and subareas when needed. Ensure invites are sent and other logistics (i.e., meeting rooms, materials, tool access, etc.) are planned accordingly. Procedure Note(s): Although the Fit-to-Standard Workshops - Mural Template accelerator is specific for Mural, the template can be used as an example when creating a template in other collaboration tools. To create a new Mural from the Fit-to-Standard Workshops - Mural Template accelerator, a Mural license is required. Reference SAP Cloud ALM for Implementation - Expert Portal to learn about Fit-to-Standard Execution and Requirement Management using Process, Requirements and Notes apps. Digital Discovery Report with preselected in-scope business processes can be uploaded using the Manage Scope app in SAP Cloud ALM. See task Generate SAP Digital Discovery Report in Discovery phase on generating report. Output of the report can also be used in the Define Scope app in SAP Central Business Configuration. Reference task Set Up Starter Customizing and Development Tenants in SAP Central Business Configuration for details. Check Help - Regulatory Change Manager to learn more about how to use the tool. Select product-specific accelerator when applicable. / Workstream: Application Design and Configuration / Tags: 2nd Wave Project / Rollout Project, Hybrid Deployment (Two-Tier ERP)
- 119: The purpose of this task is to create the initial integration and API list. Procedure: Download the template and make yourself familiar with the required information. Collect and document all known integrations (i.e. B2B, Third Party, etc.) from all sources (i.e. Digital Discovery Assessment, Board Decision, etc.). Provide this list to the participants of the fit-to-standard workshops and collect all current EDI integrations. Procedure Note(s): Store the list in a collaboration tool to avoid the creation of multiple lists with similar content. In case this is not possible, multiple lists need to be consolidated after the Fit-to-Standard workshops. The available APIs by SAP various products can be reviewed using the SAP Business Accelerator Hub Review accelerator API Data Download- Technical Setup Document to maintain communication management in S4HC environment. For any extract or download raw data from S/4HANA Cloud, review accelerator API Data Download Process which contain step-by-step process of downloading data. For SAP Integration with Concur solutions (SAP ICS) or any other customer-owned integration to connect your SAP Concur and SAP finance systems please see SAP Note Accel ID = S4H_2192. / Workstream: Application Design and Configuration, Integration / Tags: 2nd Wave Project / Rollout Project
- 120: The purpose of this task is to prepare and distribute the template to be used to capture notes for various technology related to Artificial Intelligence (AI) during the fit-to-standard workshop. Procedure: Download the Artificial Intelligence - Questionnaire from the Accelerator section and answer the questions. Review the Situation Handling for SAP S/4HANA Cloud accelerator to become enabled on the situation handling types available and to help foster discussion on the types needed during the fit-to-standard workshops To view the relevant scope items, use the following accelerators SAP Build Process Automation : SAP Bot Store - Business Content for S/4HANA Cloud Machine Learning - Configuration Guide attached to SAP Best Practices - Embedded Machine Learning in S/4HANA Cloud Situation Handling - Help - Use Cases for Situation Handling For customer who uses Cloud ALM, Requirements and Notes app provides the ability to capture findings and Processes app has the ability to scope items for Artificial Intelligence enabled processes. Procedure Note(s): By selecting the appropriate Line of Business in Artificial Intelligence - Questionnaire, user can identify the AI related scope items as per their Business processes. / Workstream: Application Design and Configuration, Integration / Tags: 2nd Wave Project / Rollout Project, Artificial Intelligence Technology
- 121: The purpose of this task is to prepare and distribute the template to be used to capture notes for analytics (reports) during the fit-to-standard workshop(s). Procedure: Review the SAP S/4HANA Cloud Embedded Analytics - One Pagers accelerators to become enabled on the solution's analytical capabilities and help foster discussions on the reports and Key Performance Indicators (KPIs) needed during the fit-to-standard workshop(s). Download the Analytics List Template accelerator and distribute it to participants of the fit-to-standard workshop. Procedure Note(s): For customers who are using Cloud ALM, the Requirements and Notes app provides the ability to capture findings and Processes app has the ability to scope items for analytics. / Workstream: Analytics, Application Design and Configuration / Tags: 2nd Wave Project / Rollout Project
- 122: The purpose of this task is to create the initial Application - Workplace List that will be distributed to the fit-to-standard participants and used to capture notes for Identity and Access Management during the fit-to-standard workshops. The Application - Workplace List determines the application of each Scope Item and collects all required applications for the scope of the overall project. Procedure: Collect the Digital Discovery Assessment report. Review the How to Create Application - Workplace List accelerator to become enabled on how to download and create the Application-Workplace list. Create the Application - Workplace List and transfer the results of the Digital Assessment report to the list, selecting the relevant Scope Items. Filter the relevant Scope Items and applications in the Application - Workplace list and provide this list to the participants in the fit-to standard Workshops. Procedure Note(s): It is recommended to store the list in a central collaboration tool, for example SAP Jam, to avoid the creation of multiple lists with similar content. The SAP Fiori Apps Reference Library accelerator can be used to find S/4HANA Cloud apps. It is also the base to identify the required Business Catalogs and Business Roles. Use the IAM Information System app to determine the existing Business Catalogs that allow access to specific apps. To find the Business Catalogs, set the Main Entity = Application > enter the app name in the Search field > select 'Go.' Please consider that some applications in SAP S/4HANA Cloud aren't assigned to a specific Scope Item. You can find them in the Application-Workplace list, when you deselect the Scope Items. / Workstream: Application Design and Configuration / Tags: 2nd Wave Project / Rollout Project, Identity and Access Management
- 123: The purpose of this task is to prepare for implementing features that are relevant for data protection. Data protection is associated with numerous legal requirements and privacy concerns. It is important that data protection requirements and related solution functionality are considered during the fit-to-standard workshops. In addition to compliance with general data protection and privacy acts, it is necessary to consider compliance with industry-specific legislation in different countries. Procedure: Understand data privacy and protection regulation for the respective countries that are in scope for the project. Identify legal and corporate policies must be adhere to. Know the stakeholders, their roles and responsibilities in the process of data transfer. Understand company data and have use cases of features required. Get an overview of data protection topic that SAP supports, such as Consent, Read Access Logging, Information Retrieval, etc in the Accel ID = S4H_519. Review standard functionalities that help customer facilitate the compliance process in Accel ID = SSSP_DPP. For example: Data Protection and Privacy (5LE) Information Lifecycle Management (1KA) and Data controller and Purpose (6N9) Access the S/4HANA Cloud Data Model Considerations for Data Protection.pdf accelerator to understand the approach, the need and how solution features can help with compliance of data protection regulations. Procedure Note: SAP provides specific features and functions to support compliance with regard to relevant legal requirements. By nature of legal requirements, the conclusion whether these features are covering customer specific demands as well as the conclusion whether additional measures have to be taken is solely with the customer. / Workstream: Application Design and Configuration / Tags: 2nd Wave Project / Rollout Project
- 124: The purpose of this task is to review tax solution in SAP S/4HANA Cloud and add agenda item for deep dive during Fit-to-Standard workshop. For example: US Jurisdictions Code Tax Code External Tax Package Time-Dependent Tax Calculation (TDT) Pro Rata VAT Registration for Indirect Taxation Abroad (RITA) Procedure: Review Help - Tax Processing accelerator for general tax processing related information, i.e. tax related to sales and purchases, withholding tax, etc. Select the country from the Help - Country/Region-Specific Functions accelerator, go to Finance section to review country specific information on tax. Go to Functions Relevant for Several Countries /Regions section in Help - Country/Region-Specific Functions accelerator. Review tax related information under Finance. Search knowledge base to find latest release and restriction information listed on tax solutions. Make sure these restrictions are understood and add to Fit-to-Standard workshop for discussion if needed. For example: See SAP note 2440096 for internal US tax calculation restrictions. See SAP note 2907372 for Registration for Indirect Taxation Abroad (RITA) supported countries, application and processes. In addition to SAP delivered internal tax calculation, for certain countries, customer can switch to the external tax solution to work with an external tax partner. Search for certified tax solution listed in the SAP Certified Solutions Directory accelerator or use SAP Business Accelerator Hub to search for tax related Product and API that works with S/4HANA Cloud. Procedure Note(s): For countries where Time-Dependent Tax Calculation (TDT) is in scope, time-dependent taxes are active as soon as you activate that target country. Reference Activate New Scope or Country/Region task during system preparation for Fit-to-Standard workshop. It is important to know that tax solution is set up at the country level. It is not possible to run both the internal and external tax solutions for the same country. Check Blog - External Tax Calculation Overview for S/4HANA Cloud for more information. / Workstream: Application Design and Configuration / Tags: 2nd Wave Project / Rollout Project, Localization
- 125: The purpose of this deliverable is to finalize the setup of the system for the Fit-to-Standard workshops. Before the Explore phase can begin, it is important to ensure that a functional system is available to be used for demonstration and visualization purposes during Fit-to-Standard workshops. This is an essential part of the overall implementation strategy as this is the foundation to start with a pre-configured solution during the explore phase. / Workstream: Application Design and Configuration / Tags: 2nd Wave Project / Rollout Project
- 126: The purpose of this task is to create a default customizing request in the Starter System Customizing Tenant to prevent any errors when preparing any of the configuration for the Fit-to-Standard workshops. Apps Used: Export Customizing Transports (Starter System Customizing Tenant) SAP Business Roles Template Required: SAP_BR_ADMINISTRATOR SAP_BR_BPC_EXPERT Procedure: Create a customizing request in the Export Customizing Transports app. See the SAP Help – 3-System Landscape and Transport Management accelerator for further details on how to create the customizing request. Procedure Note(s): Further details on how to create a customizing request can be found in the following section: 3-System Landscape and Transport Management > Tools and Apps > Export Customizing Transports > Working in the Expert Customizing Transports App. Note: in the Starter System Customizing Tenant, there will be no transportation target for which the configuration will be sent. The transport is local and for technical reason only. The default customizing transport should be created before configuration, as some of the configuration requires the default customizing transport to be created ahead of time. / Workstream: Application Design and Configuration
- 127: The purpose of the task is to make sure all required configuration settings are in Starter Customizing Tenant in order to support discussion on selected business processes during Fit-to-Standard workshop. Prerequisites: Starter Customizing Tenant is activated. Reference tasks in Initial System Access for SAP Central Business Configuration and Initial System Access for SAP S/4HANA Cloud Starter System deliverables. Procedure: Check activated scope in evaluation project of SAP Central Business Configuration. Verify countries activated for the selected scope. Cross reference scope item available for the planned country using the Availability and Dependencies of Scope Items accelerator. Review pre-delivered organization structure and enhance in SAP Central Business Configuration if needed. Reference Help - Project Experience - Organizational Structure Management to get familiar with organization units. Review the configuration activities in Business Process Configuration app in SAP Central Business Configuration for selected scope. Update pre-delivered setting and make required setting for selected scope items per Business Driven Configuration Assessment results. Reference the Business Process Configuration section from Help - Project Experience accelerator on how to search or access hierarchically according to business areas and perform the activities. Reference task Activate New Scope or Country/Region to select additional scope or country/region if needed. Procedure Note(s): Customizing setting saved in Starter Customizing Tenant of Starter System cannot be transported. If you are changing SAP pre-delivered configuration, make sure to follow guidelines from SAP and discuss the impact of such changes during the workshop. Reference Industry specific information in accelerator(s) for scope item list, setup instruction, etc when applicable. / Workstream: Application Design and Configuration
- 128: The purpose of this task is to determine if additional data and settings need to be maintained in Starter Customizing Tenant for Fit-to-Standard workshops. SAP Best Practice comes with pre-delivered master data or demo/sample data. In task Set Up Starter System in SAP Central Business Configuration and in task Activate New Scope or Country/Region, demo data are created in Starter Customizing Tenant upon activation and deployment from SAP Central Business Configuration. These data are intended to be used with the Fit-to-standard analysis, making the exploring of pre-configured business processes much easier. Additional project specific data and settings can be created or maintained to help further facilitate the discussion around complex customer topics. In the Starter Customizing Tenant, extensibility for key users is deactivated by default. Prerequisites: Business processes to be demonstrated in the Fit-to-Standard workshops have been reviewed and determined. Procedure: Review Master Data accelerator or access Starter Customizing Tenant to determine if standard pre-delivered demo data is sufficient for all business processes to be demonstrated. Create additional sample data in the Starter Customizing Tenant to further enhance the business processes to be demonstrated. See the Create Your Own Master Data accelerator below for further details. For certain business processes, especially Non-Standard or License Scenarios, check additional master data section in the respective help portal to setup data or initialize functionality for the workshop. For example, see Treasury Management Data and Setting accelerator to find out respective information on master data and settings required when preparing Fit-to-Standard workshop for Treasury Management related optional scope items. Use Extensibility Setting app to activate Key User Extensibility objects when applicable. See the Output Management Set Up Instructions (1LQ) accelerator for more detailed information on the SAP S/4HANA Cloud set up process. Procedure Note(s): It is a best practice to create own data rather than modifying demo master data delivered by SAP in Starter Customizing Tenant. This will help prevent error for additional scope activation and content update and upgrade down the road. Not all data needs to be created ahead of time. Some master data creations are business processes that require dedicated session during Fit-2-Standard workshop to go through in details. Data needed for evaluating reports, or situation handling scenarios are best planned to be created during the Fit-to-Standard workshop as a result of walking through of related business process transactions in Starter Customizing Tenant. Changes of settings, like number ranges, could lead to incompatibilities during upgrade, scope extension and adding new countries. Reference SAP Note 3298955 - Demo Data for Starter System accelerator for more details. Extensibility for key users can be activated. However, extension items that are created in Starter System cannot be transported into other systems. Reference Industry specific accelerator for setup instructions when applicable. / Workstream: Application Design and Configuration
- 129: The purpose of this task is to activate a new solution scenario or a new country/region in the Starter Customizing Tenant in SAP S/4HANA Cloud using SAP Central Business Configuration. Procedure: Review scenarios in the ‘Define Scope’ activity in SAP Central Business Configuration. Reference Initiate Change and Defining Scope section in Help – Project Experience accelerator to select new scenario or country/region in SAP Central Business Configuration. The request for activation of Non-Standard and License Scenarios is done by the Service Center via an Incident/Service Request, with the following information: Subject: ‘Activation of New Licensed Scenarios’ Description: ‘Please activate the scenarios listed below in the Starter Customizing Tenant.' List the scenario title(s) as they appear in the Define Scope app of the SAP Central Business Configuration. Component: XX-S4C-OPR-SRV. Some optional process scenarios are now available for activation from SAP Central Business Configuration. Please refer to ‘Selectable in Scoping in SAP Central Business Configuration’ column of the Availability and Dependencies of Scope Items accelerator to see what can be activated from SAP Central Business Configuration. Check links in ‘More Information on Optional Provisioning’ column in the Availability and Dependencies of Scope Items accelerator for special provisioning instruction. For example, using component CO-PC-OBJ_EBR to request "IFRS 15 bundling functionality" if needed, in addition to the activation of optional Event Based Revenue Recognition process. Review sample organizational structure setup in Set Up Organizational Structure app. Reference Organization Structure Management section in Help – Project Experience accelerator for information on organizational units and how to use the app. Add additional organization structure element when needed. Reference Business Process Configuration section in Help – Project Experience accelerator to adjust system settings for selected scope or country/region. Procedure Note(s): When adding new scope or country/region, it is recommended to limit the number of countries/regions to no more than five. Content from this scope must be deployed to Starter Customizing Tenant before adding the next set of countries/regions. Check SAP Note 3151804 - Country Activation Guidance in Central Business Configuration for best practices. Scope finalization may take some time. Wait for its completion before starting next activity. Once the Confirm Scoping is Completed milestone is set, a scenario/ country cannot be deactivated or removed. Multiple scenarios can be selected in the same change project. Scenarios that require an additional subscription cannot be activated without a subscription contract. To view a list of process scenarios that are activated for a particular country/region, go to SAP Central Business Configuration, access My Selected Scope in Define Scope app. For legal entity operating in multiple countries/regions, consider activating Registration for Indirect Taxation Aboard (RITA) function for the plant aboard scenario instead of activating new country/region when applicable. Advance Valuation will be automatically activated by default when adding a new country/region version. Reference SAP Note 3139304 - Automatic Activation of Advanced Valuations for more details and steps to use Classic Valuations before making any postings. For customer using Cloud ALM and uploaded scopes with export from Digital Discover Assessment tool, reflect additional scope in Process app. Reference Process Scoping in the SAP Cloud ALM for Implementation - Expert Portal accelerator. / Workstream: Application Design and Configuration / Tags: 2nd Wave Project / Rollout Project, Localization

| ID | WBS | Task | Duration | Start | Finish | Predecessors | Resources | Workstream |
| --- | --- | --- | --- | --- | --- | --- | --- | --- |
| 130 | 2.22 | **Multi-Country Approach and Plan** | 0d | 2024-07-24 08:00 | 2024-07-24 17:00 | 125 |  | Project Management |
| 131 | 2.22.1 | Develop the Multi-Country Approach and Plan | 8h | 2024-07-24 08:00 | 2024-07-24 17:00 | 129 | Project Lead | Project Management |
| 132 | 2.23 | **Data Migration Approach and Plan** | 0d | 2024-07-24 08:00 | 2024-07-24 17:00 |  |  | Data Management |
| 133 | 2.23.1 | Develop the Data Migration Approach and Plan | 8h | 2024-07-24 08:00 | 2024-07-24 17:00 | 96 | Data Migration Expert | Data Management |
| 134 | 2.24 | **Prepare Integration Setup** | 0d | 2024-07-24 08:00 | 2024-07-24 17:00 | 132 |  | Integration |
| 135 | 2.24.1 | Select Key Integrations for Fit-to-Standard | 8h | 2024-07-24 08:00 | 2024-07-24 17:00 | 119 | Integration Implementation Expert | Integration |
| 136 | 2.25 | **Analytics Approach and Plan** | 0d | 2024-07-24 08:00 | 2024-07-24 17:00 | 94 |  | Analytics |
| 137 | 2.25.1 | Develop the Analytics Approach and Plan | 8h | 2024-07-24 08:00 | 2024-07-24 17:00 | 96 | Analytics Expert | Analytics |
| 138 | 2.26 | **Enablement Strategy** | 0d | 2024-07-24 08:00 | 2024-07-24 17:00 |  |  | Solution Adoption |
| 139 | 2.26.1 | Review Enablement Strategy Research and Interviews | 8h | 2024-07-24 08:00 | 2024-07-24 17:00 | 62, 63, 64, 65, 66, 67, 68, 69, 70, 71, 72, 73, 74, 75, 76, 77, 78, 104, 116 | Education Expert | Solution Adoption |
| 140 | 2.26.2 | Document Enablement Strategy | 8h | 2024-07-24 08:00 | 2024-07-24 17:00 | 139 | Education Expert | Solution Adoption |
| 141 | 2.27 | **Learning Needs Analysis for Project Team** | 0d | 2024-07-24 08:00 | 2024-07-24 17:00 |  |  | Solution Adoption |
| 142 | 2.27.1 | Identify Learning Needs for Project Team | 8h | 2024-07-24 08:00 | 2024-07-24 17:00 | 140 | Education Expert | Solution Adoption |
| 143 | 2.27.2 | Create Learning Curriculum based on SAP Standard Learning | 8h | 2024-07-24 08:00 | 2024-07-24 17:00 | 142 | Education Expert | Solution Adoption |
| 144 | 2.27.3 | Conduct Business Review | 8h | 2024-07-24 08:00 | 2024-07-24 17:00 | 143 | Education Expert | Solution Adoption |
| 145 | 2.28 | **Content Development Tool Deployment** | 0d | 2024-07-24 08:00 | 2024-07-24 17:00 | 79 |  | Solution Adoption |
| 146 | 2.28.1 | Prepare and Install a Content Development Tool | 8h | 2024-07-24 08:00 | 2024-07-24 17:00 | 128, 129 | Education Expert | Solution Adoption |
| 147 | 2.29 | **Phase Closure and Sign-Off Phase Deliverables** | 0d | 2024-07-24 08:00 | 2024-07-24 17:00 | 132 |  | Project Management |
| 148 | 2.29.1 | Conduct Project Quality Gate | 8h | 2024-07-24 08:00 | 2024-07-24 17:00 | 73, 133, 135, 137, 144, 146 | Project Lead | Project Management |
| 149 | 2.29.2 | Obtain Customer Sign-Off for Phase Completion | 8h | 2024-07-24 08:00 | 2024-07-24 17:00 | 148 | Project Lead | Project Management |
| 150 | 3 | **Explore** | 0d | 2024-07-24 08:00 | 2024-07-24 17:00 |  |  |  |
| 151 | 3.1 | **Execution/Monitoring of Project** | 0d | 2024-07-24 08:00 | 2024-07-24 17:00 | 147 |  | Project Management |
| 152 | 3.1.1 | Review the SAP S/4HANA Cloud Onboarding Journey | 8h | 2024-07-24 08:00 | 2024-07-24 17:00 | 31 | Project Lead | Project Management |
| 153 | 3.1.2 | Direct and Manage Project Execution | 8h | 2024-07-24 08:00 | 2024-07-24 17:00 | 149 | Project Lead | Project Management |
| 154 | 3.1.3 | Update Project Management Documents | 8h | 2024-07-24 08:00 | 2024-07-24 17:00 | 153 | Project Lead | Project Management |
| 155 | 3.1.4 | Manage Project Issues, Risks, and Changes | 8h | 2024-07-24 08:00 | 2024-07-24 17:00 | 154 | Project Lead | Project Management |
| 156 | 3.1.5 | Communicate Project Status and Progress | 8h | 2024-07-24 08:00 | 2024-07-24 17:00 | 155 | Project Lead | Project Management |
| 157 | 3.1.6 | Deliver Program Goal Alignment Survey | 8h | 2024-07-24 08:00 | 2024-07-24 17:00 | 156 | Project Lead | Solution Adoption |

Notes:
- 130: The purpose of this deliverable is to create a multi-country approach for projects that will deploy and go-live with multiple country localizations. The deliverable explains how to validate and consider various aspects to decide the best approach for successful initial and future go-lives. / Tags: GROW Adoption Plan
- 131: This task is relevant to implementations that include a scope of multiple localizations. The purpose of this task is to ensure a well-organized rollout for projects that encompass multiple localizations. This task involves planning a multiple country rollout, which can be executed using a phased approach with incremental waves or a 'big bang' approach using a global template for all countries simultaneously. A defined multi-country plan is crucial for the preparation for the Fit-to-Standard workshop. This aligns key stakeholders with the project's priorities, timelines, and aids in risk mitigation. Data migration, integration and extensibility decisions resulting from the fit-to-standard should be reviewed to verify that they also align with the plan. Procedure: Analyze the countries required for rollout and determine the sequence and waves for the rollout. See Cloud Multi-Country Rollout.pptx for more information. The analysis should include the following: Prioritization of countries to be deployed and go-live Availability and Scope (Scope items) Central Governance for configuration and operations Legal requirements Change management End user training System upgrade schedule Document the plan. The final plan will depend on whether you choose to deploy via phased or ‘big bang’ approach. / Tags: GROW Adoption Plan
- 132: The purpose of this deliverable is to capture and communicate the approach and plan for the data migration to the new environment. / Tags: 2nd Wave Project / Rollout Project
- 133: The purpose of this task is to develop the data migration approach and plan. Procedure: Develop the approach and plan which includes following: Milestones for data delivery. Scope of data sets needed and source systems. Resource requirements, roles and responsibilities. Estimated volumes for various data sets. Tools required (legacy data extraction, data cleansing, migration cockpit, etc.). Data migration testing. Data validation. Data cleansing. Productive load and support. Reporting. Procedure Note(s): Always cross reference the Partner’s Statement of Work to assure that the strategy is consistent with scope, roles and responsibilities outlined in the agreement. Ensure that the data migration plan includes integrated applications. See accelerator list for samples. / Tags: 2nd Wave Project / Rollout Project, Industry Cloud Apps
- 134: The purpose of this deliverable is to list the key integrations to be reviewed during the fit-to-standard workshop. / Tags: 2nd Wave Project / Rollout Project
- 135: The purpose of this task is to create a list of integrations to be reviewed and demonstrated for the fit-to-standard workshops. Integrations are typically not setup in the SAP S/4HANA Cloud Starter System as the system will eventually be decommissioned. Procedure In collaboration with Project Manager and System Architect prepare a list of key integrations that need to be demonstrated during the fit-to-standard workshops. Check the SAP Signavio Process Navigator for available Scope Items and download the respective setup guide. For customer driven integration follow the SAP Help documentation to develop a setup guide and a process model. Procedure Note(s): The SAP S/4HANA Cloud Starter System will be automatically decommissioned by SAP 30 calendar days after the SAP S/4HANA Cloud Production System provisioning email is sent. Integration efforts spent on SAP S/4HANA Starter system will be lost eventually once the system is decommissioned. / Tags: 2nd Wave Project / Rollout Project
- 136: The purpose of this deliverable is to capture and communicate the approach and plan for the analytics workstream. / Tags: GROW Adoption Plan
- 137: The purpose of this task is to ensure the alignment of the customer analytics journey approach and planning. Procedure: Review the SAP Activate Analytics Strategy accelerator which includes the following: Key milestones Roles and responsibilities Tools and considerations (i.e. My Fiori Apps Reference Library, SAP Analytics Cloud, and other) Procedure Note(s): Proposing an advisory role from SAP will not only ensure the customer has the right vision and strategy regarding data and analytics but will also ensure the customer journey will continue on the right path with increased adoption of SAP solutions. Always cross reference the project statement of work to assure that the strategy is consistent with scope, roles and responsibilities outlined in the agreement. / Tags: GROW Adoption Plan
- 138: The purpose of this deliverable is to analyze your current enablement activities and to provide detailed strategic direction based on this analysis. It will help the customer gain an understanding of the new learning enablement strategy and the enablement activities implemented to support the digital transformation process. / Tags: 2nd Wave Project / Rollout Project
- 139: The purpose of this task is to understand the current learning and enablement capabilities to support a successful rollout of new learning enablement plans; such as is there an existing training and education team, enablement tools and processes. Enablement activities are defined that are needed to support the digital transformation process and/or customer project. Procedure: Schedule and conduct interviews to assess training and adoption needs, evaluate the current status of learning enablement, and define the desired future condition. Find and conduct interviews with the Project Manager and Program Manager from the customer's organization involved in the SAP implementation project. Find and conduct interviews with the Education Manager, Organizational Change Manager, Head of Human Resources, and any other relevant key stakeholders within the customer's organization, as requested. Review both the Preparing an Enablement Strategy and Enablement Strategy Overview accelerators to understand the process of outlining an enablement strategy. / Tags: 2nd Wave Project / Rollout Project
- 140: The purpose of this task is to document a learning enablement strategy plan to ensure the proposed enablement plan is a collaborative effort in lock step with all key stakeholders and line-of-business managers. Procedure: Assess current learning culture to leverage existing resources, learning and knowledge sharing channels and capabilities. Define the full enablement scope from the functional, organizational, geographical and technical perspective, with a focus on real-life business context. Build a best practice learning enablement methodology in conjunction with all key stakeholders. Aim for efficiency through a continuous learning enablement approach, determining the full scope of the learning enablement and knowledge management activities. / Tags: 2nd Wave Project / Rollout Project
- 141: The purpose of the learning needs analysis for project team deliverable is to identify the project team’s learning needs and proposed learning paths, based on the roles of the project team and the objectives of the project. It also evaluates any knowledge gaps and suggests future learning paths. / Tags: 2nd Wave Project / Rollout Project
- 142: The purpose of this task is to begin the learning needs analysis for project team process; to identify the processes in scope and analyze the training required for the project team. Procedure: Align with the key project stakeholders on the learning needs and digital learning opportunities. Review the scope of the project. Conduct learning needs analysis interviews with the project team managers and/or members to identify learning requirements for each member of the project team. Review both Planning a Learning Needs Analysis and Learning Needs Analysis Project Team Overview accelerators to understand the methods for effectively analyzing and identifying learning requirements for project teams and business users. Analyze different learning methods and content types in SAP Learning Hub and standard SAP courses. / Tags: 2nd Wave Project / Rollout Project
- 143: The purpose of this task is to create a list of content types and learning methods to enable the project team. Procedure: Provide a fully scoped analysis of learning requirements for the project team. Review the SAP Learning Hub content and standard SAP courses to develop the project team curriculum, based on solutions and business processes in scope for the project. The course catalog should be categorized into functional process and sub-process areas including the key tasks and process overviews, the audience (business role), learning duration, method of delivery, and any pre-requisites required. / Tags: 2nd Wave Project / Rollout Project
- 144: The purpose of this task is to present the learning needs analysis findings to the project team key stakeholders. Procedure: Create the learning needs analysis for project team report. Present the learning needs analysis findings to the project SMEs and key stakeholders for review and final sign-off. / Tags: 2nd Wave Project / Rollout Project
- 145: The purpose of this deliverable is to introduce an enablement content development lifecycle tool for editing and distributing the organization's enablement assets. This tool improves the overall end-user adoption and the efficiency of software programs across enterprises with learning content development that has been reviewed and approved by key stakeholders and line-of-business area managers. / Tags: 2nd Wave Project / Rollout Project
- 146: This task is relevant for customers with the SAP Enable Now Content Development Tool. The purpose of this task is to prepare and install a learning content development tool to ensure all relevant resources are enabled and trained on 'how to use' the tool. Procedure: Install and deploy the learning content development tool. Configure identity management or single sign on. Run client deployment and cloud security. Configure the system roles, workflows, and metadata required in order to use the embedded enablement content. Enable the end-users on how to use the tool effectively. Procedure Note(s) For SAP S/4HANA and SAP S/4HANA Cloud, configure Web Assistant by following the Set Up of Web Assistant for SAP S/4HANA Cloud accelerator. / Tags: 2nd Wave Project / Rollout Project
- 147: The purpose of the phase closure and sign-off deliverable is to: Ensure that all required deliverables from this phase and the project are complete and accurate, and close any outstanding issues Identify lessons learned during the phase to prepare for formal phase closure Capture customer feedback and potential Customer References / Tags: 2nd Wave Project / Rollout Project, GROW Adoption Plan
- 148: The purpose of the Quality Gate is to ensure that both compliance and project management standards are being upheld within projects. A Quality Gate is a checklist milestone at the end of a project phase . Prior to moving into the next phase each project manager demonstrates that they have been compliant with the mandatory deliverables associated with a methodology while ensuring best practice standards have been applied to ensure quality. Procedure: Review the QGate Checklist Concept SAP Activate accelerator to ensure an understanding on what should be covered during the Quality Gate. Areas covered should include: Specifically checking deliverables been completed with recommended practices Assuring project planning Validating open risks and issues, and measuring customer satisfaction Conduct the Quality Gate utilizing the applicable Quality Gate Template accelerator. Procedure Note(s): New additional key deliverables need to be added in the quality gate checklist by the Project Manager to the different project types. / Tags: 2nd Wave Project / Rollout Project, GROW Adoption Plan, Industry Cloud Apps
- 149: The purpose of this task is to ensure that all required deliverables from this phase and the project are complete and accurate, and close any outstanding issues. Use the Phase Signoff Template accelerator for this task. Procedure Identify and list all key deliverables from phase delivery. Confirm status of completion and any outstanding actions. Provide signoff document to signatory. Obtain phase signoff and agreement for any possible outstanding actions. Identify lessons learned during the phase Capture customer feedback and identify potential customer references When sign-off is obtained, the project can proceed to the next phase. / Tags: 2nd Wave Project / Rollout Project, GROW Adoption Plan
- 150: The purpose of this phase is to perform a fit-to-standard analysis to validate the solution functionality included in the project scope and to confirm that the business requirements can be satisfied. Identified delta configuration values are added to the backlog for use in the next phase. Explore Phase Activities: Project Management Execution, Monitoring and Controlling Customer Project Team Enablement Fit-to-Standard Analysis Configuration Definition Integration Prerequisites Confirmation Solution Extension Preparation Data Load Preparation Phase Closure In the Explore phase, solution experts lead a series of structured show-and-tell and solution design workshops. The goals of these workshops is to review the best practice functionalities of the SAP solution, identify delta requirements and determine the configuration of the SAP cloud solution.
- 151: The purpose of this deliverable is to carry out the planned and approved project work and measure project performances to identify variances from the plan. The execution goal is to manage the scope of the work to be done, while monitoring the execution, identifying variances from the plan, monitoring quality results, controlling progress against the plan, controlling changes throughout the project, assess and respond to risks, and communicate the project status. The Project Management Plan developed during the Prepare phase for each of the PM knowledge areas guides the team's approach to management, execution, monitoring, and control of project activities. This methodology provides steps to be considered when each activity is engaged, supported by the team's monitoring/controlling plans. The project manager is responsible for ensuring that the monitoring/controlling plans developed in the planning phase are applied at the appropriate level of control. Additional Information for Premium Engagement Implementations: The SAP TQM is responsible for oversight activities in projects that are run under the SAP Premium Engagement agreement (like Active Embedded or MaxAttention). The roles of SAP TQM and Project Manager are distinct responsibilities during the project delivery. / Tags: 2nd Wave Project / Rollout Project, GROW Adoption Plan
- 152: The purpose of this task is to provide users with the essential knowledge and resources required to successfully navigate and contribute to projects and implementations involving SAP S/4HANA Cloud. Procedure: Explore the SAP methodology and gain familiarity with essential components, including the solution map, SAP tools and implementation, roles & authorization and system testing using the 3rd Onboarding session - Project Guidance one pager accelerator. Review the SAP S/4HANA Cloud Onboarding Journey one pager accelerator to get familiar with the onboarding journey from the welcome & introduction all the way to go-live preparation. Tune into both live and recorded onboarding webinars using the SAP S/4HANA Cloud Public Edition Onboarding Resource Center accelerator.
- 153: The purpose of this task is for the project manager and the project team to execute the project management plan and to accomplish the work defined in the project scope statement. Procedure: In executing the project work, the project team will perform the following types of activities: Perform project tasks to reach project objectives Expend effort and funds to accomplish project objectives Staff, train, and manage the project team members assigned to the project Obtain, manage, and utilize resources Implement and execute the planned methods and standards Create, control, verify, and validate project deliverables Manage the scope of the approved work Manage risks and implement risk response activities Manage issues to closure Adapt approved changes into the scope, plans, and project environment Establish and manage internal and external communications Collect project data and report on progress and performance In monitoring/controlling work results, the project team performs the following types of activities: Compare actual project performance to the project management plan Assess performance to determine whether corrective or preventive actions are necessary Monitor and control project risks Provide metrics to support progress and performance reporting and forecasting Monitor implementation of approved changes Take corrective action as needed See topic ‘Analytics’ in the SAP Cloud ALM for Implementation - Expert Portal accelerator for more information on project monitoring in SAP Cloud ALM. Management plans developed during the Prepare phase guide the team's approach to management, execution, and control of project activities. Note: See the “Prepare Project Management Plan” task in Prepare phase for details. / Tags: 2nd Wave Project / Rollout Project
- 154: The purpose of updating the project management documents task is to ensure that the project manager keeps the key project management documents up-to-date. The project management document is a comprehensive body of project documents that include the project schedule, budget/cost information, monitoring/controlling plans for each of the nine knowledge areas of the Project Management Body of Knowledge (PMBOK), and other information as appropriate. The project management plan document developed for each of the knowledge areas provide the foundation for the consistent application of project management practices. Procedure: Redefine the project schedule, project budget, and update the management plans, scope document and business case to reflect the detailed scope information created during the project. Provide updates to: Project management plan Project WBS Project schedule Project budget Business case Scope document Backlog document (created in Explore phase) / Tags: 2nd Wave Project / Rollout Project
- 155: The purpose of this task is to manage project issues, risks, and changes. A consistent and thorough approach to managing project issues is essential for an effective project management system. Efficient issue management entails the appropriate managerial decision-making and progress tracking in line with the project's issue management procedure. Identified issues are centralized and maintained within a single environment. Procedure: Utilize a dedicated issue tracking document based on the Open Issues List Template.xls accelerator. The management of issues entails the following steps: An issue is raised and appropriately categorized based on its relevance to system conversion, solution implementation, or solution operations within SAP technology. This issue is logged in the issue tracking tool, either by SAP, a customer, or an implementation partner. During the issue's creation, the individual raising the issue assigns its priority and identifies the responsible person for resolving it. The Project Manager conducts regular follow-ups on issues, in addition to adhering to the standard issue management process outlined in the project's management plans. Critical issues are reviewed as part of the input for each Quality Gate review meeting. Review and update open issues regularly, and communicate these updates to the relevant stakeholder groups as part of the routine project reporting and communication process. Issue tracking enhances visibility and transparency regarding open issues, problems, action items, and associated action plans for the project management team. Use a centralized issue tracking system to oversee and maintain lists of issues that require action and resolution, thereby guaranteeing the project's success. / Tags: 2nd Wave Project / Rollout Project, GROW Adoption Plan
- 156: The purpose of this task is to prepare and communicate project status and progress reports. Procedure: Produce project performance reports for different purposes and audiences, as defined in the project communication plan. Clearly communicate the progress of the key activities, completion of the deliverables and status against the schedule and budget. Produce team member status updates every week and share them with the team lead. It is recommended that this report is kept very lightweight and provided to the team lead via e-mail or in a team meeting Produce team status reports on regular cadence, typically weekly. The team status reports are prepared by the team leads and are delivered to the project manager as an input for the project status report. Review the team status report in regular team review with Project Manager or provided in a predefined format. Produce Project status report, using the project status report template. Create this report every week, based on the input from individual teams and additional information like issues list, risk list, etc. Prepare executive status report on monthly or quarterly cadence and provide it to the project executive steering group. Generally, re-use some of the key information from the weekly project status report, expand on the value and benefits of the program and include discussion of the decisions that are needed from the executive steering group. Review and update the project communication matrix throughout the project. The communication matrix documents the project team’s approach to communication (including status reporting). It captures the analysis completed as part of communications planning and serves as a tool to guide the project team throughout the project. / Tags: 2nd Wave Project / Rollout Project
- 157: The purpose of this task is to deliver a Program Goal Alignment survey to get feedback on the Core Team’s cloud mindset adoption, and to capture whether they have clarity on the transformation and definition of success. The survey also supports Organizational Change Management (OCM) efforts by providing insight into stakeholders’ views on team process, governance and empowerment. The feedback gained will shed light on the core team’s current engagement and sentiment before moving to the Explore phase. Prerequisites: The Readiness Assessment results from the Discover phase have been gathered and communicated The recommendations and findings from the Readiness Assessment are understood and, where applicable, corrective actions have been taken. Procedure: Review the recommendations of the ‘Program Goal Alignment’ section of the XM Transformation Procedures accelerator. Identify the survey and reporting recipient groups, listed in the above section of the accelerator, and inform them they are participating in the XM transformation program. Provide these groups (especially report recipients) with enablement on how to use the Program Goal Alignment survey and/or interpret the reporting results. Go to the ‘Survey Q’ tab of the XM Transformation Survey Questions accelerator and locate the survey questions, by filtering on the ‘Program Goal Alignment’ column. Adapt the survey to the current transformation, finalize and publish. Distribute the Program Goal Alignment survey. Once the survey response collection period is over, finalize the dashboard and use it to communicate the feedback to report recipients, with follow-up meetings to discuss the findings and recommend corrective measures accordingly. Document the outcomes in an executive summary for Sponsor and Steering Committee quarterly business review activities. Procedure Note(s): If the process is unclear, engage with XM Advisory experts from: your XM vendor, SAP or implementation partner for assistance. / Tags: 2nd Wave Project / Rollout Project, XM Transformation

| ID | WBS | Task | Duration | Start | Finish | Predecessors | Resources |
| --- | --- | --- | --- | --- | --- | --- | --- |
| 158 | 3.2 | **Communication Plan Execution** | 0d | 2024-07-24 08:00 | 2024-07-24 17:00 | 151 |  |
| 159 | 3.2.1 | Prepare Communication Activities | 8h | 2024-07-24 08:00 | 2024-07-24 17:00 | 157 | Organizational Change Management Expert |
| 160 | 3.2.2 | Deliver Communication Activities | 8h | 2024-07-24 08:00 | 2024-07-24 17:00 | 159 | Organizational Change Management Expert |
| 161 | 3.2.3 | Update Communication Plan | 8h | 2024-07-24 08:00 | 2024-07-24 17:00 | 160 | Organizational Change Management Expert |
| 162 | 3.3 | **Fit-to-Standard Analysis** | 0d | 2024-07-24 08:00 | 2024-07-24 17:00 | 125 |  |
| 163 | 3.3.1 | Chart of Accounts - Conduct Workshop | 8h | 2024-07-24 08:00 | 2024-07-24 17:00 | 118 | Business Process Expert; Configuration Expert |
| 164 | 3.3.2 | Organizational Structure - Conduct Workshop | 8h | 2024-07-24 08:00 | 2024-07-24 17:00 | 118 | Business Process Expert; Configuration Expert |
| 165 | 3.3.3 | Finance - Conduct Workshop | 8h | 2024-07-24 08:00 | 2024-07-24 17:00 | 164 | Business Process Expert; Configuration Expert |
| 166 | 3.3.4 | Conduct Workshop by Business Process Area | 8h | 2024-07-24 08:00 | 2024-07-24 17:00 | 163, 164, 165 | Business Process Expert; Configuration Expert |
| 167 | 3.3.5 | Data Protection - Conduct Workshop | 8h | 2024-07-24 08:00 | 2024-07-24 17:00 | 163, 164, 165 | Business Process Expert; Configuration Expert |
| 168 | 3.4 | **Customer Execution of Standard Processes** | 0d | 2024-07-24 08:00 | 2024-07-24 17:00 | 162 |  |
| 169 | 3.4.1 | Execute Standard Business Processes | 8h | 2024-07-24 08:00 | 2024-07-24 17:00 | 163, 164, 165, 166, 167 | Business Process Expert |
| 170 | 3.5 | **Fit-to-Standard Analysis Documentation** | 0d | 2024-07-24 08:00 | 2024-07-24 17:00 | 162 |  |
| 171 | 3.5.1 | Document and Maintain Business Process Flows | 8h | 2024-07-24 08:00 | 2024-07-24 17:00 | 169 | Business Process Expert; Configuration Expert |
| 172 | 3.5.2 | Document Requirements | 8h | 2024-07-24 08:00 | 2024-07-24 17:00 | 163, 164, 165, 166, 167, 171 | Business Process Expert; Extensibility Expert; Technology Expert; Integration Implementation Expert; Data Migration Expert; Analytics Expert; Configuration Expert; Output Management and Forms Expert |
| 173 | 3.5.3 | Confirm Backlog | 8h | 2024-07-24 08:00 | 2024-07-24 17:00 | 172 | Project Lead |
| 174 | 3.5.4 | Execute Solution Validation Survey | 8h | 2024-07-24 08:00 | 2024-07-24 17:00 | 173 | Project Lead |
| 175 | 3.6 | **Full Value Adoption Plan** | 0d | 2024-07-24 08:00 | 2024-07-24 17:00 | 170 |  |
| 176 | 3.6.1 | Create Full Value Adoption Plan | 8h | 2024-07-24 08:00 | 2024-07-24 17:00 | 174 | Project Lead |
| 177 | 3.7 | **Integration Planning and Design** | 0d | 2024-07-24 08:00 | 2024-07-24 17:00 | 170 |  |
| 178 | 3.7.1 | Determine Scenario Options for Integrations | 8h | 2024-07-24 08:00 | 2024-07-24 17:00 | 176 | Integration Implementation Expert |
| 179 | 3.7.2 | Determine Details for Customer-Driven Integrations for SAP S/4HANA Cloud | 8h | 2024-07-24 08:00 | 2024-07-24 17:00 | 178 | Integration Implementation Expert |
| 180 | 3.7.3 | Design SAP Business Technology Platform Integration iFlows for Customer-Driven Integrations | 8h | 2024-07-24 08:00 | 2024-07-24 17:00 | 179 | Integration Implementation Expert |
| 181 | 3.7.4 | Review and Customer Sign-off List of Integrations | 8h | 2024-07-24 08:00 | 2024-07-24 17:00 | 180 | Integration Implementation Expert |

Notes:
- 158: The purpose of this deliverable is to enhance the information level of all stakeholders involved in the SAP implementation project, to foster understanding and commitment and facilitate a fast and sustainable user adoption. Achieving this objective includes tailoring communication efforts to suite the diverse requirements of the various target audiences, while ensuring a coherent message throughout. As a result, it is highly recommended to establish a change story that outlines the rationale and the benefits of the SAP implementation project. This narrative will serve as the foundation of all communication activities. / Workstream: Solution Adoption / Tags: Organizational Change Management
- 159: The purpose of this task is to ensure effective communication delivery. It is crucial to recognize the significance of a well-planned and comprehensive preparation of communication activities. Adequate time should be allotted as preparatory tasks can be quite time-consuming. For instance, creating communication assets such as presentations may require the involvement of corporate communication teams, while arranging information sessions like townhall meetings entails a multitude of operations duties (for example, reserving venues, briefing speakers, and conducting rehearsals). Procedure: Involve project team members and other experts (e.g. from communication or marketing departments) essential for upcoming communication activities, as documented in the existing Communication Plan accelerator. Create and revise communication material, and ensure that all operational requirements for delivery are fulfilled (e.g. arranging meetings, reserving venues). Align communication activities and obtain approval by project management or project sponsor. / Workstream: Solution Adoption / Tags: Organizational Change Management
- 160: The purpose of this task is to keep all stakeholder groups informed about the SAP implementation project, and to provide opportunities for interaction and discussion. At the beginning of the project, the shared information may be relatively general, such as project significance, structure, and timeline. It is only in later project phases that it becomes feasible to provide more specific details on the project’s actual implications for different stakeholder groups (e.g. process modifications, new roles, and responsibilities). To assess the effectiveness of the conducted activities, it is strongly advised to incorporate feedback mechanisms. Procedure: Execute communication activities according to the existing Communication Plan accelerator. Collect feedback on communication activities from target groups. Document communication delivery, including lessons learned. / Workstream: Solution Adoption / Tags: Organizational Change Management
- 161: The purpose of this task is to promote a successful and streamlined communication delivery, and to guarantee that the communication plan is completely synchronized with the overall project plan and milestones. Integrating insights from lessons learned gathered in previously executed activities into the communication plan enables targeting communication efforts to the requirements of the various stakeholder groups. Furthermore, it avoids investing project resources in communication efforts that have only little impact. Consistently updating the communication plan also helps in documenting and monitoring executed communication activities. Procedure: Review collected feedback on conducted communication activities. Verify if changes in overall project situation have occurred (e.g. timeline, scope, affected stakeholders). Finetune current activities and incorporate new activities into the existing Communication Plan accelerator, as necessary. / Workstream: Solution Adoption / Tags: Organizational Change Management
- 162: The purpose of this deliverable is to conduct fit-to-standard workshops and capture requirements. The standard processes allow for a more efficient approach to validating the fit of the customer requirements to the standard solution. The fit-to-standard workshops are organized around the functional areas of the solution and are used to explore the functionality, to show how the solution can meet the business requirements, and to help enable business process experts on the execution of processes. Delta requirements are identified; discussed; and then added to the backlog. The fit-to-standard analysis uses an iterative approach to assure that integrated dependencies are addressed. During the workshops, configuration changes are determined and cataloged as outputs of the fit-to-standard process and are used as inputs for the Solution Configuration process in Realize. In each workshop, the following process takes place: Review standard processes Demonstrate business processes and concepts Discuss how the processes fit with customer requirements Identify delta requirements (such as analytics, output management, integration, extensibility, etc.) Identify required configuration Enable customer on execution of processes / Workstream: Analytics, Application Design and Configuration, Data Management, Extensibility, Integration / Tags: 2nd Wave Project / Rollout Project, Artificial Intelligence Technology, Hybrid Deployment (Two-Tier ERP), Identity and Access Management, Output Management
- 163: The purpose of this task is to define how the customer’s Chart of Accounts can be reflected in SAP S/4HANA Cloud. During the workshop, the project team will review the pre-delivered Chart of Accounts and map the customer’s Chart of Accounts to the delivered one and make the appropriate adjustments needed to reflect the customer's business in the solution. Procedure: See Chart of Accounts Configuration – Overview accelerator on the overall process of adapting a pre-delivered standard Chart of Account to customer specific needs. View the Chart of Accounts in the Starter Customizing Tenant using the Manage Chart of Accounts app. Access SAP Signavio Process Navigator to download and review the Account Determination (global) and Account Determination (local) templates. Capture backlog of any changes to the standard delivered accounts and configurations. Procedure Note(s): To access the account determination templates, navigate to the ‘Accelerators’ section under General Documentation. See Help - Chart of Accounts Maintenance: Overview accelerator for user roles related to Chart of Accounts. Navigate to the “Adapting the Standard Chart of Accounts to Your Needs” section for more information on renumbering G/L Accounts or defining an Account Group. / Workstream: Application Design and Configuration / Tags: 2nd Wave Project / Rollout Project
- 164: The purpose of this task is to define how the customer’s Organizational Structure will be reflected in the solution. During the workshop, the project team will review the pre-delivered Organizational Structure and map to the customer’s Organizational Structure. Additionally, they will make the appropriate adjustments to accommodate the customer’s organization needs. Procedure: Review the delivered Organizational Structure in SAP Central Business Configuration. Reference the chapter on Organizational Structure Management in Help - Project Experience accelerator to map customer organizational units to delivered structure. Define required adjustments needed for the Organizational Structure. Use Organizational Data Overview accelerator as a template to capture any changes to the standard delivered organizational structure needed to satisfy business requirements as backlog items. For Customer using SAP Cloud ALM, use the Requirement app to capture. Procedure Note(s): It is important to have a target organization structure documented as a result of the workshop. After activation and setup in Realize phase, organization structure can only be modified, but not deleted. Selecting additional country/region will result in new mandatory org structure maintenance for selected scenarios that are in scope. / Workstream: Application Design and Configuration / Tags: 2nd Wave Project / Rollout Project
- 165: The purpose of this task is to conduct workshop(s), demonstrate the solution and drive discussion with Businesses Process Experts using Starter Customizing Tenant, covering one or more following topic(s). Certain topic may require dedicated workshop to cover the topic entirely. Treasury Management Financial Operations Accounting and Financial Close Enterprise, Risk & Compliance Cost Management and Profitability Analysis Advanced Financial Operations Advanced Accounting and Financial Close Subscription Billing and Revenue Management Pre-requisite: Configuration Experts should use Finance - Conduct Workshop accelerator to create their own agenda for the workshop. For dedicated discussion on Treasury Management, reference the Treasury Overview accelerator for more details. Procedure: Business Process Experts should review all the necessary SAP Best Practices content (test scripts, process flows, etc.) related to the scope items. Access the SAP Signavio Process Navigator for the content and select the relevant country. It is also very important to note the activation details and prerequisites under the Additional Information section of the solution process when applicable. Review the implementation scope with participants in the Define Scope activity in SAP Central Business Configuration. Confirm Non-Standard or Optional scope items. Not all optional scope items can be activated in SAP Central Business Configuration. Some may require additional assistant from SAP. For example, for further information on event-based revenue recognition see the Event-Based Revenue Recognition accelerators. Some may need to be requested via a service ticket during the initial system activation and be included in the very first transport. For example, Group Valuation (5W2), Additional Depreciation Areas of Fixed Assts (5HG & 5KF). These scope items can't be implemented later, they need to be activated during initial scoping. Some may have dependency on other scope items, which then need to be activated together. Confirm License Scenarios. For example, additional subscription is needed for Collection and Dispute Management (BFC). For deprecated scope item, discuss and determine the replacement. For example, scope item BEV is deprecated as of 1905, consider using scope item 1NT instead. Deep dive on critical financial topics, evaluate options and confirm the settings. These setting can't be changed after initial activation and posting of transactional data. For example: Group currency Use Help - Ledger Scenario accelerator to choose the right ledger combination. Use Display Tax Information per Country app to view tax information for a country. Decide on Tax Processing solution details from task Review Tax Processing Solution. Review Supported Fiscal Year Variant accelerator to determine the default Fiscal Year Variant to be applied to all company code or use Fiscal Year Variant Implementation - Overview accelerator to assess the need to create customer specific value. Capture all backlog items including: Additional configuration activities or adjustment to pre-delivered setting. Integration setup that needs to be performed. For example, as described in How to Integrate SAP S/4HANA Cloud with Payment Service Providers accelerator. Master data needed for configuration settings. Additional data, setting or initializations required before system use. Output layout and conditions. Additional analytics and reporting not covered out of box. Functionality that needs to be enhanced by custom development. Artificial Intelligence use case to be implemented. For example, as described in Machine Learning - SAP Cash Application Intelligence (1MV) accelerator. Procedure Note(s): For customer who has an existing ERP system and adopting a Two-Tier enterprise resource planning (ERP) strategy to run their global business, make sure to review Solution Processes in Solution Scenario Two-Tier ERP and capture backlog items. For additional information on downloading financial statements to Excel, see accelerator Export Financial Statements to Microsoft Excel. See Forum - Finance accelerator for more information and discussions on topics in Finance. For example, use search terms like ‘ledger’, ‘currency’ for lessons learned on critical financial settings. For Asset Accounting, in addition to content in SAP Signavio Process Navigator, use Asset Accounting: Transaction Types.xlsx accelerator for an overview of transaction types used in asset accounting postings and delivered by standard content. For remote, or hybrid, fit-to-standard workshops utilize the pre-filled Mural templates, or another collaboration template, to capture all the questions and discussion points during the fit-to-standard workshop. See the Fit-to-Standard Workshops – Mural Template accelerator for more information. The backlog items captured from the discussion in the Mural templates will be migrated later into in a central Backlog. For Customer using SAP Cloud ALM, access business process content in the Processes app and use the Requirement app to capture all backlog items. Use ‘workstream’ field and ‘Tag’ field to further classify or categorize all requirements. / Workstream: Application Design and Configuration / Tags: 2nd Wave Project / Rollout Project, Artificial Intelligence Technology, Hybrid Deployment (Two-Tier ERP)
- 166: The purpose of this task is to conduct workshops in respective business process areas and subareas to confirm implementation scope, identify delta requirements and create backlog. Followings are examples of business process areas in different line of businesses: Human Resources: Core HR and Time Recording, etc. Sales: Order and Contract Management, Subscription Billing and Revenue Management, etc. Source and Procurement: Operational Procurement, Sourcing and Contract Management, etc. Manufacturing: Production Operations, Production Processing, Quality Management, etc. R&D Engineering: Enterprise Portfolio and Project Management, Product Engineering, Product Lifecyle Management, etc. Supply Chain: Warehousing, Inventory, Shipping and Transportation, etc. Service: Service Master Data & Agreement Management, Service Operations & Processes, etc. Asset Management: Environment, Health and Safety, Maintenance Management, etc. Procedure: Business Process Experts should review all the necessary SAP Best Practices content (test scripts, process flows, etc.) related to the scope items. Access the SAP Signavio Process Navigator for S/4HANA Cloud accelerator for the content and select the relevant country. It is also very important to note the activation details and prerequisites in the Additional Information section of the solution process when applicable. Configuration Experts should demonstrate the solution processes and drive discussion with Business Process Experts using the Starter Customizing Tenant. Review the implementation scope with participants in the ‘Define Scope’ activity in SAP Central Business Configuration to confirm scope items. Not all optional scope items can be activated in SAP Central Business Configuration. Confirm non-standard, optional and/or licensed scenarios. Some may require additional assistant from SAP. Some may need to be requested via a service ticket during the initial activation and be included in the very first transport. Some may have dependency on other scope items, which then need to be activated together. For example, Mobile RF Devices in Warehousing (63V). Note down the list of applications that are in the scope for the project in the Application - Workplace list created in task Create Initial Application - Workplace List during Prepare phase. Create backlog including, for example: Additional configuration activities or adjustment to pre-delivered setting Standard Integration setup that needs to be performed Customer Driven Integration setup for integrated applications Master data needed for configuration settings Additional data, settings or initializations required before system use Output layout and conditions Additional dashboard and reporting not covered out of box Functionality that needs to be enhanced by custom development Artificial Intelligence use case to be implemented Procedure Note(s): For customer who has an existing ERP system and adopting a two-tier enterprise resource planning (ERP) strategy to run their global business, make sure to review Solution Processes in Solution Scenario Two-Tier ERP and capture backlog items. See Forum accelerators for more information and discussions on topics in respective business process area. For remote or hybrid fit-to-standard workshops, utilize the pre-filled Mural templates, or another collaboration template, to capture all the questions and discussion points during the fit-to-standard workshop. See the Fit-to-Standard Workshops – Mural Template accelerator for more information. The backlog items captured from the discussion in the Mural templates will be manually transferred later into in a central Backlog. For Customer using SAP Cloud ALM, access business process content in the Processes app and use the Requirement app to capture all backlog items. Use ‘Workstream’ field and ‘Tag’ field to further classify or categorize all requirements. / Workstream: Analytics, Application Design and Configuration, Extensibility, Integration / Tags: 2nd Wave Project / Rollout Project, Artificial Intelligence Technology, Hybrid Deployment (Two-Tier ERP), Identity and Access Management, Industry Cloud Apps, Output Management
- 167: The purpose of this task is to conduct workshop to confirm implementation scope and configuration settings in the context of data protection. This involves understanding data protection requirements, reviewing SAP's design and concept for data protection, and discussing the scope and configuration possibilities with stakeholders. Procedure: Clarify data protection requirements that need to be adhered to by data protection experts. Review the SAP Help Portal to gain an understanding of SAP's design and concept for data protection, as well as all necessary SAP Best Practices content (test scripts, process flows, etc.) related to the scope items. This will help clarify the required data protection solutions. Key solutions include: Defining data controllers and purposes for processing personal information Blocking transactional data Blocking master data Information revival Read access logging Consent administration Have Configuration Experts demonstrate the solution processes and facilitate a discussion with data protection experts using the Starter Customizing Tenant. Review the implementation scope to confirm the required configurations and identify stakeholders who should provide inputs for configuration. Discuss the scope of implementation and configuration possibilities with the identified stakeholders in workshops. The following are examples of goals that should be achieved from the workshops: Conclude how to define data controllers Identify business processes and relevant End of Purpose (EoP) applications that process personal information Identify transactional data objects that require blocking and destruction Define retention policy and residence policy Conclude design for information retrieval Identify business processes where read access logging is required Procedure Note: Utilize Design and Configuration Documentation Template - Data Protection and Privacy.docx guide the discussion, document scope and configuration details. / Workstream: Application Design and Configuration
- 168: The purpose of this deliverable is for all business process experts to execute the standard processes demonstrated in the Fit-to-Standard workshops in the assigned system for the fit-to-standard. Executing the standard processes will help enable the business process experts in using the new solution and solidify the key decisions made during the Fit-to-Standard workshops. / Workstream: Customer Team Enablement / Tags: 2nd Wave Project / Rollout Project
- 169: The purpose of this task is for all business process experts to execute the standard processes covered during the fit-to-standard workshops in the Starter System. The SAP Best Practices test scripts and process flows, that were used by the Configuration Expert for the demonstration, are used. Prerequisites: Created credentials for starter system and have verified access Noted the Scope ID for the standard processes that were executed in the fit-to-standard workshop and are included in the implementation scope. Procedure: Navigate to the SAP Signavio Process Navigator using the accelerator below. Use the scope ID to search for the desired standard business process that will be executed. Open the scope item page and select the relevant localization and download the test script and process flow. Review the process flow to obtain a high-level overview of the process that will be executed. Use the test script and provided data to execute the standard process in the Starter System. Procedure Note(s): Not all scope items can be executed in the starter system. Examples are, but not limited to, integration and scope items requiring additional subscriptions. Not all scope items are available for all countries. / Workstream: Customer Team Enablement / Tags: 2nd Wave Project / Rollout Project
- 170: The purpose of this deliverable is to ensure all documentation captured during the fit-to-standard workshops is complete. Any documentation not captured during or after the fit-to-standard workshops should be added as Requirements and Notes in the SAP Cloud ALM, or alternatively into the prefilled Backlog (tool or template). The documentation for all delta requirements will be further refined by technical experts during the Planning and Design workshop process later in the Explore phase. / Workstream: Analytics, Application Design and Configuration, Extensibility, Integration / Tags: 2nd Wave Project / Rollout Project, Artificial Intelligence Technology, GROW Adoption Plan, Hybrid Deployment (Two-Tier ERP), Identity and Access Management, Output Management
- 171: The purpose of this task is to ensure the To-Be business processes, or the Target State of business processes, are clearly documented per fit-to-standard workshops. A complete end-to-end business process flow is an important input for the following activities: Planning and design tasks of extension, integration, analytics, etc. Organization change management tasks End user training User acceptance testing Update and upgrades Prerequisites: Have access to software that can support the edit of BPMN files. Procedure: Download process flows from SAP Signavio Process Navigator, if not already done so, for all implementation scope items which require additional maintenance (i.e. additional points of integration and extensibility). Gather business process model update requirements from the fit-to-standard workshops, and make adjustments to the process flows accordingly. For customer using SAP Cloud ALM, add target business process flow document links in this task. Procedure Note(s): Examples of software used for maintaining the business process flows are SAP PowerDesigner, or SAP Signavio Process Manager. / Workstream: Application Design and Configuration / Tags: Artificial Intelligence Technology
- 172: The purpose of the task is to ensure all requirements captured during the Fit-to-Standard workshops are documented and confirmed. For customer using SAP Cloud ALM, review information captured in the Requirements app from the workshop. Clarify, detail out requirements to high level solutioning with effort estimation that can be started for the Realize phase. Some requirements (i.e. extension, analytics, integration, Artificial Intelligence, Identity and Access Management, etc) will be further refined by technical experts in subsequent the Planning and Design tasks. Procedures: Use the Design and Configuration Documentation Template accelerator to create customer's own version to include target business processes with customer specific configuration values, integration points and extension requirements. Documentation can be by business process area like Supply Chain, Manufacturing, etc or by cross process area related topics like Data Protection and Privacy, etc. Document scope and settings for initial activation of system via SAP Central Business Configuration later in Realize phase. Use Availability and Dependency of Scope Item accelerator as a template to note down scope and its country relevancy. This should also include cross function, general setting scope items, ie. Embedded Analytics, Output Management, Integration scenarios, etc. Alternatively, for customer using Cloud ALM, use Process app to flag solution processes ‘In Scope’ with respective country. Confirm critical financial settings (i.e fiscal year variant, group currency). They are one-time setting that can't be changed after activation. Highlight those scope items that can only be included during initial scoping. Reference task Finance - Conduct Workshop for detail examples. Use Organizational Data Overview accelerator to capture the desired org structure. Make sure to include additional required org structures for optional scope items (i.e. Warehouse Management, etc.) Leverage Configuration Activity accelerator as a template to confirm detail changes. This should include adjustments to standard delivered analytics and reports. As indicated by ‘Delete Customer Records’ column in the Configuration Activity accelerator, deletion is not supported for all customer created configuration. If you are changing SAP pre-delivered configuration, make sure to understand the impact of such changes and plan on fully test the functionality after the change. Fill out the corresponding tab (i.e. 5D2 advanced intercompany sales, etc) in the Configuration Activity accelerator for Expert Configuration that can only be requested via service ticket during Realize phase. Create one document per each item and request during appropriate sprint. Use the Master Data (General) accelerator as a template to capture naming convention or details for master data like material, vendor, customer, and work center, etc. For finance related master data, capture updates or changes required from pre-delivered values. This is also an important input to data migration strategy. Document additional data and settings that needs to be entered in Development, Test and Production System respectively: Data used in transportable configuration settings One time activation settings Master data before transaction Use the accelerator Extensibility Functional Specifications Template to document the Extensibility requirements. Use the accelerator Integration Scenario and API List to document Integration requirements. For output management, make sure to specify communication channels, required layout changes from pre-delivered form templates and email templates. Review and add additional requirement in areas like Artificial Intelligence, Identity and Access Management, etc to complete the backlog for subsequent detail planning and design sessions. Procedure Note(s): For customer using Cloud ALM, use Documents app to store requirement details natively in the app. Check out Solution Documentation section in the SAP Cloud ALM for Implementation - Expert Portal for overview of function and features and best practices. Go to Documents section in Help - SAP Cloud ALM for Implementation for details instructions on how to use the app. / Workstream: Analytics, Application Design and Configuration, Data Management, Extensibility, Integration / Tags: Artificial Intelligence Technology, Identity and Access Management
- 173: The purpose of this task is to confirm all known requirements (data, system, process) captured as a result of Fit-to-Standard workshop including high level solutioning and effort estimation can be started for the Realize phase with business stakeholder (product owners) approvals. Requirements will then be handed over to the implementation team. This central backlog will be used for prioritization and sprint planning in Realize phase. Procedure: Review requirements in the Requirements app within SAP Cloud ALM or as a backlog item using the Backlog Template to make sure they are properly categorized. Use the ‘Workstream’ field within the Requirements app to classify the requirement, ie. Configuration, Extension, Integration, etc. Use the ‘Tag’ field within the Requirements app to provide additional details about the nature of Requirement, ie. Output, Artificial Intelligence, different types of integration (i.e. Master Data Integration, BTP Apps, Process Integration etc) or to distinguish Key User Extension with Developer or Side by Side Extension, etc. Understand the dependency and priority. Review and confirm requirements with stakeholders. For requirements require additional licenses or custom development effort, it is recommended to have a formal approval process. Consolidate all requirements into a central backlog for sprint planning and execution. Procedure Note(s): For additional details on using the Requirements app and the supported fields within it, including ‘Approval’ field to indicate if approval is required and track status using ‘Requirement Status’ field, please refer the Requirement Management section within the accelerator SAP Cloud ALM for Implementation - Export Portal. Using Cloud ALM, customer can also leverage the Analytics app and access the ‘Requirement Distribution’ and ‘Requirement Traceability’ report for consolidated view of process and status of all requirements. / Workstream: Application Design and Configuration / Tags: 2nd Wave Project / Rollout Project, GROW Adoption Plan
- 174: The purpose of this task is to deliver the Solution Validation survey to ensure that the program’s subject matter experts agree on the fit-to-standard solution and, customizations designed during the Explore phase. This feedback validates whether the solution is meeting the customer’s future-state business process requirements; under the scope of the implementation while keeping agreed feature roadmaps in mind. This survey also combines the questions from the Project Performance survey, so that relevant respondents will not have to answer two different surveys in a tight time period. Prerequisites: The fit-to-standard workshops, configuration design and feature roadmap have been agreed and completed. Procedure: Review the recommendations of the ‘Solution Validation’ section of the XM Transformation Procedures accelerator. Identify the survey and reporting recipient groups, listed in the above section of the accelerator, and inform them they are participating in the XM transformation program. Provide these groups (especially report recipients) with enablement on how to use the Solution Validation survey and/or interpret the reporting results. Go to the ‘Survey Q’ tab of the XM Transformation Survey Questions accelerator and locate the survey question, by filtering on the ‘Solution Validation’ column. Adapt the survey to the current transformation, finalize and publish. Distribute the Solution Validation survey. Once the survey response collection period is over, finalize the dashboard and use it to communicate the feedback to report recipients, with follow-up meetings to discuss the findings and recommending corrective measures accordingly. Document the outcomes in an executive summary for Sponsor and Steering Committee quarterly business review activities. Procedure Note(s): If the process is unclear, engage with the XM Advisory experts from: your XM vendor, SAP or implementation partner for assistance. / Workstream: Solution Adoption / Tags: 2nd Wave Project / Rollout Project, XM Transformation
- 175: The purpose of this deliverable is to create a high level, long term plan of the features and functions that will be adopted beyond the initial go-live of the solution. / Workstream: Project Management / Tags: GROW Adoption Plan
- 176: The purpose of this task is to create a high-level, long-term plan of the features and functions that will be adopted beyond the initial go-live of the solution. Achieving 'Full-Value' from a SaaS solution is not realized at the first go-live but through the planning and execution of subsequent adoption efforts. Procedure: Create a high-level plan, outlining the principles of what will be included in the initial go-live, and what features, functions, entitlements, and optimizations will be planned for subsequent adoption waves. This plan should consider: Backlog from the Fit-to-standard workshops. Future functionality releases listed in the SAP Road Map Explorer for relevant solution. Rollout schedule. / Workstream: Project Management / Tags: GROW Adoption Plan
- 177: The purpose of the deliverable is to create a well-aligned and optimized list of integrations for implementation and testing during the Realize phase. The process involves the following steps: Handover of Business Requirements to Technical Expert. Check for SAP Best Practices. Define details of the integration to fulfill business requirements. Optimize and approve integrations. The ultimate decision regarding integration should be made after considering factors like technology, licenses, the availability of standard integration content, and the skill set of resources. This deliverable provides guidance on determining necessary technical details and exploring available options. / Workstream: Integration / Tags: 2nd Wave Project / Rollout Project, Artificial Intelligence Technology, Hybrid Deployment (Two-Tier ERP)
- 178: The purpose of this task is to determine the availability of SAP Best Practices to setup integration scenarios. Prerequisite: Integration scenario requirements and API list have been collected. Procedure: Review Integration Architecture Guide for Cloud and Hybrid Landscapes for guidance on choosing the right Integration Technology based on the scenario requirements. Use accelerators Help - Products with Integration Capabilities for SAP S/4HANA Cloud to review the list of products that SAP S/4HANA Cloud can Integrate with. Use Integration Guides Overview to identify Integration Guides corresponding to a particular Solution Scenario by using the ‘Source’ & ‘Target’ filters as necessary. Refer SAP Help - Architecture Overview for Data Integration for details on common scenarios for data extraction from SAP S/4HANA Cloud. Review the availability of Cloud Integration Automation Service procedures for the setup and document the findings in accelerator Integration Scenario and API List Document all details of B2B Integrations to be setup using EDI as entered in the EDI Technical worksheet of accelerator Integration Scenario and API List Set all Integrations that are not covered with Best Practices as “Customer Driven”. Review the Integration requirements for integrated application deployed on SAP Business Technology Platform and document them in the accelerator Integration Scenario and API List Customers having a Hybrid two-tier ERP deployment scenario should follow the approach mentioned below Review the Master Data & Integration approach section of the accelerator Hybrid Deployment with SAP S/4HANA Cloud and the Blog - Master Data and Integration approaches in Hybrid cloud deployment with S/4HANA Cloud to gain a better understanding of the available approaches for the different deployment scenarios. Check for availability of Hybrid Deployment specific Integration best practices using accelerator SAP Signavio Process Navigator - SAP S/4HANA Cloud for Hybrid Deployment If best practices are unavailable the integration scenario will have to built as a customer driven integration adhering to the approach outlined above. Procedure Note(s): Detailed instructions and examples for documenting the scenario options are included within the template. For SAP Integration with Concur solutions (SAP ICS) or any other customer-owned integration to connect your SAP Concur and SAP finance systems please see SAP Note Accel ID = S4H_2192. / Workstream: Integration / Tags: 2nd Wave Project / Rollout Project, Hybrid Deployment (Two-Tier ERP), Industry Cloud Apps
- 179: The purpose of this task is to obtain all needed information for the customer-driven integration scenarios which are not covered under the out of box Integration scenarios listed within SAP Best Practices for S/4HANA Cloud Procedure: Use SAP Business Accelerator Hub to identify details of released APIs that can be leveraged in customer-driven Integrations. Review SAP S/4HANA Cloud - What's New Viewer to identify the newly added or updated APIs. APIs are now added on a regular basis as a part of the Continuous Delivery updates for S/4HANA Cloud. Customers having a Hybrid two-tier ERP deployment scenario should follow the approach mentioned below Review the Master Data & INtegration approach section of the accelerator Hybrid Deployment with SAP S/4HANA Cloud and the Blog - Master Data and Integration approaches in Hybrid cloud deployment with S/4HANA Cloud to gain a better understanding of the available approaches for the different deployment scenarios. Implement the Integration scenario using the middleware and guidelines provided above. Procedure Note(s): Select Category as "API' and use the "Valid as Of" filter in What's New Viewer to select the respective continuous delivery service(s). An updated version is indicated by the release upgrade followed by a suffix such as .1, or.2. For example, SAP S/4HANA Cloud 2202.1 is the first update after major release 2202. Customer can request missing APIs to be developed in the Customer Innovation Portal using the procedure described in accelerator Discover and request SAP S_4HANA_APIs / Workstream: Integration / Tags: 2nd Wave Project / Rollout Project, Hybrid Deployment (Two-Tier ERP)
- 180: The purpose of this task is to design the SAP Business Technology Platform Integration iFlows for the customer driven Integrations. Prerequisites: APIs were determined and tested for customer-driven integrations. All Information was collected in the Integration and API list. Procedure: Design the SAP Business Technology Platform Integration iFlows using the API information from the Integration and API list. A template to document the design is added in the accelerator section. Review the specification with the architect and the process expert. / Workstream: Integration / Tags: 2nd Wave Project / Rollout Project, Hybrid Deployment (Two-Tier ERP)
- 181: The purpose of this task is for the customer to sign off the list of integrations to be realized. After the list is aligned and reviewed by integration experts the customer should sign off the list. The list should contain all integrations that are proposed to be realized in the project with information on the to-be used interfaces. The customer should be made aware of any integration that are not using published APIs. Procedure: Customer signs off the list of integrations planned to realized in this project. Customer also sign off the list of business processes which need to be automated using Artificial Intelligence (AI). This will be included as a part of integration. / Workstream: Integration / Tags: 2nd Wave Project / Rollout Project, Artificial Intelligence Technology

| ID | WBS | Task | Duration | Start | Finish | Predecessors | Resources | Workstream |
| --- | --- | --- | --- | --- | --- | --- | --- | --- |
| 182 | 3.8 | **Extension Planning and Design** | 0d | 2024-07-24 08:00 | 2024-07-24 17:00 | 170 |  | Extensibility |
| 183 | 3.8.1 | Handover of Requirements for Extensions to Developer | 8h | 2024-07-24 08:00 | 2024-07-24 17:00 | 172 | Extensibility Expert | Extensibility |
| 184 | 3.8.2 | Check for Sample Scenario in SAP Extensibility Explorer | 8h | 2024-07-24 08:00 | 2024-07-24 17:00 | 183 | Extensibility Expert | Extensibility |
| 185 | 3.8.3 | Check for Available Products | 8h | 2024-07-24 08:00 | 2024-07-24 17:00 | 184 | Business Process Expert | Extensibility |
| 186 | 3.8.4 | Collect Details for Extensions for SAP S/4HANA Cloud | 8h | 2024-07-24 08:00 | 2024-07-24 17:00 | 185 | Extensibility Expert | Extensibility |
| 187 | 3.8.5 | Detail Design on Key-User Extensibility | 8h | 2024-07-24 08:00 | 2024-07-24 17:00 | 186 | Extensibility Expert | Extensibility |
| 188 | 3.8.6 | Detail Design for Developer Extensibility | 8h | 2024-07-24 08:00 | 2024-07-24 17:00 | 187 | Extensibility Expert | Extensibility |
| 189 | 3.8.7 | Detail Design of Side-by Side Extensibility for SAP S/4HANA Cloud | 8h | 2024-07-24 08:00 | 2024-07-24 17:00 | 187 | Extensibility Expert | Extensibility |
| 190 | 3.8.8 | Review and Sign off Design of Extension | 8h | 2024-07-24 08:00 | 2024-07-24 17:00 | 188, 189 | Business Process Expert; System Administrator; Enterprise Architect | Extensibility |
| 191 | 3.9 | **Analytics Planning and Design** | 0d | 2024-07-24 08:00 | 2024-07-24 17:00 | 170 |  | Analytics |
| 192 | 3.9.1 | Handover of Requirements to Analytics Expert | 8h | 2024-07-24 08:00 | 2024-07-24 17:00 | 172 | Analytics Expert | Analytics |
| 193 | 3.9.2 | Review My Fiori Apps Reference Library and Process Scenario | 8h | 2024-07-24 08:00 | 2024-07-24 17:00 | 192 | Analytics Expert | Analytics |
| 194 | 3.9.3 | Initial Analytics Settings | 8h | 2024-07-24 08:00 | 2024-07-24 17:00 | 193 | Analytics Expert | Analytics |
| 195 | 3.9.4 | Determine Details for Customer-Driven Analytics and Extension of Reports | 8h | 2024-07-24 08:00 | 2024-07-24 17:00 | 194 | Analytics Expert | Analytics |
| 196 | 3.9.5 | Review and Customer Sign off for Analytics | 8h | 2024-07-24 08:00 | 2024-07-24 17:00 | 195 | Analytics Expert | Analytics |
| 197 | 3.10 | **Artificial Intelligence Planning and Design** | 0d | 2024-07-24 08:00 | 2024-07-24 17:00 | 170 |  | Integration |
| 198 | 3.10.1 | Review Processes for SAP Build Process Automation | 8h | 2024-07-24 08:00 | 2024-07-24 17:00 | 172 | Integration Implementation Expert | Integration |
| 199 | 3.10.2 | Plan for Machine Learning | 8h | 2024-07-24 08:00 | 2024-07-24 17:00 | 198 | Integration Implementation Expert | Integration |
| 200 | 3.10.3 | Identify Business Processes for Situation Handling | 8h | 2024-07-24 08:00 | 2024-07-24 17:00 | 199 | Integration Implementation Expert | Integration |
| 201 | 3.11 | **Artificial Intelligence Setup** | 0d | 2024-07-24 08:00 | 2024-07-24 17:00 | 197 |  | Integration |
| 202 | 3.11.1 | Setup SAP Build Process Automation Components | 8h | 2024-07-24 08:00 | 2024-07-24 17:00 | 200 | Integration Implementation Expert | Integration |
| 203 | 3.12 | **Identity and Access Management Planning and Design** | 0d | 2024-07-24 08:00 | 2024-07-24 17:00 | 170 |  | Application Design and Configuration |
| 204 | 3.12.1 | Plan and Design Identity and Access Management | 8h | 2024-07-24 08:00 | 2024-07-24 17:00 | 172 | Configuration Expert | Application Design and Configuration |
| 205 | 3.13 | **Learning Needs Analysis for Users** | 0d | 2024-07-24 08:00 | 2024-07-24 17:00 | 151 |  | Solution Adoption |
| 206 | 3.13.1 | Identify Learning Needs Identification Process | 8h | 2024-07-24 08:00 | 2024-07-24 17:00 | 153, 161 | Education Expert | Solution Adoption |
| 207 | 3.13.2 | Create Learning Curriculum | 8h | 2024-07-24 08:00 | 2024-07-24 17:00 | 206 | Education Expert | Solution Adoption |
| 208 | 3.13.3 | Review Enablement Business Review | 8h | 2024-07-24 08:00 | 2024-07-24 17:00 | 207 | Education Expert | Solution Adoption |

Notes:
- 182: The purpose of the deliverable is to plan, design and sign off business process extensions. The process includes the following steps: Handover the requirements from fit-to-standard Check for sample scenarios to use and available products Collection of details to estimate efforts and feasibility Customer sign off Detail design of extension The customer makes the final decision on the extension, considering factors such as workload, technology utilized, licenses, and the skill set of resources. This deliverable provides guidance on determined necessary technical details and exploring options. / Tags: 2nd Wave Project / Rollout Project
- 183: The purpose of the task is to handover the business requirements to the technical experts for extensions. During the fit-to-standard business scenarios were reviewed using process flows, test scripts and demonstrations in the system. Business requirements that might be resolved with extensions were recorded in the business process model as requirements. Capture configuration and follow up action items as Requirements and Notes in SAP Cloud ALM, or alternatively as a backlog item in the Backlog Template. These need to be handed over to experts for extensions to analyze technical feasibility and needed tools. Procedure: Review all the requirements from fit-to-standard that require the extension of the business process with the configuration expert. Clarify all open questions on the expected outcome of the process. Within the Requirements app, break down the Extensibility Requirements captured into 'User Stories'. Procedure Note(s): For additional details on using the Requirements app and the supported fields within it, please refer the Requirement Management section within the accelerator SAP Cloud ALM for Implementation - Export Portal / Tags: 2nd Wave Project / Rollout Project
- 184: The purpose of this task is explore the list of prebuilt extension scenarios in the SAP Extensibility Explorer that are available to be downloaded and used. Procedure: Examine each example for details about their scope, architecture, and process flow. See the links to GitHub (takes you to the source code), setup instructions, and other related materials. Develop the skills needed to perform Activate activities and onboarding tasks. See accelerator Accel ID = S4H.1090. Use the scenario’s source code as a template for building similar extensions that fit your requirements. / Tags: 2nd Wave Project / Rollout Project
- 185: The purpose of this task is to check for available products before an extension is self developed. Procedure: Review available solutions in the SAP Store for solutions that fit the requirements. / Tags: 2nd Wave Project / Rollout Project
- 186: The purpose of the task is to collect technical details for extensions. Procedure: Refer the accelerator Extend SAP S/4HANA in the cloud and on premise with ABAP based extensions to view the guidelines available on choosing the right extensibility scenario based on customer requirements. Use accelerator Help - CDS Views to check for available CDS views. Use the accelerator SAP Note 3088062 - Identifying local APIs for S/4HANA Cloud to identify the released developer objects that can be used in Extensions. Use SAP Extensibility Explorer for tools and sample codes. You also find additional information sources in the Explorer. Use the accelerator SAP Business Accelerator Hub - Developer Extensibility Objects to identify released Developer Extensibility Objects added to API Business Hub Document all findings to estimate workload, technical feasibility, and skills needed to build the extension. Procedure Note(s): It is recommended to use the Starter Development tenant for exploring available APIs, CDS view and released developer objects. See Forum - Cross Area Topics accelerator for more information and discussions on topics that cross various areas. / Tags: 2nd Wave Project / Rollout Project
- 187: The purpose of the task is the detail design of a key-user extensions. The Key user Extensibility is a powerful tool that allows user to implement the typical extension in SAP S/4HANA mostly without a single line of code. It uses the Custom Fields and Custom Logic Fiori apps to implement a BAdI; use restricted ABAP (Custom fields, custom logic, custom business objects). Procedure: Review the requirements collected in Fit-to-Standard related to Key-User Extensibility. Create design documents about how to implement using Key-User Extensibility features. Add item for tracking into the backlog for Realize. Procedure Note(s): See Forum - Cross Topic Areas accelerator for more information and discussions on topics that cross various areas. As a default, Key user extensibility is deactivated. Read the SAP Note 3061520 - Key User Extensibility - Configure Setting accelerator to see how to activate the extensibility for Key user. / Tags: 2nd Wave Project / Rollout Project
- 188: The purpose of this task is to define the detailed design of developer extensibility (Embedded Steampunk). The planned developer (on-stack) extensibility option will empower ABAP developers to extend standard SAP processes with custom extensions that require tighter integration with the SAP S/4HANA back-end while keeping the digital core isolated from the custom code. This will help minimize regression testing efforts during SAP S/4HANA upgrades. Procedure: Use the Requirements in SAP Cloud ALM to design extensibility of a business process extension via Developer Extensibility features. Capture the related business process area (i.e. Finance, MFG, etc) and the related scope items in Requirement app. Add all the extension items into the backlog for Realize Phase. Procedure Note(s): Refer the following topic pages for additional details on Developer Extensibility SAP Community - ABAP Development SAP Community - ABAP Extensibility SAP Community - SAP S/4HANA Cloud ABAP Environment / Tags: 2nd Wave Project / Rollout Project
- 189: The purpose of the task is the detailed design of a side-by-side Extension. Procedure: Use the information collected to design in detail the realization of a business process extension using the SAP Business Technology Platform. Add item to the backlog for Realize. Procedure Note(s): See Forum - Cross Topic Areas accelerator for more information and discussions on topics that cross various areas. / Tags: 2nd Wave Project / Rollout Project
- 190: The purpose of the task is to review the details on extensions and sign off for realization. Procedure: Collect all technical information on the business extension. Review feasibility. Collect estimate for workload, needed skills, and needed resources. Sign off with customer. / Tags: 2nd Wave Project / Rollout Project
- 191: The purpose of this deliverable to ensure detailed planning of analytics is conducted, including technical feasibility, and sign off by the customer. / Tags: 2nd Wave Project / Rollout Project
- 192: The purpose of this task is to handover all analytics requirements to the Analytics Expert. Procedure: Hand over all requirements on analytics to the Analytics Expert. Consolidate all requirements in the Analytics List Template accelerator. Procedure Note(s): When using SAP Cloud ALM, a complete list of all requirements can be found in the Requirements and Notes section. / Tags: 2nd Wave Project / Rollout Project
- 193: The purpose of this task is to review the applications in the My Fiori Apps Reference Library for all applicable SAP Embedded Analytics app offerings for your project deployment with SAP S/4HANA Cloud and review the process scenario in the SAP Signavio Process Navigator. The apps in the My Fiori Apps Reference Library include all predefined analytical applications where you can review the content, product features, and implementation information. The SAP Signavio Process Navigator contains the process scenario for embedded analytics to support the project implementation with content including test scripts, configuration guides, descriptions, process flows, and additional details. Prerequisite: Notes on analytics have been documented Analytics requirements have been captured in the Analytics List Template accelerator Procedure: Learn and understand the latest content and documentation on SAP Fiori via the Help - SAP Fiori Overview accelerator. Refer to the SAP Community - SAP Fiori Embedded Analytics accelerator for information, content, and forums regarding the Fiori Embedded Analytics topic. Review the SAP Fiori App Reference Library for all available app options. Follow the path: SAP Fiori Apps Reference Library accelerator > Select “SAP S/4HANA Cloud” in the search bar and filter on the analytical apps using the filter option to narrow down on analytics components per UI Technology offerings. Review all predefined analytical application content in coordination with the UX team involved in the project available with SAP S/4HANA Cloud. Check that all requirements on analytics can be fulfilled with the pre-delivered content from SAP Signavio Process Navigator for embedded analytics. The scope item information can be found in the SAP Signavio Process Navigator accelerator or in the Process section of SAP Cloud ALM. Procedure Note(s): All new app offerings will be available to view in the SAP Fiori Apps Reference Library accelerator when they become available. Any standard scope which SAP offers can be found in the SAP Signavio Process Navigator. For any custom requirements, the project team manages the gaps and documentation where they can refer back to them in the future.
- 194: The purpose of this task is to configure the initial settings for analytics and is performed during the design phase for any SAP standard analytics to be evaluated in the task Fit-to-standard workshops. This task includes: Setting the default currency for any Key Performance Indicators (KPIs) and Reports to be evaluated Set the target thresholds for Key Performance Indicators (KPIs) and Reports to be evaluated Identify date functions for fiscal periods for reporting Optionally import SAP Analytics Cloud stories to the Fiori launchpad Prerequisites: Assign the business role Analytics Specialist The business role Analytics Specialist and its apps must have been activated in task Activate SAP Fiori in the Initial System and/or Activate SAP Fiori in the Starter System Procedure: Launch the SAP Fiori app F2814 Manage Key Performance Indicators (KPIs) and Reports Select each Key Performance Indicator (KPI) or Report you need to change, e.g. based on the analytics identified in task Create Initial Analytics List Edit Key Performance Indicators (KPIs) and Reports to adjust the default currency and thresholds for semantic information Optionally, on the Stories tab, you can import your SAP Analytics Cloud Stories Launch the SAP Fiori app F2595 Manage Date Functions Identify the date functions that matches the most relevant reporting periods for your fit-to-standard workshops, e.g. fiscal periods for your country Procedure Note(s): The SAP delivered content is adjusted as a starting point. During the Realize phase in task Configure Analytics, the following can be performed: Further adjust the settings for Key Performance Indicators (KPIs) and Reports Create new Key Performance Indicators (KPIs) and Reports, e.g. using SAP Fiori app F2814 Manage Key Performance Indicators (KPIs) and Reports Create custom analytics using SAP Fiori app F1572 Custom Analytical Queries Add SAP Analytics Cloud Stories which you want to include in your launchpad.
- 195: The purpose of this task is to determine all details on the customer-driven analytics and any extensions to the report(s). Prerequisite: Customer-driven analytics and any extension to the existing report(s) are identified and documented as requirements or in the Analytics List Template accelerator. Procedure: Check with the respective expert to determine if the required extension of the business process is feasible. Use the setup guide from the accelerator section as input to determine all needed details to decide if they are doable. Document your findings as a requirement or in the Analytics List Template accelerator. Any custom requirements beyond the standard embedded analytics which need to be configured in the system need to be documented and validated in detail. Procedure Note(s): See Forum - Cross Area Topics accelerator for more information and discussions on topics that cross various areas. Custom requirements are configured and executed according to the business processes in the Realize phase. / Tags: 2nd Wave Project / Rollout Project
- 196: The purpose of this task is to review the details on analytics and sign off for realization. Procedure: Collect all technical information on evaluated reports. Review feasibility. Collect estimate for workload and needed skills and resources. Sign off with customer. / Tags: 2nd Wave Project / Rollout Project
- 197: The purpose of this deliverable is to start planning for Artificial Intelligence (AI) implementation. This includes completion of questionnaire and installation of various applications before running SAP Build Process Automation Bots. / Tags: 2nd Wave Project / Rollout Project, Artificial Intelligence Technology
- 198: The purpose of this task is to identify the business processes which can be automated. Prerequisites: SAP Build Process related scope items are identified. All application mandatory and optional requirements (Desktop agent, SAP Task Center etc.) for running the Bots are installed and tested. Procedure: Verify that all questions are answered in the Business Driven Configuration Questionnaire - AI Automation accelerator. Review Help - SAP Build Process Automation for details for additional guidance implementing automation scenarios using SAP Build Process Automation. All available Business Content can be identified using the accelerator SAP Bot Store - Business Content for S/4HANA Cloud Demonstrate functionality by running an SAP Standard Process Automation content and incorporate end user feedback. / Tags: 2nd Wave Project / Rollout Project, Artificial Intelligence Technology
- 199: The purpose of this task is to collect and identify the business processes using Machine Learning. Prerequisites: Machine Learning related scope items are identified using the accelerator SAP Best Practices - Embedded Machine Learning in S/4HANA Cloud Procedure: Verify that all questions are answered in the Business Driven Configuration Questionnaire - AI Automation accelerator. Download the SAP Best Practices Test scripts from each Scope Item(s) mentioned within the configuration guide attached to SAP Best Practices - Embedded Machine Learning in S/4HANA Cloud Procedure Note(s): Download the guide from accelerator 'Deploying Machine Learning scenario'. / Tags: 2nd Wave Project / Rollout Project, Artificial Intelligence Technology
- 200: The purpose of this task is to identify the business processes using Situation Handling. Prerequisites: Situation Handling related scope items are identified from the ‘Usecases for Situation Handling’ section of Help - Use Cases for Situation Handling Procedure: Verify that all questions are answered in the Business Driven Configuration Questionnaire - AI Automation accelerator. Download the Test scripts from each Scope Item(s) identified in Prepare Phase by each Line Of Business (LOB). Procedure Note(s): See the Situation Handling for SAP S/4HANA Cloud accelerator for more information on situation handling scenarios available in the solution. / Tags: 2nd Wave Project / Rollout Project, Artificial Intelligence Technology
- 201: The purpose of this deliverable is to ensure that all the necessary applications are installed to facilitate the smooth execution of AI - like SAP Build Process Automation, ML, Situational Handling etc. / Tags: Artificial Intelligence Technology, GROW Adoption Plan
- 202: The purpose of this task is to install all the necessary applications to facilitate the execution of Bots – both delivered by SAP Best Practices as well as custom made Bots. Procedure: Subscribe to SAP Build Process Automation within your SAP Business Technology Platform Subaccount. A booster is available for a guided setup process if required. Check all System and Technical prerequisites and install the Desktop Agent Procedure Note(s): Refer to Help - SAP Build Process Automation for additional information on the setup procedure. / Tags: Artificial Intelligence Technology, GROW Adoption Plan
- 203: The purpose of this deliverable is to ensure the detailed planning and design of the Identity and Access Management, including definition of customer Business Roles and the creation of an authorization concept document. The authorization concept should ensure: Correctness Completeness Confirmability Verifiability Availability Protection from misusage and manipulation It is recommended that all the requirements and outcomes for Identity and Access Management are documented in one consolidated Authorization Concept. / Tags: Identity and Access Management
- 204: The purpose of this task is to plan and design the Identity and Access Management in SAP S/4HANA Cloud. Follow the procedure below to ensure an effective and efficient plan and design of the Identity and Access Management. Prerequisites: The applications for the project scope have been captured in the Application - Workplace List during the fit-to-standard workshops. The Backlog (tool or template) has been prefilled and updated with values from the fit-to-standard workshops. Procedure: Hand over all of the business requirements captured during and after the fit-to-standard. Consolidate all requirements in one Application-Workplace List (optional). Create a document to describe the scope and framework of the authorization concept. Establish a definition for the naming convention that can be used to realize the customer-specific authorization concept. Refer to the accelerator How to Set Up a Naming Convention for Business Roles, Spaces, and Pages (3-system landscape), for a detailed how-to guide. Define the workplaces that the respective Business areas must specify. Map the SAP S/4HANA Cloud Apps and the corresponding Business Catalogs to the defined workplaces in the Application-Workplace List. Collect all technical information on the identity and Access Management and sign off with customers. Procedure Note(s): An Authorization Concept should ensure the correctness, completeness, confirmability, verifiability, and availability of the data and protect it from misusage and manipulation. The Authorization concept document must be written clearly so that a third party can quickly see how business data is protected against misusage. Use the IAM Information System app to determine the existing Business Catalogs that allow access to specific apps. To find the Business Catalogs, set the Main Entity = Application > enter the app name in the Search field > select 'Go.' SAP Fiori for SAP S/4HANA Cloud new Launchpad functionality maps preassigned Fiori spaces and pages to your business roles. It enhances the user experience of the business roles as they perform their daily business functions. For more information, review the Blog - Get to Know the New Spaces Concept for SAP Fiori Launchpad accelerator. To enable the spaces for your users, use the Help-Enabling Spaces accelerator. For additional information on Identity and Access Management, see accelerator Help - Manage Your SAP S/4HANA Cloud - Identity and Access Management. The information from the Application-Workplace list can be used to support the testing activities (e.g. definition of testcases). / Tags: Identity and Access Management
- 205: The purpose of the learning needs analysis deliverable is to identify learning and enablement requirements and analysis of the digital learning opportunities. This provides a thorough evaluation of formal and informal learning mechanisms using a 'Push and Pull' methodology. The goal of the learning needs analysis is to ensure the right learning is readily available at the time of need. The focus is on intuitive, consumer focused content, activities and deployment methods that are directly relevant to the learner’s daily life. / Tags: 2nd Wave Project / Rollout Project
- 206: The purpose of this task is to begin the learning needs analysis process by conducting workshops per line-of-business and workstream, together with the implementation project team, to identify the processes in scope and analyze the required end-user skills needed to achieve solution adoption. Procedure: Align with the key project stakeholders on the learning needs and digital learning opportunities. Review the fit-to-standard workshops to determine the scope of the project. Conduct learning needs analysis workshops per workstream with the subject matter experts to identify target user groups and learning requirements for each business process. Review both Planning a Learning Needs Analysis and Learning Needs Analysis Users Overview accelerator to understand the methods for effectively analyzing and identifying learning requirements for project teams and business users. Inform the business area manager about any and all skill gaps within their respective line-of-business area so that they can address these gaps pre-deployment. Analyze different learning methods and content types used in a learning enablement rollout plan. / Tags: 2nd Wave Project / Rollout Project
- 207: The purpose of this task is to create a list of content types and learning methods that will be used in the learning enablement strategy. Procedure: Provide a fully scoped analysis of learning requirements per end-user group or line-of-business area. Develop the baseline curriculum, based on solutions and business processes in scope for the project. The course catalog will be categorized into functional process and sub-process areas including the key tasks and process overviews, the audience (business role), learning duration, method of delivery, and any pre-requisites required. Estimate resources needed for material creation and delivery. Document a high level content development plan, including which content types are to be developed such as videos, concept slides, e-learning, work instructions and simulations, learning exercises, role support, and knowledge assessments. Map the end-user roles to each learning intervention. Align the learning needs analysis to the change impact analysis (if available). Calculate how much time content development will take and how many resources are needed to develop and deliver enablement content. Enable the trainers to schedule the appropriate formal end-user training and deploy the online or digital learning platform as well. / Tags: 2nd Wave Project / Rollout Project
- 208: The purpose of this task to present the learning needs analysis findings to the key business subject matter experts (SME) and key stakeholders. Procedure: Create the learning needs analysis report. Present the learning needs analysis findings to the project and SME's and key stakeholders for review and final sign-off. / Tags: 2nd Wave Project / Rollout Project

| ID | WBS | Task | Duration | Start | Finish | Predecessors | Resources |
| --- | --- | --- | --- | --- | --- | --- | --- |
| 209 | 3.14 | **Data Load Preparation** | 0d | 2024-07-24 08:00 | 2024-07-24 17:00 | 170 |  |
| 210 | 3.14.1 | Determine the Required Master Data for SAP S/4HANA Cloud | 8h | 2024-07-24 08:00 | 2024-07-24 17:00 | 133, 172 | Data Migration Expert |
| 211 | 3.14.2 | Determine Migration Cockpit Field Structures for S/4HANA Cloud (Staging Tables) | 8h | 2024-07-24 08:00 | 2024-07-24 17:00 | 210 | Data Migration Expert |
| 212 | 3.14.3 | Extract and Transform Legacy Data | 8h | 2024-07-24 08:00 | 2024-07-24 17:00 | 211 | Data Migration Expert |
| 213 | 3.14.4 | Data Migration Preparation (ByDesign to S/4HANA Cloud) | 8h | 2024-07-24 08:00 | 2024-07-24 17:00 | 212 | Data Migration Expert |
| 214 | 3.14.5 | Perform Data Cleansing Activities | 8h | 2024-07-24 08:00 | 2024-07-24 17:00 | 212, 213 | Data Migration Expert |
| 215 | 3.15 | **Test Planning** | 0d | 2024-07-24 08:00 | 2024-07-24 17:00 | 170 |  |
| 216 | 3.15.1 | Create Test Strategy for SAP S/4HANA Cloud | 8h | 2024-07-24 08:00 | 2024-07-24 17:00 | 173 | Testing Expert |
| 217 | 3.15.2 | Create and Schedule Test Plan | 8h | 2024-07-24 08:00 | 2024-07-24 17:00 | 216 | Testing Expert |
| 218 | 3.15.3 | Determine Test Scope | 8h | 2024-07-24 08:00 | 2024-07-24 17:00 | 217 | Testing Expert |
| 219 | 3.16 | **Phase Closure and Sign-Off Phase Deliverables** | 0d | 2024-07-24 08:00 | 2024-07-24 17:00 | 203 |  |
| 220 | 3.16.1 | Conduct Project Quality Gate | 8h | 2024-07-24 08:00 | 2024-07-24 17:00 | 169, 173, 181, 190, 196, 202, 204, 208, 214, 218 | Project Lead |
| 221 | 3.16.2 | Assess Project Performance | 8h | 2024-07-24 08:00 | 2024-07-24 17:00 | 220 | Project Lead |
| 222 | 3.16.3 | Obtain Customer Sign-Off for Phase Completion | 8h | 2024-07-24 08:00 | 2024-07-24 17:00 | 220, 221 | Project Lead |
| 223 | 4 | **Realize** | 0d | 2024-07-24 08:00 | 2024-07-24 17:00 |  |  |
| 224 | 4.1 | **Execution/Monitoring of Project** | 0d | 2024-07-24 08:00 | 2024-07-24 17:00 | 219 |  |
| 225 | 4.1.1 | Review the SAP S/4HANA Cloud Onboarding Journey | 8h | 2024-07-24 08:00 | 2024-07-24 17:00 | 152 | Project Lead |
| 226 | 4.1.2 | Direct and Manage Project Execution | 8h | 2024-07-24 08:00 | 2024-07-24 17:00 | 222 | Project Lead |
| 227 | 4.1.3 | Update Project Management Documents | 8h | 2024-07-24 08:00 | 2024-07-24 17:00 | 226 | Project Lead |
| 228 | 4.1.4 | Manage Project Issues, Risks, and Changes | 8h | 2024-07-24 08:00 | 2024-07-24 17:00 | 227 | Project Lead |
| 229 | 4.1.5 | Communicate Project Status and Progress | 8h | 2024-07-24 08:00 | 2024-07-24 17:00 | 228 | Project Lead |
| 230 | 4.1.6 | Manage Transports | 8h | 2024-07-24 08:00 | 2024-07-24 17:00 | 32, 229 | Project Lead |
| 231 | 4.2 | **Detailed Change Impact Analysis** | 0d | 2024-07-24 08:00 | 2024-07-24 17:00 | 224 |  |
| 232 | 4.2.1 | Prepare Change Impact Workshops | 8h | 2024-07-24 08:00 | 2024-07-24 17:00 | 229, 230 | Organizational Change Management Expert |
| 233 | 4.2.2 | Conduct Change Impact Assessment | 8h | 2024-07-24 08:00 | 2024-07-24 17:00 | 232 | Organizational Change Management Expert |
| 234 | 4.2.3 | Manage Change Impacts | 8h | 2024-07-24 08:00 | 2024-07-24 17:00 | 233 | Organizational Change Management Expert |

Notes:
- 209: The purpose of this deliverable is to begin data migration. Data migration is the process of taking existing data from a legacy system and preparing it for use in new SAP system. This process is executed iteratively based on the in-scope objects and begins as soon as objects are identified avoiding future delays to the project. The overall process involves the following: Determining the required objects and data sources. Creating plans to extract data, create data, and transform data. Extracting and transforming data. Cleansing unnecessary or incorrect data. / Workstream: Data Management / Tags: 2nd Wave Project / Rollout Project, Hybrid Deployment (Two-Tier ERP)
- 210: The purpose of this task is to determine the master data objects, data sources, migration methods and extraction/load plan required for the scope of your implementation as determined in the fit-to-standard workshops. This information is crucial for the manual creation of test data and the initial steps of the data migration process. The master data can be generalized as migration objects in SAP S/4HANA migration cockpit. Migration objects contain fields that map to fields in the system. Historical transaction objects (i.e. completed sales orders, completed purchase order, etc) are not migrated to the new system. They are typically available via reporting or other archival retrieval tools. Procedure: Determine all master data objects and allowed values needed to support the business processes documented in the fit-to-standard workshops. See accelerators Master Data Overview.xlsx and Create Your Own Master Data for SAP S/4HANA Cloud for reference information related to the delivered content. Determine the data source for each object. See Help - Migration Objects for SAP S/4HANA Cloud for a list of objects. Determine the migration method for objects: migrate data using staging tables, migrate data directly from SAP system or manual data load. Read the migration object documentation available in the Help - Migration Objects for SAP S/4HANA Cloud for additional information on the fields that are supported. The list can be downloaded into spreadsheet and extended to be used as a tracking tool. Based on the object, source and approach, develop an extraction and data load plan. The dependencies information for every object are available in Help - Migration Objects for SAP S/4HANA Cloud. Choose the needed migration object and check the section Prerequisites. Procedure Note(s): The information about predecessors (dependent) migration objects are available in the Migrate your Data app during the project creation. / Workstream: Data Management / Tags: 2nd Wave Project / Rollout Project
- 211: This task is only relevant for migration using staging tables. The purpose of this task is to view the SAP S/4HANA Cloud data structures by downloading the template files and associating the structures with the data from the legacy system(s). After creating the migration project, you can select the migration objects that are relevant to your migration scenario. By using “Migrate Data using Staging Tables” approach, you can download the migration objects templates to view the data structure. Moreover, by filling the staging tables with the files, you need to download templates to specify data and upload it back to your project. If filling staging tables using 3rd party tools, the template files can be used as a guide to the table structures and required fields. Apps Used: Migrate Your Data Procedure: Follow the instructions in the Test Scripts document available via Data Migration to SAP S/4HANA from Staging (‏2Q2‏) to download the Migration Object Templates. Template samples are available in Accel ID = S4H_628. Review the Introduction, Field List and Structure tabs to familiarize yourself with the structures and mandatory fields. This information is relevant to the creation of specifications for data extraction from a legacy system. Understand the dependencies between the objects for prioritization purposes. Procedure Note(s): The templates generated are reflecting available fields as per current release. Always update or check your templates after each release upgrade to avoid errors. Loading the staging tables via file has a limitation for each XML file of 100 MB and it is recommended to use less than 50,000 records in one file. See Notes - Migration Cockpit Search in SAP for Me for Knowledge Bases Articles related to data migration. See Blogs - Migration Cockpit Search in the SAP Community with SAP S/4HANA Cloud tag for related blogs. To determine if objects related to the custom fields created through the Fiori app are extendable, see column “Custom Field Support” in Accel ID = S4H_831. / Workstream: Data Management / Tags: 2nd Wave Project / Rollout Project
- 212: The purpose of this task is to extract data from legacy systems and convert it into a format suitable for loading into the staging tables. This involves having a deep understanding of the data in the source systems, the extraction and transformation tools, as well as required formats for the staging tables. Since multiple objects may be involved, this task is carried out iteratively and in accordance with the extraction and transformation plan. Procedure: Extract the necessary data from the legacy systems using a tool that allows for data manipulation. This tool can be a spreadsheet, a database, or other data transformation software. Transform the data to conform to the target field attributes by considering the following points: Adding missing values Remove duplicates or unnecessary data Structure the data so that it can be easily transferred to the load templates Create load files based on the extracted data and load templates. / Workstream: Data Management / Tags: 2nd Wave Project / Rollout Project
- 213: This task is relevant for customers transitioning from SAP Business ByDesign to SAP S/4HANA Cloud. The purpose of this task is to provide guidelines on initializing the data extraction from SAP Business ByDesign system and preparing it for use in SAP S/4HANA Cloud system. This process is executed iteratively based on the in-scope objects and begins as soon as objects are identified avoiding future delays to the project. Procedure: The overall process involves the following steps: Extract the data from SAP Business ByDesign in the form of XML file Upload the iflows provided along with the Data Migration Accelerator to an SAP Business Technology Platform Integration Suite Package Deploy & Execute the Iflow Procedure Note(s): Complete the SAP Discovery Center - Missions: Migrate data from SAP Business ByDesign to SAP S/4HANA Cloud Public to understand the Data Migration process during SAP Business ByDesign to SAP S/4HANA Cloud Migrations. Review the accelerator Blog : Guide for Proposed Migration - SAP Business ByDesign to S/4HANA Public Cloud for detailed instructions on the migration procedure. Only steps 1-3 in the migration guide are to be executed in this task. Review the accelerator Blog - Data Migration Accelerator: SAP Business ByDesign to SAP S/4HANA Public Cloud to get access to the Data Migration Accelerator / Workstream: Data Management / Tags: ByDesign to S/4HANA Cloud Transition (Partner)
- 214: The purpose of this task is to cleanse the legacy data before loading into SAP target system. Inaccurate data or inconsistent formatting should be corrected. Unnecessary data should be removed from the legacy data to reduce the volume of data to load and keep the new system free from extraneous data. Data cleansing should occur on the legacy data as soon as the data migration objects are identified, otherwise this process may become a bottleneck for data migration. Data that populated via integration, such as two-tier systems, should be included in the data assessment and cleansing activities. Procedure: Review data from the legacy systems that will be migrated during the implementation project for relevancy, quality and completeness. Users of the different data can typically provide the best insight into the data quality. Delete or identify rules for omitting legacy objects that should not be included in the migration. Identify data inaccuracies, duplication and obsolesces. Develop plans to correct data issues. Procedure Note(s): In addition, some SAP tools/products such as SAP Data Services can be used to populate the staging tables, provide data transformation and cleansing capabilities. See SAP Data Services for additional information. / Workstream: Data Management / Tags: 2nd Wave Project / Rollout Project, Hybrid Deployment (Two-Tier ERP)
- 215: The purpose of this deliverable is to plan, design, and prepare for testing the configured or built system. Key deliverables during this phase include an agreed test strategy and test plan/test schedule. It is important to note the relevant prerequisites that should be in place before end to end takes places. It is necessary to consider and plan for the testing cycles required during testing activities and understand what needs to be completed for testing. During this deliverable, existing tests, quality management processes, and procedures which may occur can be leveraged to support the project. It is recommended that customers appoint a Test Manager to the project at the earliest opportunity. The Test Manager is then able to work with the module process leads as well as technical leads to build up knowledge of business processes before executing the User Acceptance Testing. / Workstream: Testing / Tags: 2nd Wave Project / Rollout Project
- 216: The purpose of this task is to agree on the key elements of the test strategy and document them in the test strategy document. Typically, one signed and approved test strategy will cover the entire project duration and is often owned jointly by the customer and the implementation partner. This step is crucial as it defines how testing will be performed and completed in the project. Before testing starts, all project members and stakeholders must agree and align to the coordinated approach. The test strategy contains the following: Project Testing Objectives and Assumptions: A statement of the objectives and the assumptions around the objectives High-level Test Plan(s): High-level schedule of testing activities Test Scope: Testing activities that are relevant to the project High-Level Processes: List of high-level processes that need to be tested Test Cycle: The commonly used phases of testing within the test execution are listed below: Unit Testing (if applicable) Business Process (String) Testing Integration Testing Data Conversion Testing User Acceptance Testing Testing Approach: A detailed description of how different test types relate to each other (i.e., a successful unit test is a prerequisite for doing a string test, or migration test results may lead to a prerequisite for user acceptance testing) An understanding of how the test phases will be planned and executed What is the content of the test type is Entry and exit into the test phases Who will be involved Testing Deliverables: Test processes per phase, test environment, and test tools Test Automation (Recommended): How will the scope be determined? When will the test automation work start? How and when will the automation test scripts be used? Testing Tools: The following tools are used to perform different tests (i.e., manual test management tool, test automation tool, defect tracking tool) If you use SAP Cloud ALM for Test Management, please check the capabilities. If you are using SAP Cloud ALM, then different test automation tools are available; please check which ones and how to set them up. If you are implementing Hybrid two-tier Deployment Scenarios', Check the SAP Cloud ALM Test Management capabilities for tracking the test results. Defect Management: Description of how defects will be documented (i.e., what information must be documented, any standards that need to be followed) Detail of the defect lifecycle and various statuses Detail of priority and severity of defects Roles and Responsibilities: Description of required test roles and responsibilities (i.e., Test Lead and responsibilities of individual project team members related to testing) Procedure: SAP S/4HANA Cloud customers can review the Test Strategy Template S4HANA Cloud and Test Strategy Recommendations for 3SL Customers in the accelerators section. Additionally, Review the Test Management Guide accelerator. Define and create the project-specific test strategy document. Sign off on the agreed test strategy by all project members and stakeholders. / Workstream: Testing / Tags: 2nd Wave Project / Rollout Project, Hybrid Deployment (Two-Tier ERP)
- 217: The purpose of this task is to create test plan for test types and test cycles selected during test planning. A test plan is a group of test cases and processes that reflects the business process sequence and dependences. It should include the timing of execution from project timeline stand point and specify the type of testers should be made available. For example, Business process test at end of each Sprint by business process experts including custom developments. User adoption test as form of end user training before deployment. Procedure: Define the test scope, containing: Test cases Dependencies Prerequisites Test scope agreement by the project team (customer and implementer), involved business process experts, and stakeholders. If you are using SAP Cloud ALM, this is managed by creating your project scope and adding the relevant business processes to it. Optional: Plan resources and timelines. Please refer to the Detailed Test Schedule Template accelerator below. It can be used for tracking and monitoring purposes during the testing phase. A detailed schedule can either be created for the entire project, or for each individual test phase. It contains: Key prerequisite testing activities Scope items (test cases) and unique test case IDs Dependencies and milestones Test execution start dates and duration Resource allocation Timeline showing the testing tasks and when they will occur Test status tracking (if required) Optional: If you are using SAP Cloud ALM, you can prepare your test plans in the tool to visualize the exact timeline of testing. The test cases might not be ready at this time. The test planning can already occur though. / Workstream: Testing / Tags: 2nd Wave Project / Rollout Project
- 218: The purpose of this task is to define the scope of testing for a project, regardless if the project is executed independently or as part of a release; it needs to be determined in order to ensure the testing environments and testing artifacts are available for execution. With such a variety of testing cycles (e.g. Integration, Regression, Business Process, PUT, User Acceptance, etc.) available, it is important to define the cycles that are required such as supporting the planned conversion event, security roles and profile testing, testing the Hybrid two-tier Deployment Scenarios', Extensibility objects associated with a business process, and interface objects which are not related to business processes. Procedure: Evaluate the existing process and procedures to determine the different testing cycles required to support the project. Use existing processes and procedures to guide decision-making in selecting test cases and scripts. Reference the SAP Signavio Process Navigator for an example of a test script and process flow in the "SAP Best Practices - Process Flow and Test Script (Example)" accelerator. For the effective compilation of test cases and scripts, prioritize critical business apps/reports, evaluate frequently used apps/reports, and analyze past production support issues. If you are implementing Hybrid two-tier Deployment Scenarios', Consider them in the scope of the implementation project when identifying the Integration testing test cases and scripts. Determine the overall test data approach by aligning with the overall data migration approach. The test data approach will be documented as part of the testing strategy. Document the scope in the test strategy document, and execute the test scope in SAP Cloud ALM, or other selected test management tools. As an alternative, use the Intelligent Test Scoper application under Test Automation Tools to generate scope. The same is available in 3SL system as well. Set the required filters to view the optimized scope based on SAP’s standard code changes. Push the generated optimized scope to Manage Upgrade Tests (MUT) by creating a new execution variant. Procedure Note(s): You can push the optimized scope to MUT only when the Application Area filter is applied or when no filters are applied. The button remains disabled in other cases. For more details, see the Help – Filter Optimized Scope Items. Give a suitable name and description to the execution variant you create every time you push the optimize scope to MUT. For more details, see the Help – Push Optimized Scope to Manage Upgrade Tests. As a result, a test strategy, and a defined set of test cycles, test cases, and test scripts in scope to support the conversion project are created. / Workstream: Testing / Tags: 2nd Wave Project / Rollout Project, Hybrid Deployment (Two-Tier ERP)
- 219: The purpose of this deliverable is to formally close the phase and conduct deliverable sign-off. During this time the project team will: Ensure that all required deliverables from this phase and the project are complete and accurate, and close any outstanding issues Conduct formal Project Quality Gate and identify lessons learned during the phase Capture customer feedback and identify potential customer references / Workstream: Project Management / Tags: 2nd Wave Project / Rollout Project, GROW Adoption Plan
- 220: The purpose of the Quality Gate is to ensure that both compliance and project management standards are being upheld within projects. A Quality Gate is a checklist milestone at the end of a project phase . Prior to moving into the next phase each project manager demonstrates that they have been compliant with the mandatory deliverables associated with a methodology while ensuring best practice standards have been applied to ensure quality. Procedure: Review the QGate Checklist Concept SAP Activate accelerator to ensure an understanding on what should be covered during the Quality Gate. Areas covered should include: Specifically checking deliverables been completed with recommended practices. Assuring project planning. Validating open risks and issues, and measuring customer satisfaction. Conduct the Quality Gate utilizing the applicable Quality Gate Template accelerator. / Workstream: Project Management / Tags: 2nd Wave Project / Rollout Project, GROW Adoption Plan, Industry Cloud Apps
- 221: The purpose of this task is to deliver the Project Performance survey to the appropriate stakeholder groups throughout the remainder of the implementation. This includes the core project management team and each team working to transform a ‘Line of Business’ (LoB) business process (supply chain, finance, etc). Each team will provide project team-related feedback in terms of governance, processes and empowerment during the Explore, Realize and Deploy phases. Procedure: Review the recommendations of the ‘Project Performance’ section of the XM Transformation Procedures accelerator. Identify the survey and reporting recipient groups, listed in the above section of the accelerator, and inform them they are participating in the XM transformation program. Provide these groups (especially report recipients) with enablement on how to use the Project Performance survey and/or interpret the reporting results. Go to the ‘Survey Q’ tab of the XM Transformation Survey Questions accelerator and locate the survey questions, by filtering on the ‘Project Performance’ column. Adapt the survey to the current transformation, finalize and publish. Determine the appropriate frequency of survey (at least quarterly or at end of a phase), noting where other surveys (i.e. Solution Validation) incorporate the same questions, so that they do not coincide with what is already distributed to these same user. Distribute the Project Performance survey. Once the survey response collection period is over, finalize the dashboard and use it to communicate the feedback to report recipients, with follow-up meetings to discuss the findings and recommend corrective measures accordingly. Document the outcomes in an executive summary for Sponsor and Steering Committee quarterly business review activities. Procedure Note(s): If the process is unclear, engage with the XM Advisory experts from: your XM vendor, SAP or implementation partner for assistance. For LoB teams only, the ‘Tracking Goals’ survey takes over from the Project Performance survey, at that phase. / Workstream: Solution Adoption / Tags: 2nd Wave Project / Rollout Project, XM Transformation
- 222: The purpose of this task is to ensure that all required deliverables from this phase and the project are complete and accurate, and close any outstanding issues .Use the Phase Signoff Template accelerator for this task. Procedure: Identify and list all key deliverables from phase delivery. Confirm status of completion and any outstanding actions. Provide signoff document to signatory. Obtain phase signoff and agreement for any possible outstanding actions. Identify lessons learned during the phase Capture customer feedback and identify potential customer references When sign-off is obtained, the project can proceed to the next phase. / Workstream: Project Management / Tags: 2nd Wave Project / Rollout Project, GROW Adoption Plan
- 223: The purpose of this phase is to incrementally build and test an integrated business and system environment that is based on the process requirements identified in the previous phase and captured in the backlog. During the Realize phase, the project team loads customer data into the system, plans adoption activities, and prepares cutover plans and plans for operationally running the solution. Realize Phase Activities: Monitor project activities. Configure the solution in the Development system using incremental build in time-boxed iterations. Replicate the solution in the Test environment. Migrate for data in preparation for testing. Conduct overall end-to-end testing of the business processes the Test environment. Conduct project team and key user training. Set up the production environment. Finalize end user training materials and documentation. Plan cutover activities. Track and report on value delivery. During the Realize phase, the project team uses a series of iterations to incrementally configure, test, confirm, and document the entire end-to-end solution and to load data. The project team actively works with business representatives to ensure good fit of the built solution. The project team releases results of multiple iterations to the business users to accelerate time to value and provide early access to finalized functionalities.
- 224: The purpose of this deliverable is for the project team to carry out the planned and approved project work and measure project performance to identify variances from the plan. The execution goal is to manage the scope of the work to be done, while monitoring the execution, identifying variances from the plan, monitoring quality results, controlling progress against the plan, controlling changes throughout the project, assessing and responding to risks, and communicating the project status. The Project Management Plan developed during the Prepare phase for each of the PM knowledge areas guides the team's approach to management, execution, monitoring, and control of project activities. This methodology provides steps to be considered when each activity is engaged and supported by the team's monitoring/controlling plans. The project manager is responsible for ensuring that the monitoring/controlling plans developed in the planning phase are applied at the appropriate level of control. / Workstream: Project Management / Tags: 2nd Wave Project / Rollout Project, GROW Adoption Plan
- 225: The purpose of this task is to provide users with the essential knowledge and resources required to successfully navigate and contribute to projects and implementations involving SAP S/4HANA Cloud. Procedure: Explore the SAP methodology and gain familiarity with measuring project progress & milestones, cutover concept and identification of SAP offerings and services to support the implementation using the 4th Onboarding session - Project Guidance one pager accelerator. Review the SAP S/4HANA Cloud Onboarding Journey one pager accelerator to get familiar with the onboarding journey from the welcome & introduction all the way to go-live preparation. Tune into both live and recorded onboarding webinars using the SAP S/4HANA Cloud Public Edition Onboarding Resource Center accelerator. / Workstream: Project Management / Tags: GROW Adoption Plan
- 226: The purpose of this task is to execute the project management plan and accomplish the work defined in the project scope statement for the project manager and the project team. Procedure: In executing the project work, the project team will perform the following types of activities: Perform project tasks to reach project objectives Expend effort and funds to accomplish project objectives Staff, train, and manage the project team members assigned to the project Obtain, manage, and utilize resources Implement and execute the planned methods and standards Create, control, verify, and validate project deliverables Manage the scope of the approved work Manage risks and implement risk response activities Manage issues to closure Adapt approved changes into the scope, plans, and project environment Establish and manage internal and external communications Collect project data and report on progress and performance In monitoring/controlling work results, the project team performs the following types of activities: Compare actual project performance to the project management plan Assess performance to determine whether corrective or preventive actions are necessary Monitor and control project risks Provide metrics to support progress and performance reporting and forecasting Monitor implementation of approved changes Take corrective action as needed See topic ‘Analytics’ in the SAP Cloud ALM for Implementation - Expert Portal accelerator for more information on project monitoring in SAP Cloud ALM. Management plans developed during the Prepare phase guide the team's approach to management, execution, and control of project activities. Note: See the “Prepare Project Management Plan” task in Prepare phase for details. / Workstream: Project Management / Tags: 2nd Wave Project / Rollout Project
- 227: The purpose of updating the project management documents task is to ensure that the project manager keeps the key project management documents up-to-date. The project management document is a comprehensive body of project documents that include the project schedule, budget/cost information, monitoring/controlling plans for each of the nine knowledge areas of the Project Management Body of Knowledge (PMBOK), and other information as appropriate. The project management plan document developed for each of the knowledge areas provide the foundation for the consistent application of project management practices. Procedure: Redefine the project schedule, project budget, and update the management plans, scope document and business case to reflect the detailed scope information created during the project. Provide updates to: Project management plan Project WBS Project schedule Project budget Business case Scope document Backlog document (created in Explore phase) / Workstream: Project Management / Tags: 2nd Wave Project / Rollout Project
- 228: The purpose of this task is to manage project issues, risks, and changes. A consistent and thorough approach to managing project issues is essential for an effective project management system. Efficient issue management entails the appropriate managerial decision-making and progress tracking in line with the project's issue management procedure. Identified issues are centralized and maintained within a single environment. Procedure: Utilize a dedicated issue tracking document based on the Open Issues List Template.xls accelerator. The management of issues entails the following steps: An issue is raised and appropriately categorized based on its relevance to system conversion, solution implementation, or solution operations within SAP technology. This issue is logged in the issue tracking tool, either by SAP, a customer, or an implementation partner. During the issue's creation, the individual raising the issue assigns its priority and identifies the responsible person for resolving it. The Project Manager conducts regular follow-ups on issues, in addition to adhering to the standard issue management process outlined in the project's management plans. Critical issues are reviewed as part of the input for each Quality Gate review meeting. Review and update open issues regularly, and communicate these updates to the relevant stakeholder groups as part of the routine project reporting and communication process. Issue tracking enhances visibility and transparency regarding open issues, problems, action items, and associated action plans for the project management team. Use a centralized issue tracking system to oversee and maintain lists of issues that require action and resolution, thereby guaranteeing the project's success. / Workstream: Project Management / Tags: 2nd Wave Project / Rollout Project, GROW Adoption Plan
- 229: The purpose of this task is to communicate project status and progress. Throughout the project, several project performance reports need to be produced for different purposes and audiences, as defined in the project communication plan. The project manager and project team are responsible for clearly communicating the progress of the key activities, completion of the deliverables, and status against the schedule and budget. Procedure: Produce team member status updates typically every week and share them with the team lead. It is recommended that this report is kept very lightweight and provided to the team lead via e-mail or in a team meeting. Report team status reports on regular cadence, typically weekly. The team status reports are prepared by the team leads and are delivered to the project manager as an input for the project status report. The team status report may be reviewed in regular team review with the Project Manager or provided in a predefined format. Use the project status report template for project status report. Create the project status report on weekly basis, based on the input from individual teams and additional information like issues list, risk list, etc. Prepare executive status report on monthly or quarterly cadence and provide it to the project executive steering group. Generally, in this report re-use the key information from the weekly project status report. Expand on the value and benefits of the program and include discussion of the decisions that are needed from the executive steering group. Review and update the project communication matrix as more is known. The communication matrix documents the project team’s approach to communication. It captures the analysis completed as part of communications planning and serves as a tool to guide the project team throughout the project. / Workstream: Project Management / Tags: 2nd Wave Project / Rollout Project
- 230: The purpose of the task is to provide an overview on managing transports in the SAP S/4HANA Cloud Public Edition 3-system landscape. The process involves saving changes first in the Development System, then transporting them to the Test System, and finally to the Production System. For a comprehensive landscape overview with a diagram, refer to Accel ID = S4H_1028. Initially, the Development System is activated starting from SAP Central Business Configuration. It comprises two tenants, Customizing Tenant and Development Tenant, each requiring independent setup. Transports created in the Development Tenant are “local” and cannot be subsequently transported. To activate the Test System and the Production System, it is crucial to use the first activation transport from SAP Central Business Configuration, saved in the Customizing Tenant. Different type of changes (i.e. initial activation, org structure from SAP Central Business Configuration, subsequent configuration activities, roles, output objects, other key user extension and developer extension) use different apps when moving the changes across the landscape. For a detail analysis and comparison of different types, refer to the Transport Management Summary section table in Accel ID = S4H_1028. When planning project activities during Realize phase, consider the following regarding transports: There are system checks (ie. foreign key, dependency, sequence, etc) upon deployment of setting from SAP Central Business Configuration, and release of transports in Development System. It is a best practice to manage transports: By sequence - especially for transports originated from SAP Central Business Configuration before subsequent configuration activity transports. By group - when rolling out a country or a specific business process area as described in activating new scope or country/region. By feature – where related customization and extension changes are required to go together as identified during sprint planning. Trigger import within timelines that is compatible to the downward compatibility rule. Transport released in Development System with version N, should be imported, at the latest, before Test/Production System is upgraded to version N+2. For example, All transports released from Development System in 2202 version, can be imported into to Test/Production system that are on the 2202 version. Most transports released from Development System in 2202 version can still be imported to Test/Production system that is upgraded to the 2208 version (N+1). Some restriction applies to key user extension objects. All transports released from Development System in 2202 version can NOT be imported to Test/Production system that is upgraded to the 2302 version (N+2). Most transports will need to be recreated in the new version to be imported, with the exception of transports deployed from SAP Central Business Configuration, which includes scope, country/region activation and delta transports from updates and upgrades. Become familiar with the process to import collection versions and thus make extension items available for productive usage. Details can be found in the Accel ID = S4H_1814. Select Simple or Flexible transport mode, which has an impact on the business process configuration transports, to suite your project needs. For example, project doesn't have multiple country rollout in scope, have limited business process activations, or with little extension considerations can simplify its overall transport process with Simple Transport Mode. Reference Help - Transport Modes for more details. Both partners and customers need to discuss and evaluate the feasibility of Git-Enabled Change and Transport Management (gCTS App) within the context of Multi-Off Delivery. If gCTS App is used, then partners should refer to task Develop and Transport Developer Extensions for additional information. Procedure: Use Tag ‘Transport Management’ to access the list of tasks related to Transports. Review all tasks' description, steps, and notes including accelerators. Adjust project activities accordingly. Procedure Note(s): Review the enablement session 3-System Landscape - Transport Management Fundamentals on SAP Learning Hub. Before you can access the link, a one-time registration in the SAP Learning Hub, edition for SAP Enterprise Support, is required. Follow the step-by-step guide to complete your registration here. Reference blog post Blog - Transport Management in SAP S/4HANA Cloud Public Edition 3-System Landscape... for more details about the transport management system capabilities. / Workstream: Application Design and Configuration, Extensibility, Project Management, Technical Architecture & Infrastructure / Tags: Transport Management
- 231: The purpose of this deliverable is to gain insights into how the implementation of the SAP system will affect specific groups of stakeholders. The implementation of a new SAP system goes beyond being solely an IT project and has wide-ranging impacts on the entire organization. Evaluating these impacts requires a good understanding of both the current situation and the envisioned future state. A change impact analysis is best conducted in a workshop setting, where experts from various organizational units and diverse backgrounds can engage in discussions that often uncover valuable insights to facilitate the organizational transition. This collaborative approach promotes a shared understanding of upcoming challenges among project stakeholders. Following the assessment, it is essential to address the identified areas for action with appropriate activities. / Workstream: Solution Adoption / Tags: Organizational Change Management
- 232: The purpose of this task is to bring the right people together for the assessment and ensure a smooth execution of the workshop. A crucial step in this process is to reach a consensus regarding the appropriate level of detail for discussing the impacts on the new SAP business processes. Breaking down the business process into excessively granular components can result in unnecessary effort, while keeping the discussion too abstract may risk overlooking essential information. Typically, workshop participants consist of managers of the affected business units, alongside selected process owners, subject matter experts, or key users who possess in-depth knowledge of the processes involved. It is recommended to divide the overall implementation scope, possibly by process scope areas, and plan for several short sessions to ensure focused discussions. Additionally, it is essential to prepare the necessary templates in advance. Procedure: Compile a list of relevant SAP business processes and create assessment templates using the Detailed Change Impact Analysis accelerator. Identify and assign workshop participants. Schedule change impact workshops. / Workstream: Solution Adoption / Tags: Organizational Change Management
- 233: The purpose of this task is to identify the implications of the new SAP business processes for various groups of stakeholders. It is beneficial to have the workshops led by an impartial facilitator. This fosters a comprehensive examination of the change impacts, encompassing not only process and technological changes, but also considerations related to organization and people. The facilitator can also support the group in reaching a consensus on quantifying the change impacts, using categories like high, medium, low, or no impact. These ratings aid in identifying the extent of impact for each business process and stakeholder group, enabling the prioritization of mitigation activities. It is imperative to document both pertinent insights into change impacts and suggestions for specific actions during the workshop. Procedure: Introduce the workshop approach, using the Guiding Questions accelerator. Discuss and and assign ratings to change impacts for all relevant SAP business processes, involving all stakeholder groups responsible for executing these processes using the Detailed Change Impact Analysis accelerator. Document relevant insights and proposals for concrete activities. / Workstream: Solution Adoption / Tags: Organizational Change Management
- 234: The purpose of this task is to facilitate a seamless transition for all affected stakeholder groups to the new SAP solution and the adoption of best practice processes. Representing the workshop outcomes, especially the quantitative ratings visually (e.g., in the form of a heat map), enables the swift identification of areas requiring attention. The initial ideas already collected during the workshops should then be further developed and refined. Typically, some of these activities fall within the scope of organizational change management. Others may concern training, cut-over procedures, or measures to be implemented within the individual business units. Therefore, it is the responsibility of the change manager to ensure that all activities are consolidated into an action plan with clearly defined roles and responsibilities for execution. Procedure: Consolidate and visually represent the outcomes of the workshops, utilizing the Result Visualization accelerator. Collect additional suggestions for addressing identified areas requiring action. Define an action plan and assign distinct responsibilities for each activity using the Action Plan accelerator. / Workstream: Solution Adoption / Tags: Organizational Change Management

| ID | WBS | Task | Duration | Start | Finish | Predecessors | Resources |
| --- | --- | --- | --- | --- | --- | --- | --- |
| 235 | 4.3 | **Request the SAP S/4HANA Cloud Development System / Initial Setup** | 0d | 2024-07-24 08:00 | 2024-07-24 17:00 | 219 |  |
| 236 | 4.3.1 | Request the SAP S/4HANA Cloud Development System | 8h | 2024-07-24 08:00 | 2024-07-24 17:00 | 222 | System Administrator |
| 237 | 4.3.2 | Set Up Customizing Tenant in SAP Central Business Configuration | 8h | 2024-07-24 08:00 | 2024-07-24 17:00 | 236 | System Administrator |
| 238 | 4.3.3 | Set Up Development Tenant in SAP Central Business Configuration | 8h | 2024-07-24 08:00 | 2024-07-24 17:00 | 237 | System Administrator |
| 239 | 4.4 | **Initial System Access for SAP S/4HANA Cloud Development System** | 0d | 2024-07-24 08:00 | 2024-07-24 17:00 | 235 |  |
| 240 | 4.4.1 | Initial Access to the Development System | 8h | 2024-07-24 08:00 | 2024-07-24 17:00 | 236 | System Administrator |
| 241 | 4.5 | **Request the SAP S/4HANA Cloud Test System** | 0d | 2024-07-24 08:00 | 2024-07-24 17:00 | 239 |  |
| 242 | 4.5.1 | Request the SAP S/4HANA Cloud Test System | 8h | 2024-07-24 08:00 | 2024-07-24 17:00 | 240 | System Administrator |
| 243 | 4.6 | **Initial System Access for SAP S/4HANA Cloud Test System** | 0d | 2024-07-24 08:00 | 2024-07-24 17:00 | 241 |  |
| 244 | 4.6.1 | Initial Access to the Test System | 8h | 2024-07-24 08:00 | 2024-07-24 17:00 | 242 | System Administrator |
| 245 | 4.7 | **Request the SAP S/4HANA Cloud Production System** | 0d | 2024-07-24 08:00 | 2024-07-24 17:00 | 239 |  |
| 246 | 4.7.1 | Evaluate the Need for a Sandbox Tenant | 8h | 2024-07-24 08:00 | 2024-07-24 17:00 | 240 | Business Process Expert |
| 247 | 4.7.2 | Request the SAP S/4HANA Cloud Production System | 8h | 2024-07-24 08:00 | 2024-07-24 17:00 | 240 | System Administrator |
| 248 | 4.8 | **Initial System Access for SAP S/4HANA Cloud Production System** | 0d | 2024-07-24 08:00 | 2024-07-24 17:00 | 245 |  |
| 249 | 4.8.1 | Initial Access to the Production System | 8h | 2024-07-24 08:00 | 2024-07-24 17:00 | 246, 247 | System Administrator |
| 250 | 4.9 | **Enablement Content Development** | 0d | 2024-07-24 08:00 | 2024-07-24 17:00 | 248 |  |
| 251 | 4.9.1 | Create a Content Development Plan | 8h | 2024-07-24 08:00 | 2024-07-24 17:00 | 234, 249 | Education Expert |
| 252 | 4.9.2 | Manage Content Design and Content Development | 8h | 2024-07-24 08:00 | 2024-07-24 17:00 | 251 | Education Expert |
| 253 | 4.10 | **Sprint Planning and Execution** | 0d | 2024-07-24 08:00 | 2024-07-24 17:00 | 250 |  |
| 254 | 4.10.1 | Plan the Sprint for SAP S/4HANA Cloud | 8h | 2024-07-24 08:00 | 2024-07-24 17:00 | 173, 226 | Project Lead |
| 255 | 4.10.2 | Execute the Sprint | 8h | 2024-07-24 08:00 | 2024-07-24 17:00 | 254 | Project Lead |
| 256 | 4.10.3 | Close the Sprint | 8h | 2024-07-24 08:00 | 2024-07-24 17:00 | 255 | Business Process Expert; Project Lead; System Administrator; Extensibility Expert; Configuration Expert; Output Management and Forms Expert |
| 257 | 4.11 | **Required Configuration Before System Use - SAP S/4HANA Cloud** | 0d | 2024-07-24 08:00 | 2024-07-24 17:00 | 245 |  |
| 258 | 4.11.1 | Configure Tax Solution | 8h | 2024-07-24 08:00 | 2024-07-24 17:00 | 247 | Configuration Expert |
| 259 | 4.11.2 | Adapt Chart of Accounts | 8h | 2024-07-24 08:00 | 2024-07-24 17:00 | 240 | Configuration Expert |
| 260 | 4.11.3 | Maintain Profit Center Configuration | 8h | 2024-07-24 08:00 | 2024-07-24 17:00 | 258 | Configuration Expert |
| 261 | 4.11.4 | Maintain Cost Center Master Data | 8h | 2024-07-24 08:00 | 2024-07-24 17:00 | 260 | Configuration Expert |
| 262 | 4.11.5 | Maintain Takeover Date Information for Asset Accounting | 8h | 2024-07-24 08:00 | 2024-07-24 17:00 | 261 | Configuration Expert |
| 263 | 4.11.6 | Configure Customer Specific Fiscal Year Variant (Optional) | 8h | 2024-07-24 08:00 | 2024-07-24 17:00 | 262 | Configuration Expert |
| 264 | 4.11.7 | Maintain Data and Setting for Treasury Management (Optional) | 8h | 2024-07-24 08:00 | 2024-07-24 17:00 | 263 | Business Process Expert; Configuration Expert |

Notes:
- 235: The purpose of this deliverable is to request the Development system and set up the related implementation projects in Central Business Configuration. / Workstream: Technical Architecture & Infrastructure / Tags: Transport Management
- 236: The purpose of this task is to request the SAP S/4HANA Cloud Development System. There are two tenants in the Development System: Customizing and Development. The 'IT Contact' makes the requests in SAP for Me and will then receive an email with the URL and Login instructions. Prerequisite: Receive SAP S/4HANA Cloud Starter System (Starter Customizing and Starter Development tenants) Procedure: Request the SAP S/4HANA Cloud Development Systems in SAP for Me via the SAP for Me - Dashboards > Systems & Provisioning > Provisioning accelerator. Locate the 'SAP S/4HANA Cloud Customizing tenant' in the ‘Provisioning’ section under ’Product Available for Provisioning' and click on 'Start Provisioning.' The Development tenant will be triggered automatically after Customizing tenant is provisioned successfully. The request will trigger the system provisioning, and an email will be sent to the 'IT contact' when the system is available. Procedure Note(s): SAP recommends not to request the SAP S/4HANA Cloud Development System during the upgrade window; the System can be requested before the start of the upgrade or after it is completed. Refer to the Upgrade and Maintenance Schedule - 3 System Landscape accelerator for a complete overview of the upgrade schedule of SAP S/4HANA Cloud. / Workstream: Technical Architecture & Infrastructure
- 237: The purpose of this task is to perform the initial configuration of the Customizing tenant, and trigger the system activation. After these tasks are complete, the system will be ready for project team access. The activities are guided and executed via SAP Central Business Configuration. Prerequisites: Starter System must be available, and Development System has been requested Completed task Conduct Project Quality Gate for Explore, including the following: Fit-to-standard Analysis completed Configuration definition completed Organizational Structure Defined Chart of Accounts defined Fiscal Year Variant defined Group Currency defined Procedure: Log on to the Project Experience in the SAP Central Business Configuration and create a project for the Customizing tenant. See section 'Selecting Your Project (Initial Logon)' in the Help - Project Experience accelerator for the detailed steps to complete the activity. Complete the SAP Central Business Configuration activities and milestones for setting up the Development System. See the " Implementation Project" section in the Help - Project Experience accelerator for additional information on completing the activities. While defining configuration values, please ensure that Organizational Structure, Fiscal Year Variant, Group Currency and Group Ledger are correct before triggering the activation. These values cannot be changed after activation. Below is a summary of the activities: Scoping Assign a Deployment Target Milestone Confirming Scoping is Completed Setup Org Structure Primary Finance Settings Milestone Completing the Scope and Organizational Structure Phase Procedure Note(s): When defining the initial scope or adding a new scope or country/region, it is recommended to limit the number of countries/regions to no more than five. Content from this scope must be processed and transported to Production before adding the next set of countries/regions. Check SAP Note 3151804 - Country Activation Guidance in Central Business Configuration for best practices. A Transport Request is created in Customizing Tenant of S/4HANA Cloud Development System upon completion of this set up. Task in the Transport Request is automatically released upon a successful consistency check performed in the background. In case of any error, support ticket will be automatically created for SAP Cloud Operations team to address with customer. The Transport Task will remain in status "Modifiable" and workspace in SAP Central Business Configuration will remain locked until issue is resolved. The Transport Task status will be set to "Released“ upon issue resolution and customer can then proceed with moving the transport request across systems. To avoid transport dependency issues, it is recommended that customer to release this initial transport request before carrying out further configuration activities. JSON file of your scope selection from Digital Discovery Assessment can be uploaded in Define Scope app. Reference the Importing Scope section under Scoping in Help - Project Experience accelerator. / Workstream: Technical Architecture & Infrastructure / Tags: Transport Management
- 238: The purpose of this task is to perform the initial configuration of the Development tenant, and trigger the system activation. After these tasks are complete, the system will be ready for project team access. The activities are guided and executed via SAP Central Business Configuration. Prerequisites: A starter System must be available, and Development System has been requested Completed task Conduct Project Quality Gate for Explore, including the following: Fit-to-standard Analysis completed Configuration definition completed Organizational Structure defined Chart of Accounts defined Fiscal Year Variant defined Group Currency defined Procedure: Logon to the Project Experience in the SAP Central Business Configuration and create a project for the Development tenant. See section 'Selecting Your Project (Initial Logon)' in the Help - Project Experience accelerator for the detailed steps to complete the activity. Complete the SAP Central Business Configuration activities and milestones for setting up the Development System. See the " Implementation Project" section in the Help - Project Experience accelerator for additional information on completing the activities. While defining configuration values, please ensure that Organizational Structure, Fiscal Year Variant, Group Currency and Group Ledger are correct before triggering the activation. These values cannot be changed after activation. Below is a summary of the activities: Scoping Assign a Deployment Target Milestone Confirming Scoping is Completed Setup Org Structure Primary Finance Settings Milestone Completing the Scope and Organizational Structure Phase Procedure Note(s): We recommend the customer to at least setup Org structure for the business process area(s) and add the scope items captured from task Detail Design for Developer Extensibility / Workstream: Technical Architecture & Infrastructure / Tags: Transport Management
- 239: The purpose of this deliverable is to receive the SAP S/4HANA Cloud Development system, prepare key user access, and adapt the Chart of Accounts prior to requesting the Test System. There are two tenants in the Development System: Customizing and Development. This deliverable supports the SAP S/4HANA Cloud without Employee Central (S4-EC). Please note: G/L account renumbering is only possible in the Development System before the first posting has been made in the production system. See Request Production System deliverable for more information. / Workstream: Technical Architecture & Infrastructure / Tags: Identity and Access Management, Transport Management
- 240: The purpose of this task is for the 'Initial Admin User' to receive the e-mails with the activation links for the Development System, access it, and create users. This process is followed twice: once for the Customizing tenant and once for the Development tenant. The Identity Authentication service is shared with the Starter System, and a new provisioning email will not be sent. The exception is if the 'Initial Admin User' has been changed after the Starter System activation, then the new Initial Amin User will be given administrative privileges and a new email will be sent. Prerequisite: Request the SAP S/4HANA Cloud Development System Set Up Customizing Tenant in SAP Central Business Configuration Set Up Development Tenant in SAP Central Business Configuration Procedure: Locate the provisioning email sent to the ‘Initial Admin User.’ Click on the access link (URL) provided (it is single sign-on enabled, and there is no password). Create users in the development system by following the instructions provided in the Help - Initial System Access to SAP S/4HANA Cloud accelerator. Procedure Note(s): For the SAP S/4HANA Cloud system, the initial user has administration rights. It can be used to create additional users with the same administration responsibilities. If the person receiving the cloud system emails (IT Contact) is incorrect, enter an incident under the component XX-S4C-OPR-SRV and Title 'Request update to the Contact Person IT.' In the text, please request an update to the IT Contact and Communication User. Only one person is assigned as an IT Contact. This person receives the system provisioning notifications and is the primary contact for the systems. Multiple people can be assigned as Communication Contacts. These people receive general communications related to the SAP S/4HANA Cloud system. These assignments can be requested via the SAP for Me - Manage Cloud Service Availability Notifications accelerator. For additional information on the cloud product availability and maintenance, refer to the Cloud Availability Center & Cloud System Notification Subscriptions accelerator. The SAP S/4HANA User Name in the Development System must match the User Name in the Starter System (if existing) for access to both. These should match the Login Name in the Identity Authentication service. The user name can be changed manually after the upload in any of the systems if required. The Person ID and User ID are internal numbers and do not need to match the User Name. The app IAM Information System can be used to determine the existing roles that allow access to specific apps. To find the roles, set the Main Entity = Application, enter the app name in the Search field, and press 'Go.' / Workstream: Technical Architecture & Infrastructure / Tags: Parallel Project Line
- 241: The purpose of this task is to request the Test System. The 'IT Contact' makes the requests in SAP for Me and will then receive an email with the URL and Login instructions. / Workstream: Technical Architecture & Infrastructure / Tags: Transport Management
- 242: The purpose of this task is to request the Test System via Accel ID = S4H_888. It is recommended to request the Test System only when transports are ready to be released from the Development System and Imported to the Test System for testing. The Test System will be provisioned without the initial configuration. Before performing other manual rework in the Test System, the initial configuration must be released from the Development System to the Test System. Prerequisite: Receive SAP S/4HANA Cloud Development System(Customizing and Development tenants) Procedure: Request the SAP S/4HANA Cloud Test System in SAP for Me via the SAP for Me - Dashboards > Systems & Provisioning > Provisioning accelerator. Locate the 'SAP S/4HANA Cloud Test System' n the ‘Provisioning’ section under ’Product Available for Provisioning' and click on 'Start Provisioning.' The request will trigger the system provisioning, and an email will be sent to the 'IT contact' when the system is available. / Workstream: Technical Architecture & Infrastructure / Tags: Transport Management
- 243: The purpose of this deliverable is to receive the SAP S/4HANA Cloud Test system, prepare key user access and trigger the transport of configuration from the Development System to the Test System. This deliverable supports the SAP S/4HANA Cloud without Employee Central (S4-EC). / Workstream: Technical Architecture & Infrastructure / Tags: Identity and Access Management, Transport Management
- 244: The purpose of this task is for the 'Initial Admin User' to receive the Test System provisioning e-mail with the details to access it, perform the initial configuration transport to the Test System, and create users. The Identity Authentication service is shared with the Development System, and a new provisioning email will not be sent. The exception is if the Initial Admin User has been changed after the Starter System activation, then the new Initial Admin User will be given administrative privileges and a new email will be sent. Prerequisite: Request the SAP S/4HANA Cloud Test System Review task Manage Transports Procedure: Locate the provisioning email sent to the ‘Initial Admin User’ and access the System with the information provided in the email. Perform the initial configuration transport from the Customizing Tenant of the Development System to the Test System. The procedure is required for customers who just received their initial Test System. The transport request must be released from the Customizing Tenant of the Development System and imported to the Test System before the Test System can be used. Follow the instructions in the Help - Initial System Access to SAP S/4HANA Cloud accelerator for step-by-step instructions on the initial transport to Test System. Create users in the Test System. Refer to the instructions in the Help - Initial System Access to SAP S/4HANA Cloud accelerator for user creation in the Test System. Additional videos and templates are in the accelerator section. Procedure Note(s): For the SAP S/4HANA Cloud system, the initial user has administration rights. It can be used to create additional users with the same administration responsibilities. SAP recommends triggering the initial import as soon as possible within the timelines compatible with the downward compatibility rule. Transport released in the Development System in version N should be imported, at the latest, before the Test System is upgraded to version N+2. Please refer to the task Manage Transports in the Realize phase under the deliverable Execution Monitoring of the Project. There are two tenants in the Development System: Customizing and Development. From the Development tenant in the Development system, no transport of customizing and key user extensibility objects is possible. A default customizing transport request is technically required but not used to transport content to any other system. The initial transport from SAP Central Business Configuration can’t be recreated in another release version. SAP strongly advises customers to import this initial transport, at the latest, after one release upgrade. In case of any errors during the initial configuration deployment or the transport request release, a support ticket will be automatically created for the SAP Cloud Operations team. If that is the case, the transport tasks will remain in status ‘Modifiable,’ and the SAP Central Business Configuration workspace will remain locked until the issue is resolved. The transport task status will be set to ‘Released’ upon issue resolution, and the release and import of the transport request can proceed. For customers using SAP Cloud ALM, the Feature app serves as a tool to consolidate all related configuration and extension transports that can be transported together. The Feature Traceability functionality within Analytics offers an overview of the deployment progress. If the person receiving the cloud system emails (Initial Admin User) is incorrect, enter an incident under the component XX-S4C-OPR-SRV and Title 'Request update to the Contact Person IT.' In the text, please request an update to the IT Contact and Communication User. Only one person is assigned as an IT Contact. This person receives the system provisioning notifications and is the primary contact for the systems. Multiple people can be assigned as Communication Contacts. These people receive general communications related to the SAP S/4HANA Cloud system. These assignments can be requested via the SAP for Me - Manage Cloud Service Availability Notifications accelerator. For additional information on the cloud product availability and maintenance, refer to the Cloud Availability Center & Cloud System Notification Subscriptions accelerator. The SAP S/4HANA User Name in the Test System must match the User Name in the Starter System (if existing) for access to both. These should match the Login Name in the Identity Authentication service. The user name can be changed manually after the upload in any of the systems if required. The Person ID and User ID are internal numbers and do not need to match the User Name. The app IAM Information System can be used to determine the existing roles that allow access to specific apps. To find the roles, set the Main Entity = Application, enter the app name in the Search field, and press ‘Go.’ Business Roles can be downloaded and uploaded to different systems eliminating redundant maintenance. / Workstream: Technical Architecture & Infrastructure / Tags: Parallel Project Line
- 245: The purpose of this deliverable is to request the Production System. This should occur only after the initial configuration is made available in the Test System. After the Production System is delivered, the configuration between both the Test System and the Production System are kept synchronized using the transport process. / Workstream: Technical Architecture & Infrastructure / Tags: 2nd Wave Project / Rollout Project
- 246: The purpose of this task is to review and determine if there is a need for an SAP S/4HANA Cloud Public Edition, sandbox tenant. The SAP S/4HANA Cloud Public Edition, sandbox tenant, is a standard, non-productive, and stand-alone tenant provisioned with SAP sample data by choice. This single-system environment is isolated from the customer's Development, Test, and Productive systems making it ideal for evaluating and testing application configurations and add-ons. In addition, new scope items can be activated and explored. The sandbox tenant provides an alternative environment for fit-to-standard workshops after the Starter system has been decommissioned and is highly recommended to support expansion of countries, functionality or scope items after the initial go live. The sandbox tenant requires an additional subscription. Procedure: Review the SAP S/4HANA Cloud Public Edition, sandbox tenant Factsheet (3-system landscape) accelerator to become enabled on the tenant and determine if it meets the customer's needs. Determine if the use case, the system specifications, and the add-ons are enabled to meet the customer’s needs. Become enabled on the conditions, operations procedures, and considerations to understand the system and process behavior. Order the SAP S/4HANA Cloud Public Edition, sandbox tenant through an SAP representative or partner as required. Request the SAP S/4HANA Cloud Public Edition, sandbox tenant via SAP for Me once the subscription has been signed and processed. Access the SAP for Me - Dashboards > Systems and Provisioning > Provisioning accelerator. Locate the 'SAP S/4HANA Cloud Public Edition, sandbox tenant' in the ‘Provisioning’ section under ’Product Available for Provisioning' and click on ‘Start Provisioning.’ The request will trigger the tenant provisioning, and an email will be sent to the 'IT contact/initial admin user' when the tenant is available. Locate the provisioning email sent to the ‘IT Contact’ and click on the access link (URL) provided (it is a single sign-on enabled, and there is no password needed). / Workstream: Technical Architecture & Infrastructure / Tags: 2nd Wave Project / Rollout Project
- 247: The purpose of this task is to request the Production System via Accel ID = S4H_888. Once the system is requested, the SAP S/4HANA Cloud Starter System will be automatically decommissioned by SAP 30 calendar days after the SAP S/4HANA Cloud Production System provisioning email is sent. SAP for Me will prompt you to acknowledge the SAP S/4HANA Cloud Starter System will be decommissioned once the Production System is triggered. It is important to understand that this action cannot be undone, so ensure that all project activities requiring the Starter System can be completed by the planned decommission date. The Production System should be requested before the Development System is on two releases prior, especially when transports are released in the buffer waiting for import. There are restrictions on how long a transport can remain in the buffer before it is imported into the Test or Production systems. Transports created in Development System two releases prior can’t be imported into the Production System. The Production System will be provisioned without the initial configuration. Before performing other manual rework in the Production System, the initial configuration must be released from the Development System to the Test System and successfully forwarded into the Production System. See the ‘Managing the Initial Content Transport and the Custom Business Roles Transport’ section of Help - Initial System Access to SAP S/4HANA Cloud from the Accelerators for details. Prerequisites: Receive SAP S/4HANA Cloud Test System Configuration transported from Development System to Test System Procedure: Request the SAP S/4HANA Cloud Production System in SAP for Me via the SAP for Me - Dashboards > Systems & Provisioning > Provisioning accelerator. Locate the 'SAP S/4HANA Cloud Production System' in the ‘Provisioning’ section under ’Product Available for Provisioning' and click on 'Start Provisioning.' The request will trigger the system provisioning, and an email will be sent to the 'IT contact' when the system is available. / Workstream: Technical Architecture & Infrastructure / Tags: Transport Management
- 248: The purpose of this deliverable is to access the Production System, set up the initial user access and transport configuration into the Production System. / Workstream: Technical Architecture & Infrastructure / Tags: Identity and Access Management
- 249: The purpose of this task is for the 'Initial Admin User' to access the Production System, forward initial configuration from Test System to the Production System before using the system, and create users. For the initial transport to the Production System, his initial transport into the Customizing Tenant of Development System from SAP Central Business Configuration can’t be recreated in another release version. SAP strongly advises customers to import this initial transport, at the latest, after one release upgrade. Prerequisite: Request and receive Production System Procedure: Locate the provisioning emails sent to the ‘Initial Admin User' and access the Production System via the link (URL) provided (it is single sign-on enabled, and there is no password). Locate the single activation email for the Identity Authentication service and reset the Identity Authentication Service Administration Console password. Forward the initial configuration from the Test System to the Production System. This transport must be done before the Production System can be used. The procedure is required for customers who just received their initial Production System and need to adapt the original configurations made in the Test System. Follow the step-by-step guide in the Help - Initial System Access to SAP S/4HANA Cloud accelerator. Create users in the Production system by following the instructions in the Help - Initial System Access to SAP S/4HANA Cloud accelerator. Additional videos and templates are in the accelerator section. For login issues, please create an incident using the component XX-S4C-OPR-INC. Procedure Note(s): For the SAP S/4HANA Cloud system, the initial user has administration rights. It can be used to create additional users with the same administration responsibilities. If the Production System is integrated with SAP SuccessFactors Employee Central, users are created in SAP SuccessFactors Employee Central and transferred to the SAP S/4HANA Cloud. However, the business roles must still be assigned in the SAP S/4HANA Cloud. The app IAM Information System can be used to determine the existing roles that allow access to specific apps. To find the roles, set the Main Entity = Application, enter the app name in the Search field, and press ‘Go.’ Business Roles can be downloaded and uploaded to different systems eliminating redundant maintenance. Additional help can be found in the SAP S/4HANA Cloud Help Portal accelerator. The changes to the standard chart of accounts and organizational structure will be transported into the Production System. For customers using SAP Cloud ALM, the Feature app serves as a tool to consolidate all related configuration and extension transports that can be transported together. The Feature Traceability functionality within Analytics offers an overview of the deployment progress and can be used to track if the transport is already assigned to a feature. / Workstream: Technical Architecture & Infrastructure
- 250: The purpose of this deliverable is the development of readily-accessible, easily digestible and end-user specific enablement content. This helps to facilitate and ensure an easy and effective adoption of solution knowledge and skills needed by the organizations end-users for higher system adoption and productivity. / Workstream: Solution Adoption / Tags: 2nd Wave Project / Rollout Project
- 251: The purpose of this task is to create a content development plan with defined roles and responsibilities for the developers creating the content. Content development should be monitored against the project deadlines. Procedure: Structure and divide the learning topics identified in the learning needs analysis report into the different learning modules. Analyze the suitability of different learning content types in terms of end-user needs, learning complexity and quantity. Content should reflect the business criticality of the role carrying out the work, process area and subjects covered, while focusing on the end-user experience. Define the review process and workflows for each piece of content. Review both Managing Content Development and Enablement Content Development Overview accelerator to comprehend how to recognize the crucial elements and prerequisites for creating enablement content. Create the content development plan with defined roles and responsibilities for the developers creating the content. Monitor development progress against project timelines: formally track review and sign-off for each piece of enablement content that is developed. / Workstream: Solution Adoption / Tags: 2nd Wave Project / Rollout Project
- 252: The purpose of this task is to undertake the learning enablement content design and development work with the clearly defined content development plan, a clear quality assurance process and to monitor against project timelines. Procedure: Review what existing in-product learning tutorials for SAP S/4HANA Cloud are relevant for the project. Identify which of these standard in-product learning tutorials should be customized to fit the project requirements. List the additional learning topics that will need to be created in addition to the standard tutorials. Identify and engage subject matter experts for business process knowledge transfer to the content developers. Deliver a workshop to the content designers and developers to introduce each deliverable template, branding and communications standards, the content review and final sign-off process and content publishing channel(s). Introduce the content development tracker to the team and explain how content development is tracked on a regular basis (to be determined by the Training Manager). Provide authoring tools, templates, and/or style guides to support the coherent look and feel of the learning enablement content. Adhere to branding standards and the organizational tone of voice. Adhere to the learning content review and sign-off process. Publish content to the agreed channels. Procedure Note(s): In-Product Tutorials are not available for all products. Additional product tutorials may have to be created based on the customer scope. / Workstream: Solution Adoption / Tags: 2nd Wave Project / Rollout Project
- 253: The purpose of this deliverable is to plan sprints iteratively and close upon completion of solution delivery. / Workstream: Analytics, Application Design and Configuration, Extensibility, Integration, Project Management / Tags: 2nd Wave Project / Rollout Project, Artificial Intelligence Technology, Hybrid Deployment (Two-Tier ERP), Identity and Access Management, Output Management, Transport Management
- 254: The purpose of this task is to iteratively plan the execution of a sprint. A clear set of features should be identified for solution realization from the central backlog of requirements from Fit-to-Standard workshops to enable defined target business processes. Conduct sprint planning meetings to set the scope and highlight dependency of work from different workstreams to ensure collaboration of project team members during the sprint. The goal of these sprints is to incrementally and iteratively build the solution capabilities captured in the backlog, test them and review their completion with the customer process owners (product owner in agile terminology). At the beginning of the sprint the project team runs a planning meeting during which, select item from the overall backlog item list taking into consideration of the priority of items and resource availability. For customer using SAP Cloud ALM, use Feature app in SAP Cloud ALM to capture the requirements and user stories to be realized in the sprint. Procedure: Conduct planning meeting to: Decompose each backlog item further to tasks that need to be completed during the sprint. These tasks may be configuration, coding, unit testing, data preparation, documentation and others. Validate the original estimates for each backlog item. Ensure all details in the backlog item so the team can complete the topic as efficiently as possible. In addition, ensure that team has sufficient capability to finalize all items in a timely basis. Ensure that the sprint schedule is in alignment with the backlog schedule for integrated applications as well. Project team should align on their respective responsibility and activities for the sprint. Business Process Experts should understand the business processes being enabled by the solution development carried out during the sprint and be prepared for testing Configuration Experts should plan to have one Default transport request to capture business process setting change s in a sprint. They should also plan for data and settings required for customizing to be maintained in respective system to be aligned with transportable settings. Extension Experts should plan to have one transport request for each feature that they are working on and align with other project team member (i.e. Configuration Expert, Analytics Expert, etc) to synchronize on the moving of developments across the system landscape that has dependencies. System Administrator should plan to make sure all related configuration and developments are moved across the system landscape consistently. For customer using SAP Cloud ALM, leverage the Feature app to track all related configuration and extension transports for the sprint scope. Procedure Note(s): Reference single and multi-country deployment accelerator on best practice. It is recommended to have a dedicated sprint for Upgrade. It is a good practice to move transport requests through entire system landscape upon completion of a sprint. / Workstream: Analytics, Application Design and Configuration, Extensibility, Integration, Project Management / Tags: 2nd Wave Project / Rollout Project, Artificial Intelligence Technology, Identity and Access Management, Industry Cloud Apps, Output Management, Transport Management
- 255: The purpose of the task is to execute the tasks that have been planned. Procedure: Keep track of the progress on the team board. The team board contains swim lanes showing the status of each backlog item and each task. Use boards on the wall and use the post-it notes to keep visual track of their progress. Regularly update the burn-down chart that is used to track the progress of completing the individual tasks and backlog items. Review the progress daily in the daily stand-up meeting. The daily stand-up meeting is not a project status meeting, but rather a session designed to help the team communicate the progress with each other. During the daily stand-up meeting the team members review the: Progress they have made since last meeting; Plans for activities and tasks until the next meeting Any issues of blockers that may prevent them from completing the tasks they are working on. Reference deliverables for sprint execution details in respective areas: Solution Configuration and New Scope Activation Integration Setup New Scope Activation Artificial Intelligent Analytics Identify and Access Extension Testing Procedure Note(s): Data migration, enablement content development and delivery, and cut over preparation are usually executed independent of a sprint and follows their own respective timeline in Realize phase. / Workstream: Analytics, Application Design and Configuration, Extensibility, Integration, Project Management / Tags: 2nd Wave Project / Rollout Project, Artificial Intelligence Technology, Identity and Access Management, Output Management, Transport Management
- 256: The purpose of this task is to close sprint with demo or solution walkthrough, a retrospective meeting and obtain formal acceptance and signoff of the sprint, if applicable. Procedure: Prepare and conduct the sprint demo meeting, where project team walks through the solution by demonstrating to the business owners or stakeholders the completed functionality. Seek acceptance of the completed features. During this meeting the business owner may request additional items to be added to the backlog. In case some features are not accepted they are brought back into the project backlog as requirement, properly prioritized and included in planning for next sprint. SCRUM Master organizes and facilitates the retrospective meeting for the team. Schedule the meeting shortly after the sprint demo meeting. Continuously improve the Scrum process using lessons learned from the sprint execution. Ask meeting participants to answer the following questions: What went well during the sprint? What do we want to preserve? What can be improved for the next sprint and how? Selects one or two improvement opportunities and put it into the backlog for the next sprint. This way the agile process gets improved in an incremental way and remains responsive to the changing environment of the project. Procedure Note(s): Solution walkthrough with business users, decisions makers prior to the close of the sprint is highly recommended. It ensures understanding of how solution will be used to run the business. / Workstream: Analytics, Application Design and Configuration, Extensibility, Integration, Project Management, Testing / Tags: 2nd Wave Project / Rollout Project, Artificial Intelligence Technology, Hybrid Deployment (Two-Tier ERP), Identity and Access Management, Parallel Project Line, SAP BTP Apps
- 257: The purpose of this deliverable is to complete the initial required configuration in SAP S/4HANA system based on the decisions made during the fit-to-standard analysis workshops. This configuration is required before transactions are executed in system. / Workstream: Application Design and Configuration / Tags: 2nd Wave Project / Rollout Project
- 258: The purpose of this task is to configure the tax solution in SAP S/4HANA Cloud if one of the following scenarios is relevant: Setting up US Jurisdictions Code Integration to an External Tax Package Adding Tax Code Time-Dependent Tax Calculation (TDT) Pro Rata VAT Registration for Indirect Taxation Abroad (RITA) Procedure: Setup Jurisdictions Code (For US Only) - The tax jurisdiction codes and related tax rates must be created in the system and assigned to location specific objects. See SAP note 2440096 for internal tax calculation restrictions. Follow the instructions in the Setup of Internal Tax Jurisdictions accelerator. Note that the Tax Jurisdictions setup must be performed prior to any other configuration or organizational structure extensions. Transport the change project to the P-System. Activate the Tax Jurisdiction in the P-System via the Import Tax Codes after Transport app. Integration to External Tax Partner SAP S/4HANA Cloud delivers internal tax calculation by default. For certain countries, you can switch to the external tax solution to work with an external tax partner. Please note that your tax solution is set up at the country level. It is not possible to run both the internal and external tax solutions for the same country. Tax calculation must be configured before extending any organizational structures. For the US, review the following: It is imperative that the information listed in SAP Notes and guides are understood prior to implementing the external solution. SAP note 2598888 for integration information for the external US tax calculation including the configuration guide for integration SAP_COM_0177. SAP note 2528016 with the current restrictions regarding external US tax calculation. The external US tax calculation in SAP S/4HANA Cloud and any reporting based on this calculation may not meet all the reporting requirements of US tax laws. All available tax APIs can be found in the SAP Business Accelerator Hub. Select the SAP S/4HANA Cloud tile and search for “External Tax”. The tiles for the six APIs are displayed. Please note that "External Tax - Mass Redefine Tax Jurisdiction Code" and "External Tax - Get Changed Jurisdiction Code List" are optional services that are used for the mass update feature. You need to integrate these two services if you wish to use the mass update feature. The mass update consists of two service calls that run in sequence. The first, the “Get Changed Jurisdiction Code List” service, communicates with your tax partner to retrieve a table of tax jurisdiction codes that have changed within a specified period. The second, the “Mass Redefine Tax Jurisdiction Code” service, sends your tax partner a list of address information for those items where there were changes and your partner’s system returns a list of updated jurisdiction codes. This feature can be used for periodic maintenance. The certified tax partners are listed in the SAP Certified Solutions Directory accelerator and tax applications available can be found in the SAP App Center accelerator. See the Setup Guide for External Sales and Use Tax Calc (0177) accelerator for additional setup procedures. Prerequisites are an activated SAP S/4HANA Cloud system and SAP Business Technology Platform, corresponding certificates have been uploaded, and administrator access to SAP S/4HANA Cloud and CPI. For Brazil, review the following: External tax calculation for Brazil is supported by SAP S/4HANA Integration with External Tax Calculation Engine. A subscription to your preferred tax partner engine is also required. All available tax APIs can be found in the SAP Business Accelerator Hub. From the SAP Business Accelerator Hub, select product “SAP S/4HANA Cloud” tile. Go to “API” tab and select “SAP S/4HANA Integration with External Tax Calculation Engine” tile below “Packages” on the page. For Brazil, select “Tax Determination and Calculation via Integration Flow (Brazil)“. The certified tax partners are listed in the SAP App Center accelerator. For Adding Tax Codes Verify that additional tax codes are supported for your country/region by reviewing the list in the Expert Configuration for Tax Codes Common template (if applicable). If your country/region is not supported, please see the SAP Customer Influence Council task. In countries where time-dependent tax calculation (TDT) is active, certain tax rates are effective within user-specified timeframes to allow you to adapt the current or planned changes to tax rates (see topic Time-Dependent Taxes in Help - Tax Processing). Review the standard SAP S/4HANA Cloud delivered tax codes using the Display Tax Information per Country app (no tax rates are displayed for Canada and US) and determine the additional tax codes needed. Fill out the Expert Configuration for Tax Codes template with the additional tax codes. Use the Expert Configuration for Tax Codes Common template. Create an Incident/Service Request with the Subject ‘Request expert configuration for new tax code’, Description ‘Please perform expert configuration per the attached document’ and component XX-S4C-SRV-CON. Once expert configuration is complete, DO NOT CLOSE SERVICE REQUEST. The incident will be needed to activate the change in Production. Review the new tax codes using the Display Tax Information per Country app (no tax rates are displayed for Canada and US) and check, that the codes are created as requested. Perform the required tax determination in Sales and Purchasing business areas. Test all your business processes which are tax relevant with new tax codes. Some master data and configuration may be required to execute a test. Using the previous Service Request, request that the service center transports and activates the new Tax Codes in the P-System. If the request was closed, create a new request. For Countries Where Time-Dependent Tax Calculation (TDT) is in Scope If you have not previously activated the target country in SAP S/4HANA Cloud, time-dependent taxes are active as soon as you activate that target country. If you have previously activated the target country in SAP S/4HANA Cloud, then you need to migrate your existing custom-created and transactional data. Follow the steps described in the topic Activating Time-Dependent Taxes under the Help - Tax Processing accelerator. For Countries Where Pro Rata VAT is in Scope Create pro rata tax codes that can trigger the automatic splitting of deductible and non-deductible portion (Configuration Step 101016 - Define Tax Codes for Sales and Purchases) Define pro rata coefficients (Configuration Step 103619 - Define Pro Rata Coefficients) Based on this configuration, the system can then automatically split the input VAT into deductible and non-deductible portions when an incoming invoice is posted, using the valid coefficient for the company code and the tax code on the relevant date. The coefficient represents the portion of the input tax that can be deducted. For example, if the pro rata coefficient is 90% and the standard VAT rate is 21%, then 18.9% (21% × 90%) is deductible and 2.1% (21% × 10%) is non-deductible. Registration for Indirect Taxation Abroad (RITA) enables indirect tax calculation and reporting for multiple countries/regions within a single legal entity. To activate: Consider to the Prerequisites Prepare and schedule RITA migration, following the steps as described in help. Migration uses configuration item(s) with guided statuses to reduce complexity. You can run tests in your Q system for migration in status 4. Refer to Verify and Complete the Migration to RITA. When you decide to use the solution productively, open a ticket so that SAP services can complete the migration. Once completed, configuration can be initiated as instructed here. Procedure Note(s): / Workstream: Application Design and Configuration / Tags: 2nd Wave Project / Rollout Project, Localization
- 259: The purpose of this task is to adapt and confirm your Chart of Accounts that was defined in the Explore phase. The Chart of Accounts (CoA), a list of all G/L Account master records, is part of the pre-delivered SAP Best Practices reference content. YCOA is the global standard operating CoA in SAP S/4HANA Cloud and it is assigned to all company codes pre-delivered by SAP. Chart of Account renumbering is only needed when there are changes needed for standard pre-delivered Chart of Accounts (YCOA, YGR1, pre-delivered Local CoAs). If no changes are required, and you want to keep the SAP Best Practices account IDs and descriptions, the only requirement is to confirm the CoA settings provided. Please note: G/L Account renumbering is only possible for the G/L Accounts where postings do not exist in Production System, G/L account renumbering can only be executed in a Devlopment System. Prerequisites: Development System is provisioned. SAP Central Business Configuration, set to the ‘Product-Specific Configuration’ phase. During the execution of the renumbering via Convert Renumbered G/L Accounts app only the configuration expert is logged on to the Development System. Procedure: Access SAP Central business Configuration > Business Processes Configuration > Renumber G/L Accounts to specify mappings for G/L Accounts that require renumbering. Use the Convert Renumbered G/L Accounts app to convert the values for G/L accounts based on the mappings defined. Procedure Note(s): The G/L Account renumbering can be repeated multiple times as long as no postings are entered in the Production System. To access the Chart of Accounts Determination templates (Global and Local), use the SAP Signavio Process Navigator accelerator and follow the path provided: SAP Best Practices for SAP S/4HANA Cloud > select Country localization in ‘Version’ > navigate to the ‘Accelerators’ section> select ‘Account determination (local)’ or ‘Account determination (global)’ under the ‘Implementation’ grouping. See Chart of Accounts Configuration – Overview accelerator for more information on the overall process for configuring Chart of Accounts. See the Help - Chart of Accounts Maintenance: Overview accelerator and navigate to the 'Adapting the Standard Chart of Accounts to Your Needs' section for more information on renumbering G/L Accounts or defining an Account Group. For more information on the special procedure for Chart of Accounts maintenance during upgrade, new scope item activation, or country extension see Help - Chart of Accounts Maintenance - Special Cases accelerator. / Workstream: Application Design and Configuration / Tags: 2nd Wave Project / Rollout Project
- 260: The purpose of this task is to maintain the profit center configuration. This is required to execute finance related transactions. The creation of the profit center master data must be executed in the Development, Test and Production System. This setup must be completed before posting transactions to the system. If choose not to use the value in pre-delivered customizing, make sure to update and transport the new setting in addition to maintaining the master data in respective systems. Apps Used: Manage Profit Center Groups Manage Profit Centers SAP Business Roles Template Required: SAP_BR_DIVISION_ACCOUNTANT SAP_BR_BPC_EXPERT Procedure: Use the Manage Profit Center Group app to: Create a Profit Center Group 'YBPH' as profit center Standard Hierarchy. Maintain the standard hierarchy group by creating additional group if needed. Use the Manage Profit Centers app to create all profit centers For automatic document splitting, the default profit center is defined as YB900 in S/4HANA Cloud. Additionally, in 'SAP Central Business Configuration > Business Process Configuration > Assign Default Profit Center to Accounts', default profit center can be defined for each company code and G/L account or G/L account interval. Make sure all profit centers used in configuration are created. See the Create Profit Center (BNH) accelerator for details. Procedure Notes: Standard Hierarchy ‘YBPH’ is assigned to pre-configured controlling area ‘A000’. If you do not want to use the SAP’s default value, make sure to maintain assignment of the new value in ‘SAP Central Business Configuration > Configuration Activities > Define Profit Center Standard Hierarchy in Controlling Area’. Reference task Transport Configuration to move the setting to Test and Production System. If you do not want to use the SAP's default value YB900 for automatic document splitting, make sure to maintain the new value in ‘SAP Central Business Configuration > Business Process Configuration > Edit Constant for Nonassigned Processes’. Reference task Transport Configuration to move the setting to Test and Production System. / Workstream: Application Design and Configuration / Tags: 2nd Wave Project / Rollout Project
- 261: The purpose of this task is to provide guidance for cloud cost center groups in SAP S/4HANA Cloud. The creation of cost center group master data must be executed in the Development, Test and Production System. Procedure: Create cost center master data and assignment to the standard hierarchy using the Manage Cost Center app. Cloud default content is always shipped with Standard Hierarchy 0001. Standard Hierarchy 0001 is the default structure and during cost center master data creation all cost centers get assigned to 0001 or any other group from this hierarchy. The Standard Hierarchy top node 0001 is always fixed, but lower level cost center groups can be added using the Manage Cost Center Groups app. Reference the Create Cost Center and Cost Center Group (BNM) accelerator for additional information. Create Alternative Cost Center Hierarchy using the Manage Cost Center Group app. Customers can create an alternative cost center hierarchy as this is freely defined/maintained by customers and any lower level groups can be assigned. Each cost center must be specifically added to your defined alternative cost center hierarchy via the Manage Cost Center Group app. The recommended example structure is shown below but others are possible: Top Level: A000 (controlling area) Second Level: company code Third level: further grouping by functions/location (ex. Finance/ Admin etc.) Fourth level: individual cost centers Repeat the process in the Production System. The setup is master data and thus cannot be transported. / Workstream: Application Design and Configuration / Tags: 2nd Wave Project / Rollout Project
- 262: The purpose of this task is to confirm values for the data takeover date, the status, and the document type for entering legacy assets into Asset Accounting in SAP S/4HANA Cloud. This confirmation is a mandatory step after initial activation and must be completed before posting transactions, in Asset Accounting, to the system. The takeover date defines the current fiscal year and the last closed fiscal year in Asset Accounting. It is critical for system processing, as it identifies the point in time that asset values are loaded and is usually the prior year end day (assuming you only want to mention the Transfer at End of Fiscal year). For example, if the system is in FY-2019 and the company is on a standard calendar Fiscal Year, the TAKEOVER DATE is 12/31/2018. Caution - This implies the loading of legacy assets is as of the Year End 2018. These settings must be executed in the Development, Test and Production Systems. Apps Used: Make Company Code Settings (Asset Accounting-Specific) SAP Business Roles Template Required: SAP_BR_AA_ACCOUNTANT Procedure: Use the Make Company Code Settings (Asset Accounting-Specific) app to set values for the data takeover date, the status, and the document type for entering legacy assets. Open the Make Company Code Settings (Asset Accounting-Specific) app. The Display Settings for Company Code in Asset Accounting screen is displayed. To switch between change and display mode, choose Change/Display. Select your company code on the left side of the screen and choose Select Company Code. Choose the General Settings tab. Check the status for your Company. The General Information tab shows your Company Code settings. The Company Code Status should be “For Testing.” In the Legacy Data Transfer section, check or change the following entries (if required, create a new legacy transfer segment first by choosing Create Legacy Transfer Segment): Transfer Date: set this date to the last day of the Prior Fiscal Year End (for the Transfer Date value, this is usually a year end date for a prior year). If you are instructed to use a mid-year date, this would be a month-end date. The date should always move forward (do not change it backward). Legacy Data Transfer Status: set this status to Ongoing or Ongoing (Other Postings Allowed). Document Type: set this to UE – Data Transfer. For the Legacy Data Transfer Status value, you have four options: In Preparation: The system allows incomplete customizing settings for the legacy data transfer (for example, the document type for posting of the legacy data transfer can be missing). Ongoing: Only legacy data transfer postings are permitted (for example, other types of postings, acquisition, retirements are not permitted). Ongoing (Other Postings Allowed): Both legacy data transfer postings and other postings are permitted. This status makes sense when you perform further legacy data transfers in a company code that is already productive. Completed: The legacy data transfer is completed. Legacy Data Transfer postings are not allowed and you are not allowed to create legacy assets. After the legacy data transfer is completed set the Legacy Data Transfer Status to Completed. Before making any postings in Asset Accounting in your Production System, repeat the above steps to confirm values for data the takeover date, the status, and the document type for entering legacy assets already done in the Development System. / Workstream: Application Design and Configuration / Tags: 2nd Wave Project / Rollout Project
- 263: This task is only required for implementations where the SAP S/4HANA Cloud customer has chosen to configure their own specific Fiscal Year variant and not adopt the standard K4 or one of the pre-delivered Fiscal Year Variants. The purpose of this task is to configure the customer specific Fiscal Year Variant (FYV), that has the ID SZ, according to the business requirements. The Fiscal Year Variant definition is required to define the relationship between the calendar year and your fiscal year. Fiscal Year Variants specify the number of periods and the start and end date of the fiscal year. This setup must be completed before posting transactions to the Test System and the Production System. Prerequisites: SZ (configurable template) has been chosen as the corporate FYV using the Fiscal Year Variant configuration in the Test System during the pre-activation setup. No journal entries have been posted in the Test System and the Production System. Apps Used: Depreciation Key: Display Details Configuration Used: Maintain Fiscal Year Variants SAP Business Roles Template Required: SAP_BR_BPC_EXPERT Procedure: Execute the desired Fiscal Year Variant configuration, see the Fiscal Year Variant Implementation – Overview accelerator for additional procedure steps. / Workstream: Application Design and Configuration / Tags: 2nd Wave Project / Rollout Project
- 264: The purpose of the task is to maintain settings and data required before start testing and using applications of Treasury Management in respective systems. This includes Development Customizing Tenant for initial unit tests, Test System for integrated business process tests, and Production System upon completion of a sprint for productive use. It is very common that transportable customization settings have dependency to these setting and data maintained directly in respective systems, and vice versa. Pre-requisite: Optional scope items are requested and activated. See task Activate New Scope or Country/Region for details. Procedure: Create/Import Banks and Bank Accounts for Cash Management processes. Before using cash management, set up the bank and bank account master data using Manage Banks and Manage Bank Account app. The set up must be done either manually or via Excel import (bank accounts). Once house banks and house bank accounts are maintained, the respective standing instructions can be assigned via the business partners. Maintain setting for front office/back office related processes: Assign role counterparty (TR0151 – Counterparty) using Maintain Business Partner app. Within this role the company-code dependent settings must be maintained and the authorizations for the relevant product and transactions type must be allowed. Otherwise, it is not possible to enter a transaction with a business partner. Following Business Roles are required to use the app: SAP_BR_TREASURY_SPECIALIST_BOE, SAP_BR_BUPA_MASTER_SPECIALIST. Securities Master Data like Class Master Data (Manage Security Classes - FWZZ) must be created in respective system before entering security transactions. The same approach is necessary for the Securities Account (Maintain Securities Account – TRS_SEC_ACC) to manage and value your positions in the securities area. You can only create a securities account once you have defined the depository bank (TR0152 – Depository Bank) as a business partner. Prerequisite: the relevant business partners must be created and additionally the respective role (TR0150 – Issuer) must be assigned. Apps used: Manage Securities Classes, Manage Securities Accounts Business Roles Required: SAP_BR_TREASURY_SPECIALIST_BOE Correspondence Master Data: If the Correspondence Framework is being used, master data is required. Therefore, the following settings must be maintained in respective systems: Definition of Fixing References for the confirmation of NDFs using SWIFT MT300 (FTR_FIX_DEF) Definition of Values for Expiry Time for FX options (FTR_EXPIRY_TIME_DEF) Assign BIC (Bank Identifier Code) and External Securities Acc. ID to Business Partner (FTR_BP_BIC) Assign Business Partner Group and Profiles (FTR_INT_ASSIGN & FTR_EXT_ASSIGN) Traders and Trader Authorizations: After you have defined traders in your system directly you can use Define User Data app to assign the traders to users, such as users in role Treasury Specialist - Front Office. Using the Manage Trader Authorizations app, you can restrict the transactions a trader may conclude to the individual values. Additionally, the maintenance of the transaction authorization needs to be done on every system individually via Fiori App Manage Trader Authorizations or TBT1. Maintain following data and setting for Risk Management related functionalities. Definition of Time Pattern for Hedging Areas: The time patterns that you define are relevant for the target quota table of the hedging area. These settings are necessary for the Hedge Management Reporting via the Hedge Management Cockpit. This information is required to be maintained on each system directly (TOE_TIME_PATTERN). Definition of Hedging Areas: The hedging area is an entity that represents a section of your hedging policy. In the hedging area, you define the level of granularity with which you want to monitor your foreign exchange risk. You also specify in the hedging area which exposures and hedging instruments are relevant for the hedging area (TOE_HEDGING_AREA). The hedging area is the basic master data of Hedge Management reporting and needs to be maintained directly in each system. It controls the execution of the Hedge Management Cockpit. Market Data: Market data can be transferred to the system from a file interface or via real-time data feed. You can use the function for market data transfer from spreadsheets. In addition to the backend functions, you can also use the SAP Fiori Launchpad to access the Import Market Data app for the data transfer, and other apps for the manual entry. Dependent on your decision to import the respective market data, the import needs to be done before entering a transaction to have the relevant market data available. Apps used: Import Market Data, Import Foreign Exchange Rates, Request Current Market Data – Data feed Business Roles Required: SAP_BR_TREASURY_SPECIALIST_BOE Perform initial activation steps: Initializing Cash Management: This activity is to set up transactional data that will be used by Cash Management applications. SAP S/4HANA Finance for cash management consumes data from the One Exposure from Operations table (database table FQM_FLOW). It contains cash management data such as memo records, and data from other components like accounting, end-of-day bank statements, TRM, CML, FI-CA, and integrated data from remote systems. To use SAP S/4HANA Finance for cash management, perform the following data setup activities: Build key information in accounting documents (database table BSEG) Load data into One Exposure from Operation Load data from Treasury and Risk Management (TRM), Loans Management (FS-CML), Contract Accounts Receivable and Payable (FI-CA), and integrated remote systems, into the One Exposure from Operations hub. Initializing Parallel Valuation Areas: The initialization process to generate new valuation areas in the Treasury subledger (Treasury Ledger) must be done in all system directly, otherwise it is not possible to enter new transactions (TPM_INITIALIZE). / Workstream: Application Design and Configuration / Tags: 2nd Wave Project / Rollout Project

| ID | WBS | Task | Duration | Start | Finish | Predecessors | Resources |
| --- | --- | --- | --- | --- | --- | --- | --- |
| 265 | 4.12 | **Integration Setup in the Test System** | 0d | 2024-07-24 08:00 | 2024-07-24 17:00 | 177 |  |
| 266 | 4.12.1 | Set Up Integrations in the Test Tenant | 8h | 2024-07-24 08:00 | 2024-07-24 17:00 | 244 | Integration Implementation Expert |
| 267 | 4.13 | **Solution Configuration** | 0d | 2024-07-24 08:00 | 2024-07-24 17:00 | 257 |  |
| 268 | 4.13.1 | Configure Additional Organizational Entities | 8h | 2024-07-24 08:00 | 2024-07-24 17:00 | 263 | Configuration Expert |
| 269 | 4.13.2 | Maintain Additional G/L Accounts | 8h | 2024-07-24 08:00 | 2024-07-24 17:00 | 268 | Configuration Expert |
| 270 | 4.13.3 | Configure SAP S/4HANA Cloud | 8h | 2024-07-24 08:00 | 2024-07-24 17:00 | 269 | Configuration Expert |
| 271 | 4.13.4 | Request Expert Configuration | 8h | 2024-07-24 08:00 | 2024-07-24 17:00 | 270 | System Administrator; Configuration Expert |
| 272 | 4.13.5 | Request the IFRS 15 “Bundling Functionality” (Optional) | 8h | 2024-07-24 08:00 | 2024-07-24 17:00 | 271 | System Administrator; Configuration Expert |
| 273 | 4.13.6 | Enable Data Protection and Privacy Features | 8h | 2024-07-24 08:00 | 2024-07-24 17:00 | 272 | Configuration Expert |
| 274 | 4.13.7 | Setup Output Management | 8h | 2024-07-24 08:00 | 2024-07-24 17:00 | 268 | System Administrator; Configuration Expert; Output Management and Forms Expert |
| 275 | 4.13.8 | Verify Configuration with Business Process Requirements | 8h | 2024-07-24 08:00 | 2024-07-24 17:00 | 273, 274 | Business Process Expert |
| 276 | 4.13.9 | Transport Configuration | 8h | 2024-07-24 08:00 | 2024-07-24 17:00 | 275 | System Administrator; Configuration Expert |
| 277 | 4.13.10 | Manage Settings in Test / Production System | 8h | 2024-07-24 08:00 | 2024-07-24 17:00 | 276 | Configuration Expert |
| 278 | 4.14 | **New Scope Activation** | 0d | 2024-07-24 08:00 | 2024-07-24 17:00 | 267 |  |
| 279 | 4.14.1 | Verify Requirements for New Country/Region | 8h | 2024-07-24 08:00 | 2024-07-24 17:00 | 275 | Configuration Expert |
| 280 | 4.14.2 | Set Up Exchange Rates for New Country/Region | 8h | 2024-07-24 08:00 | 2024-07-24 17:00 | 279 | Configuration Expert |
| 281 | 4.14.3 | Activate New Scope or Country/Region | 8h | 2024-07-24 08:00 | 2024-07-24 17:00 | 280 | Configuration Expert |
| 282 | 4.14.4 | Revise Business Roles and Business Catalogs | 8h | 2024-07-24 08:00 | 2024-07-24 17:00 | 281 | System Administrator |
| 283 | 4.15 | **Release and Update Cycles for SAP S/4HANA Cloud** | 0d | 2024-07-24 08:00 | 2024-07-24 17:00 | 224 |  |
| 284 | 4.15.1 | Evaluate New Functionality | 8h | 2024-07-24 08:00 | 2024-07-24 17:00 | 226 | Business Process Expert |
| 285 | 4.15.2 | Review and Process Hotfix Collection | 8h | 2024-07-24 08:00 | 2024-07-24 17:00 | 226 | System Administrator |
| 286 | 4.15.3 | Review Reports for Release Updates | 8h | 2024-07-24 08:00 | 2024-07-24 17:00 | 285 | Analytics Expert |
| 287 | 4.15.4 | Evaluate and Activate Feature from Continuous Delivery | 8h | 2024-07-24 08:00 | 2024-07-24 17:00 | 226, 281 | System Administrator |
| 288 | 4.15.5 | Prepare and Process Upgrade | 8h | 2024-07-24 08:00 | 2024-07-24 17:00 | 226 | Business Process Expert; System Administrator; Extensibility Expert |

Notes:
- 265: The purpose of this deliverable is to setup the integration in the Test system. Some integrations have prerequisites that need to be completed before the integration is setup. In case you chose to use the Cloud Integration Automation Service follow the instruction of the Service. / Workstream: Integration / Tags: 2nd Wave Project / Rollout Project, Hybrid Deployment (Two-Tier ERP)
- 266: The purpose of the task is to set up standard and customer driven integrations in the Test Tenant. Prerequisites: The integration scenarios has been identified using SAP Signavio Process Navigator and documented in the accelerator Integration Scenario and API List in the task ‘Determine Scenario Options for Integrations’ The Setup Instructions for standard integrations have been downloaded from the accelerator section of the corresponding Solution Process within SAP Signavio Process Navigator. Detailed scenario options and Business Technology Platform Integration Suite iFlow design for Customer Driven Integrations has been documented in the Explore phase Procedure: Standard Integration Setup Set up the integration according to the developed or downloaded setup guide. Set up the monitoring using Application Interface Framework (AIF) by assigning recipients to users in the tile "Assign Recipients" in “Message Monitoring.” Standard Integration Setup using Cloud Integration Automation Service Review the setup instructions in the Cloud Integration Automation Service User Guide accelerator. Open the link in accelerator Cloud Integration Automation Service - Integration Solution and Scenarios and select the solution and it's scenario(s) as per your project scope. If the Integration scope item has been included within the scope of your project defined in SAP Cloud ALM, you can access the Cloud Integration Automation procedure directly as follows. If the scope item containing the Cloud Integration Automation Service procedure has been set as being in scope, a task for the integration setup is automatically generated and assigned. Open the corresponding Task within the Task app and navigate directly to the Cloud Integration Automation Service procedure within your Cloud Integration Automation Service tenant using the ‘Open Application’ option under the ‘More’ section. Execute the Cloud Integration Automation Service procedure to configure the integration. Customer Driven Integration Setup Set up Customer-Driven Integrations based on iFlow design documented in task Design SAP Business Technology Platform Integration iFlows for Customer-Driven Integrations Set up integrations for integrated applications as documented in the task 'Determine Scenario Options for Integrations' Procedure Note(s): Details regarding the Integration scenarios and setup have already been captured in tasks ‘Determine Details for Customer-Driven Integrations’ and ‘Determine Scenario Options for Integrations’ of the Explore phase. This task needs to be performed for each signed off integration. A fiori app 'Message monitoring for Integration Experts' can be alternatively used for monitoring integrations. The Subscribe to Cloud Integration Automation Services in BTP is referred in Prepare Phase in SAP Supporting Implementation Tool Access deliverable. The following are examples of simplified implementation of SAP BTP Apps using Cloud Integration Automation Service procedures and Boosters Cloud Integration Automation Service - SAP Cloud for Real Estate Cloud Integration Automation Service - SAP Market Rates Management, Bring Your Own Rates data option Cloud Integration Automation Service - SAP S/4HANA Cloud for Projects Cloud Integration Automation Service - SAP Subscription BIlling Cloud Integration Automation Service - Central Invoice Management Cloud Integration Automation Service - SAP Ariba Buying / Workstream: Integration / Tags: 2nd Wave Project / Rollout Project, Hybrid Deployment (Two-Tier ERP), Industry Cloud Apps, SAP BTP Apps
- 267: The purpose of this deliverable is to configure the Development system utilizing the Requirements and Notes in SAP Cloud ALM, generated during the fit-to-standard planning and design workshops in the Explore phase. The notes, or backlog items, are arranged into sprints lasting 1 to 2 weeks, and they undergo an iterative configuration process: Configuration Test Execution Business Verification Adjustments are implemented as needed, transferred, and tested in the Test system before progressing to the Production system. / Workstream: Application Design and Configuration / Tags: 2nd Wave Project / Rollout Project, Output Management, Transport Management
- 268: The purpose of this task is to extend the organization structure in SAP Central Business Configuration in addition to those defined during initial Development System activation. Procedure: Use the Initiate Change functionality in SAP Central Business Configuration to extend organization structure defined in preceding phases. Follow steps in Initial Change section of Help - Project Experience accelerator to select Organizational Structure entry point. Create additional organizational structure entities in the Organizational Structure App as described in Using the Set Up Organizational Structure App section of Help - Project Experience accelerator. Procedure Notes: New company codes must be transported prior to adding banks and lockbox definitions in Development System or Production System for the new company codes to avoid activation errors in the Production System. If using the internal tax calculation, it must be configured before extending the organizational structure. Selecting additional country/region will result in new mandatory org structure maintenance for selected scenarios that are in scope. Organization structure can't be deleted once setup. / Workstream: Application Design and Configuration / Tags: 2nd Wave Project / Rollout Project
- 269: The purpose of this task is to create the additional G/L Accounts for the Chart of Accounts based on the definition developed in the Explore Phase. Apps Used: Manage G/L Account Master Data SAP Business Roles Template Required: SAP_BR_GL_ACCOUNTANT Procedure: Update the descriptions of standard delivered accounts using the Manage G/L Account Master Data app. Create new accounts using the Manage G/L Account Master Data app. The accounts are created from reference accounts and using the Copy button. Transport to Production System. Procedure Notes: See Chart of Accounts Configuration – Overview accelerator and solution help for more information on the overall process for configuring Chart of Accounts. For more information on the special procedure for Chart of Accounts maintenance during upgrade, new scope item activation, or country extension see Help - Chart of Accounts Maintenance - Special Cases accelerator. / Workstream: Application Design and Configuration / Tags: 2nd Wave Project / Rollout Project
- 270: The purpose of this task is to configure the solution based on the fit-to-standard analysis and the customer specific configuration definition. This involves adjusting pre-delivered settings to meet specific customer needs as identified during Fit-to-Standard workshops. The configuration changes are then saved and tested to ensure they meet the business requirements. Procedure: Review the configuration requirements captured during Fit-to-Standard workshops. Access Configuration Activities from SAP Central Business Configuration under Product-Specific Configuration phase to adjust pre-delivered setting per customer specific need based on decision made in Fit-to-Standard workshops. Save setting changes in one or more modifiable transports. Reference Help - Transport Modes to understand the selected transport mode for your project and save changes accordingly. Unit test to confirm the configured business process meets business requirement. Reference Transport Configuration task to move transports cross the system landscape. Procedure Note(s): The list of available configuration activities is dependent on the activated scope and is organized hierarchically according to their business areas. Reference the Business Process Configuration section in the Help - Project Experience for how to search and execute the configuration activities. Configuration changes are recorded in a transport request in the Customizing Tenant of SAP S/4HANA Cloud Development System. The change log of configuration activities can be accessed from SAP Central Business Configuration. Reference the Change Log section in the Help - Project Experience for more details. It is a best practice to use sprints of 1 to 2 weeks to fulfill requirements and enable business processes. Have one default transport for each sprint for all configuration settings. Create a manual type for corrections. Reference industry-specific or non-standard scope item-related accelerators for setup instructions when applicable. / Workstream: Application Design and Configuration / Tags: 2nd Wave Project / Rollout Project
- 271: The purpose of this task is to request the Service Center to complete the pre-approved expert configuration identified and documented during the fit-to-standard in the Explore phase. The expert configuration should not be requested all at one time. It should be part of a sprint where one or more processes are configured; transported and tested in the Test System; and then moved to the Production system. Procedure: Create an Incident/Service Request with the following: Subject: ‘Request Expert Configuration for <<topic>>’ Description: ‘Please maintain the expert configuration as defined on the attached expert configuration worksheet.’ Component: XX-S4C-OPR-SRV Attach the file to the Incident/Service Request. Procedure Notes: Expert configuration is only performed on the Development System. It is transported to the Test System and the Production System via the transport process. The list of pre-approved expert configuration can be found in the Configuration Activity accelerator. / Workstream: Application Design and Configuration / Tags: 2nd Wave Project / Rollout Project
- 272: This task is only relevant for implementations that have International Financial Reporting Standards and that need to support multi-element arrangements in contracts with customers (IFRS 15). The purpose of this task is to notify development that the “bundling functionality” is required for the implementation. Development will assist in verifying consistency of the customer requirements with the solution and guide the customer through the configuration process in the Development System. If the IFRS 15 requirements are not known prior to conducting the fit-to-standard workshop, the notification should be entered once the requirement is identified. Procedure: Create an Incident/Service Request with the Subject ‘IFRS 15 bundling’, Description ‘Our project requires the use of IFRS 15 functionality. Please provide instructions on how we should proceed.’ using the component CO-PC-OBJ_EBR. Follow the instructions that will be provided in the request. Procedure Note(s): See SAP note 2524569 for additional information / Workstream: Application Design and Configuration / Tags: 2nd Wave Project / Rollout Project
- 273: The purpose of this task is to configure data protection solutions per design documented from Fit-to-Standard workshop. Procedures: Define data controller. Define retention policies for transactional data. Define residence policies for transactional data. Define retention policies for master data objects. Define residence polices for master data objects. Define and maintain Purposes for information retrieval. Configure read access logging (if it is in scope) Configure consent administration (if it is in scope) Reference Transport Configuration task to move transports cross the system landscape. Procedure Note(s): Unit test in Development System is not relevant for Data Protection and Privacy configuration settings due to data requirements. Testing of functionality should be planned in Test System sequenced at the end of testing cycles where process related documents at various status are available. / Workstream: Application Design and Configuration
- 274: The purpose of this task is to set up the output management, including the connection of devices, customization of forms, and the determination logic. Procedure: Setup printer. Define the technical set up for printing business documents. This is executed by defining print queues in the SAP S/4HANA Cloud system and installing the SAP Cloud Print Manager for Pull Integration on the local network Setup email. Define the technical setup for sending emails in SAP S/4HANA Cloud. This includes defining the sender domains, sender email addresses and email addresses for testing. Customize form template. Create customer specific form based on the SAP provided templates using Adobe LiveCycle Designer. Activities include downloading the form templates, modifying and testing them locally, and uploading them back to the system for further testing. SAP delivers standard form templates for many business applications as well as for different layout definitions. If a new form has been assigned within the corresponding configuration step, import all changes together to respective systems before testing. Customize email template. Create customer specific email templates based on the SAP S/4HANA Cloud provided templates. Activities include copying an SAP email template, modifying its content, and defining business rules for its usage. SAP delivers standard email templates for many business applications. Procedure Note(s): Use accelerator Output Management Set-up Instructions (1LQ) and Adobe LiveCycle Learn & Support accelerators for more details in procedure steps. Reference Blog accelerators or search in the community with keyword ‘Output Management’ or tag ‘Cloud Print Manager’ for tips & tricks, lessons learned. Forms must be cleared from the Production System import queue prior to the Production System upgrade. / Workstream: Application Design and Configuration, Extensibility / Tags: 2nd Wave Project / Rollout Project, Output Management, Transport Management
- 275: The purpose of this task is to verify that the configured solution meets the expectation of the Business Process Expert. After the solution is configured and unit tested, the Business Process Expert along with the Configuration Expert execute the business processes and verify the process meets the business needs. Multiple iterations may be necessary until the business process is complete. Once satisfied, the Business Process Expert approves the process as complete. Procedure: Review process configured against the corresponding business process flow with the Configuration Expert. If any additional changes are required: Update Design and Configuration documentation accordingly. Reference Document Business Process Target State and Document Configuration Values for tasks for template used and document created in Fit-to-Standard workshop. Reflect additional work required in backlog. Carry out the additional configuration steps. Confirm business requirements are met. Procedure Note(s): For customer using SAP Cloud ALM, update information captured in Requirement and Notes app accordingly. / Workstream: Application Design and Configuration / Tags: 2nd Wave Project / Rollout Project
- 276: The purpose of this task is to release transports in Customizing Tenant of Development System, import to Test System and forward to Production System upon successful testing. Using sprints of 1 to 2 weeks, business processes are configured in Customizing Tenant of Development System, moved to the Test System and tested. At completion of the sprint, transport requests are forwarded and imported into Production System. Apps Used: Export Customizing Transports (Customizing Tenant of Development System) Import Collection (Test System and Production System) SAP Business Roles Template Required: SAP_BR_BPC_EXPERT Procedure: Plan the functionality that will be configured in the sprint. This includes configuration, expert configuration, and master data. Configure in Customizing Tenant of Development System and perform unit and string testing. All configuration is automatically recorded for transport. Any dependent master data must be manually recreated in the Test and Production System before the changes are transported. Release all configuration changes using the Export Customizing Transports application in the Customizing Tenant of Development System. Import the configuration transport with the Import Collection application in the Test System. Forward all the changes to the Production System after E2E, SIT and UAT testing in the Test System, by clicking the ‘Forward’ button in the Import Collection application in Test System. Import the above transport in the Production System by using the Import Collection application. Repeat the process for each configuration sprint. Each sprint should be 1-2 weeks in duration to limit the size of the new content. Procedure Note(s): Configuration dependent master data must be manually recreated in the Test and Production Systems before releasing the transport (i.e. forms, bank definitions, tax jurisdiction codes, calendars, etc.). For an overview of Transport Management, access the SAP Help - 3-System Landscape and Transport Management accelerator. To understand dependencies in transports, reference the Transport Dependencies section of the accelerator. It is recommended, when possible, to release customizing transports in sequence by their creation date. A sequencing check is performed in the background upon release of Transport Request in Development, import to Test and Production. This check applies to transports deployed from SAP Central Business Configuration. Use Default transport request for changes planed during the sprint. Create Manual transport request when needed for corrections during the sprint. Transports created and released in Customizing Tenant of Development System two releases prior need to be recreated in the current release before it can be imported into Test and Production System For customer using SAP Cloud ALM, Feature app can be used to group all related configuration and extension transports that should be moved together. Feature Traceability in Analytics provides a quick overview of the deployment status. Reference Transport Automation section of Help - Importing a Software Collection to turn on automation settings for Import and Forward. To compare configuration setting between Development, Test and Production systems and tenants using Implementation Activities app, reference Help - Implementation Activities accelerator for more details. / Workstream: Application Design and Configuration / Tags: 2nd Wave Project / Rollout Project, Transport Management
- 277: The purpose of this task is to manually maintain settings in the Test and Production System that cannot be transported from the Development system or are changeable directly in Test or Production System. This process can be required anytime changes are transported to the Test and Production System for the following: Initial provisioning and activation of the Test or Production System New country/countries New scope activations Procedures: Access the Implementation Activity app in Test or Production system, filter for settings which are “Editable in all systems” and apply changes for those settings should not be transported. Review Help - Implementation Activities accelerator on applying filter parameters when working in the app. Review Help - Manual Rework Activities in a Target System accelerator and perform manual rework activities in Test or Production system when applicable. Procedure Note(s): Availability of implementation activities that are available after launching the Implementation Activities app is based on the authorization of the user. Document intervals are typically not included in the recording of customizing changes. It is recommended to maintain these intervals for each business process area in target system directly. / Workstream: Application Design and Configuration / Tags: 2nd Wave Project / Rollout Project, Parallel Project Line
- 278: The purpose of this deliverable is to review, evaluate and activate the SAP S/4HANA Cloud new solution scope or new country/region in the Starter or, Development System using SAP Central Business Configuration. It is possible that new features will be delivered during the duration of the project. The project team must decide if they would like to take advantage of the new scope and if it is acceptable within the project schedule, or if they should delay the decision until after Go-Live. The release can occur during any phase of the project. Additional planning and configuration may be required. / Workstream: Application Design and Configuration, Technical Architecture & Infrastructure / Tags: 2nd Wave Project / Rollout Project, Localization
- 279: The purpose of this task is for the project team to verify that the new country requirements are consistent with the existing cross-country configuration. A new country activation should be treated as a new project. Already existing countries are not impacted by new country activation, however, once a new country is activated it cannot be removed. Please note when using the Development System, some configurations cannot be changed and changes to global configurations may have a direct impact on existing countries. Procedure: Use S/4HANA Cloud Road Map Explorer accelerator to review the product roadmap to determine if the country is available for activation. Validate all necessary scope items are available for the planned country using the Availability and Dependencies of Scope Items accelerator. Validate that the planned country to be added complies with the existing global settings and with your planned countries’ legal regulations. Global settings to consider are: Scope bundle Leading group fiscal year variant Leading ledger Chart of Accounts Group currency Currency type (additional consideration) Determine if any of the existing roles and authorizations will be impacted. Determine if any of the existing integrations will be impacted. / Workstream: Application Design and Configuration / Tags: 2nd Wave Project / Rollout Project
- 280: This task is only necessary if new countries are being added to the configuration scope. The purpose of this task is to configure the translation ratios for currencies and enter the exchange rates related to new countries/regions. The configuration and exchange rate data are necessary prior to requesting a new country/region to be added. Apps/Configuration Steps Used: Maintain Exchange Rates Configuration Used (SAP Central Business Configuration): Define Translation Ratios for Currency Translation SAP Business Roles Template Required: SAP_BR_BPC_EXPERT SAP_BR_GL_ACCOUNTANT Procedure: Create entries for Exchange Rate Type ‘M’ and ‘P’ for the currency of the new country/region being requested using the configuration step Define Translation Ratios for Currency Translation. Four entries are required per currency requiring exchange rates. See the system help for additional information. Note that some pairs are delivered with the solution and therefore do not require new entries. (SAP_BR_BPC_EXPERT) Enter the exchange rates for the local and global currencies for exchange Rate Type ‘M’ and ‘P’ using the Maintain Exchange Rates app. Four entries are required per currency. See the system help for additional information. (SAP_BR_GL_ACCOUNTANT) Transport the change project to Production System. See task Execute Configuration Transport Sprints for more details on how to transport configuration. In the Production System, enter the exchange rates for the local and global currencies for exchange Rate Type ‘M’ and ‘P’ using the Maintain Exchange Rates app. Four entries are required per configured country currency. See the system help for additional information. / Workstream: Application Design and Configuration / Tags: 2nd Wave Project / Rollout Project
- 281: The purpose of this task is to review, evaluate, and activate a new solution scope or a new country/region using SAP Central Business Configuration, and then move business configuration settings across the landscape upon successful testing. Procedure: Review the new solution scope related to the latest SAP S/4HANA Cloud release in the SAP S/4HANA Cloud - What’s New Viewer accelerator. Evaluate the SAP Best Practices Process Model and Test Script document related to the new/inactive scenario to determine if the functionality is needed. The scenario details are provided in the SAP Signavio Process Navigator for SAP S/4HANA Cloud accelerator. Reference Initiate Change and Defining Scope section in Help – Project Experience accelerator to select new scenario or country/region in SAP Central Business Configuration. Scope finalization may take some time. Wait for its completion before starting the next activity. Once the Confirm Scoping is Completed milestone is set, a scenario/ country cannot be deactivated or removed anymore. Some Non-Standard and License required scenarios cannot be selected directly from Define Scope app in SAP Central Business Configuration. The request activation of Non-Standard and License Scenarios is done by the Service Center via an Incident/Service Request, with the following information: Subject: ‘Activation of New Licensed Scenarios’ Description: ‘Please activate the scenarios listed below in the Development System.’ List the scenario title(s) as they appear in the Define Scope app of the SAP Central Business Configuration. Component: XX-S4C-OPR-SRV. Review and complete related organizational structure setup in Set Up Organizational Structure app. Reference Organization Structure Management section in Help – Project Experience accelerator for information on organizational units and how to use the app. Deploy scope or country activation. Upon deployment, a Transport Request is created in Customizing Tenant of S/4HANA Cloud Development System. The Transport Request Task is automatically released upon a successful consistency check performed in the background. To avoid transport dependency issues, it is recommended that customer to release this Transport Request before carrying out further configuration activities. Use Export Customizing Transports app to locate the transport using Type ‘Central Business Configuration’ and Change On date in order to Release the Transport Request. Reference Business Process Configuration section in Help – Project Experience accelerator to adjust system settings for selected scope or country/region. Follow the transport steps to move the settings across the system landscape. See task Transport Configuration for more information. Test and verify to make sure the new scenario or country/region work as expected and does not impact existing functionalities. Execute manual rework activities in the target system. See task Manage Settings in Test / Production System for more information. Procedure Notes: When defining initial scope or adding new scope or country/region, it is recommended to limit the number of countries/regions to no more than five. Content from this scope must be processed and transported to Production before adding the next set of countries/regions. Check SAP Note 3151804 - Country Activation Guidance in Central Business Configuration for best practices. Some Non-Standard process scenarios are now available for activation from SAP Central Business Configuration. Please refer to the Availability and Dependencies of Scope Items accelerator to see what can be activated from SAP Central Business Configuration. Multiple scenarios can be selected in the same change project. Scenarios that require an additional subscription cannot be activated without a subscription contract. To view a list of process scenarios that are activated for a particular country/region, go to SAP Central Business Configuration, access My Selected Scope in Define Scope app. When selecting country/region, be aware that there will be new mandatory organizational structure requirements that need to be maintained for selected scenarios. Alternatively, for legal entity operating in multiple countries/regions, consider activating Registration for Indirect Taxation Aboard (RITA) function for the plant aboard scenario instead of activating a new country/region when applicable. Reference task Configure Tax Solution for more details on activation. Organizational structure enhancements, adding new scope or country/region and access to configuration activities from SAP Central Business Configuration is possible during upgrade period with some exceptions. Check SAP Note - 3215993 - Software Update & Upgrade for SAP Central Business Configuration behavior during the software upgrade of SAP S/4HANA systems for exceptional cases. In case of error during consistency check during deployment from SAP Central Business Configuration, a support ticket will be automatically created for SAP Cloud Operations team to address with customer. The Transport Task in Customizing Tenant of S/4HANA Development System will remain in status "Modifiable" and workspace in SAP Central Business Configuration will remain locked until issue is resolved. The Transport Task status will be set to "Released“ upon issue resolution and customer can then proceed with moving the transport request across systems. The new G/L accounts entries may not have direct relevance to the requested scenario(s). The renumbering of new G/L accounts is only possible in the Test System if no entries have been posted in the account in the Production System. See task Adapt Chart of Accounts for more information. If you require further assistance for the newly added G/L accounts after the scenario(s) activation, please create an incident with component FI-CNT-GL. Advance Valuation will be automatically activated by default when adding a new country/region version. Reference SAP Note 3139304 - Automatic Activation of Advanced Valuations for more details and steps to use Classic Valuations before making any postings. For customer using Cloud ALM, reflect additional scope in Process app. Reference Process Scoping in the SAP Cloud ALM for Implementation - Expert Portal accelerator. / Workstream: Application Design and Configuration / Tags: 2nd Wave Project / Rollout Project, Localization
- 282: The purpose of this task is to adapt existing Business Catalogs and Business Roles resulting from the addition of new scope items or an upgrade. In SAP S/4HANA Cloud, Business Catalogs are periodically revised. Some Business Catalogs will be deprecated and replaced by new ones. The deprecated Business Catalogs in the customer system will be removed two releases later. Hence, it is essential to review the retired Business Catalogs after each release and addition of new scope items and make the necessary changes as soon as possible. You can find more information in the SAP S/4HANA Cloud Identity and Access Management (IAM) Release Activities - Action Required accelerator. The SAP Business Role Template Configuration Expert - Business Process Configuration (SAP_BR_BPC_EXPERT) should be checked and adjusted periodically. This role performs business process configuration and other tasks required for implementing SAP solutions. Apps: Business Catalogs Maintain Business Roles Business Role Templates Procedure: Trigger the automatic replacement of deprecated Business Catalog Roles with the new catalog roles from the Business Catalogs app. See the SAP S/4HANA Cloud Identity and Access Management (IAM) Release Activities - Action Required accelerator for step-by-step procedures. Add the new catalogs to existing Business Roles. From the Business Role Templates app, review and apply all missing business catalogs to the Configuration Expert – Business Process Configuration business role. Procedure Notes: It is recommended to use the SAP Business Role Templates only in the Starter System and Development System (e.g., for the fit-to-standard workshop and testing in general). For the Business Roles in the Production System, it is strongly recommended to create your custom business roles based on the identified workplaces. As part of compliance, these custom business roles should then be created and maintained only in the Development System, transported into the Test System, and then forwarded into the Production System via Software Collections. Changing business roles directly in the Production System could cause an error that would put the productive environment and the productive data at greater risk. / Workstream: Technical Architecture & Infrastructure / Tags: 2nd Wave Project / Rollout Project
- 283: The purpose of the deliverable is to manage updates and upgrades of SAP S/4HANA Cloud. With 3-system landscape architecture, software and business configuration or content lifecycles are decoupled. Software updates of S/4HANA systems and reference content upgrades in SAP Central Business Configuration are governed by SAP with predefined schedule. Active business content updates and upgrades are deployed by SAP and scheduled for imports that can be revised by customer. The Release Navigator consolidates essential release content from SAP Product Engineering, SAP User Assistance, SAP Learning, SAP Enterprise Support and other areas of the SAP ecosystem organized by Lines of Business (LoB’s), Industries, and Cross-Topics. Built-in guided tours, created with native SAP Enable Now software, will teach you how to use various SAP tools and websites to locate content when a release comes. The following Release Navigators are available for SAP S/4HANA Cloud Public Edition and SAP Business Technology Platform Release Navigator for SAP S/4HANA Cloud Public Edition Release Navigator for SAP Business Technology Platform Use the accelerator Help - How to get the most of the Release Navigator for SAP BTP for useful information on the usage of Release Navigator. SAP Activate for Upgrade of SAP S/4HANA Cloud Public Edition (3-system landscape) roadmap highlights steps before, after during an upgrade. Also reference the Automation Settings and Planned System Behavior for Lifecycle Events accelerator for transport management related details. / Workstream: Application Design and Configuration, Operations and Support, Technical Architecture & Infrastructure / Tags: 2nd Wave Project / Rollout Project, GROW Adoption Plan, Upgrade
- 284: The purpose of this task is to evaluate new features and functions that are released. These new features and functions are deployed during upgrades and periodic updates. It is important to evaluate new features and functions for the following purposes: Determine new functions and features for implementation to meet continuously changing business needs. Fulfill delta requirements that require custom development efforts and didn't make to the project backlog. Replace custom developments with SAP standard functions to reduce implementation and maintenance efforts. Procedure: Review product road map for features and functions planned for upcoming release using SAP S/4HANA Cloud Road Map Explorer. Use What's New Viewer accelerator to review the latest features and functions that are released with updates and upgrades. Some features require activation. Refer to the Evaluate and Activate Feature from Continuous Delivery task for additional details. Others need to be deployed from SAP Central Business Configuration. Refer to task Review and Process Hotfix Collection and Prepare and Process Upgrade for business content activation details. Understand the impact of the changes to your current implementation scope by accessing the SAP S/4HANA Cloud Release Assessment and Scope Dependency accelerator via S-user ID. Check SAP S/4HANA Cloud Release Restriction accelerator to be aware of exception cases with current release. Reference Upgrade and Maintenance Schedule accelerator to find out the release time of new functionalities. Initiate planning of project to introduce new feature and function to users. Procedure Note(s): Use Valid as Of filter in What's New Viewer to select the respective release(s). Updates are indicated by a suffix like .1, .2, following major release number. For example, SAP S/4HANA Cloud 2108.1 is the first update after major release 2108. Impact analysis is based on customer's used and activated scope in Test or Production System. Reference Blog - Release Assessment and Scope Dependency posts in SAP community to see updated information with regard to the tool. For customer using SAP Cloud ALM, access Upcoming Event card or tile in the Overview app to see upcoming upgrades and use the Impact Assessment link to access the RASD from SAP Cloud ALM. / Workstream: Application Design and Configuration / Tags: 2nd Wave Project / Rollout Project, GROW Adoption Plan, Upgrade
- 285: The purpose of the task is to review information associated with the release of hotfix collection that is deployed to all systems on the same weekend every 2 weeks in the months where no upgrade is planned. Customer should use this information to: Inform the user about the timing of a fix to a previously reported issue Allow planning of business activities around downtime Plan ongoing project tasks around systems' lock phase period before downtime Complete changes in SAP Central Business Configuration and align configuration in all SAP S/4HANA Cloud systems Procedure: Follow the steps described in Knowledge-Based Articles for Known Regression Issues accelerator to understand possible workarounds and find out the Hotfix Collection delivery date when a fix to a previously reported issue will be delivered. Review information in Upgrade and Maintenance Schedule for the latest on: Starter, Development, Test and Production system downtimes. System locks for Import and Export of transports in Development, Test and Production System locks for Configuration and Extensibility Refrain from scheduling activities into development sprints and plan around the downtime and system lock phase period. Check limitation and recommendation details (i.e transports, scope activation, etc) before and during the SAP pre-processing window in the Software Lifecycle Management accelerator. If business content is included in the Hotfix Collection: Notification message of ongoing update will appear in SAP Central Business Configuration Project Experience UI. These updates will be automatically deployed to SAP S/4HANA Cloud Starter system (if not retired) and Development system. A Transport Request is created in Customizing Tenant of the system during deployment. This Transport Request of updated content and associated Task are automatically released upon successful checks performed in the background. This Transport Request is scheduled to be imported to Test System, forwarded to Production System, and then imported to Production System. Customer can revise or suspend the default schedule for moving the transport across the landscape using Import Collection app. In case of error during deployment, SAP Cloud Operations team will be notified to address with customer. Task within the Transport Request can only be released by SAP. Additional Transport Request may be created by SAP to fix issue. Customer may need to release dependent transports and release transport request(s) related to the content updates manually. Procedure Note(s): When reference to Production system, activities are only applicable to live customer. It is recommended as a good practice to immediately deploy business content updates to all S/4HANA system each time when there is one. To view a list of corrections included in the Hotfix Collection, go to the Patch Collection Information note in the useful link section of the Upgrade and Maintenance Schedule accelerator, and download the pdf document that contains a list of affected component ID and description of corrections. Access to Business Process Configuration app from SAP Central Business Configuration is possible until SAP S/4HANA Cloud system enters down-time. Check Upgrade and Maintenance Schedule accelerator for exact timing. Organizational structure enhancements, adding new scope or country/region is possible until the content update is triggered and the project in SAP Central Business Configuration is locked. Check SAP Note - 3215993 - Software Update & Upgrade for actual project block timing. Reference Hotfix Collection Deployment Restrictions for a summary of limitations on project activities. / Workstream: Operations and Support / Tags: 2nd Wave Project / Rollout Project
- 286: The purpose of this task is to review the reports for any product release enhancements and/or changes. As enhancements of the solution are released or retired, the project team should verify the reports are running as expected or if there are any areas of the reports which need to be updated or modified accordingly such as new reporting features, new filtering options, and new content which can be reported on within the solution. Procedure Step(s): Review the latest release notes for the solution to ensure there is no impact to the reports which are used in the project such as features, display, filtering, tables, and data. Review all custom reports to ensure the latest product features do not impact the reports in the solution and make any adjustments as necessary to run the reports successfully. Make any adjustments to the reports (standard and/or custom). Test and verify the reports are running as expected. Procedure Note(s): This task should be routinely reviewed with each solution release where updates are applicable. / Workstream: Analytics
- 287: The purpose of this task is to evaluate and activate, when needed, new functionalities provided in frequent updates from SAP between major upgrades. These updates will give customers access to new capabilities in a nondisruptive manner. Continuous Delivery for S/4HANA Cloud accelerator provides an overview of this service. Some features require customer activation when initially released. Functionality which can be activated has the following characteristics: It is by default not available in the customer system landscape until it is activated in Activate Features app. Activation needs to be performed in each system, Starter (if not retired yet), Development, Test and Production system, respectively. Activation of functionality via this app is NOT reversible. Proper testing should be executed before activation in Production system. A toggle introduced in an update has a limited lifetime. In the next release or the one following, the functionality will be released for all customers. Procedure: Use the What's New Viewer accelerator to get an overview of new and updated features and functions. Understand the impact of the changes to your current implementation scope by using the SAP S/4HANA Cloud Release Assessment and Scope Dependency accelerator via S-user ID. Reference Upgrade and Maintenance Schedule accelerator to find out the release time of new features. Use "Preparation Required" filter in What's New Viewer accelerator to view feature requires preparation work from customer. Follow steps in the Help - Activate Features accelerator to switch on selected feature, when applicable. Perform activation and business configuration setting adjustments from SAP Central Business Configuration, when applicable. Test and release the new feature. Procedure Note(s): Use the "Valid as Of" filter in What's New Viewer to select the respective continuous delivery service(s). An update version is indicated by the release upgrade followed by a suffix such as .1, or .2. For example, SAP S/4HANA Cloud 2108.1 is the first update after major release 2108. Availability of feature updates can be found in the Upgrade and Maintenance Schedule with label YYMM.n, indicating continuous delivery service n for product version YYMM. Feature updates are executed the same way as Hotfix Collection technically. Reference task Review and Process Hotfix Collection for transport request behavior and process for content updates. Impact analysis is based on customer's used and activated scopes in the Test or Production System. Reference Blog - Release Assessment and Scope Dependency posts in SAP community to see updated information with regard to the tool. Customers have the option to perform regression test, if desired, by leveraging the Post Upgrade Tests from the Test Your Process app, under the Post Upgrade Test tab. To access Activate Features app, search it in tree view of Implementation Activities app in S/4HANA Cloud or Business Process Configuration app in SAP Central Business Configuration, Product-Specific Configuration phase. / Workstream: Application Design and Configuration, Operations and Support / Tags: 2nd Wave Project / Rollout Project, Upgrade
- 288: The purpose of the task is to execute periodic upgrade of S/4HANA Cloud. Customer should use the specific Upgrade project in SAP Cloud ALM and tasks from SAP Activate S/4HANA Cloud Upgrade roadmap to prepare for the upgrade, complete regression testing, update business roles and business content when appropriate. It is recommended to start the preparation steps at least 2 weeks before the start of Test system upgrade. It is a best practice to have a dedicated sprint for upgrade related activities and focusing on regression testing. Procedure: Review Upgrade and Maintenance Schedule - 3 System Landscape accelerator for actual timing and Software Lifecycle Management accelerator for behind-the-scenes details. Launch and start upgrade project. Follow tasks in SAP Activate for Upgrade of S/4HANA Cloud roadmap to prepare and complete regression testing in Test System. Revise business roles immediately after the software upgrade in Production system. See task in upgrade roadmap for more details. Plan and execute the business content upgrade with regression testing before the next major release. See task in upgrade roadmap for more details. Procedure Note(s): To access the upgrade roadmap from SAP Activate Roadmap Viewer main page, go to Explore All Roadmaps and select the Upgrade Methodology tab. For customer who uses SAP Cloud ALM, select ‘SAP S/4HANA Cloud 3-system landscape - Upgrade task template' when setting up project in Projects and Setup app. For customer who has an existing ERP system and adopting a Two-Tier enterprise resource planning (ERP) strategy for the S/4HANA Cloud implementation, it is important to notify users running the existing ERP system with regard to the downtime and plan business and project activities accordingly. / Workstream: Operations and Support / Tags: 2nd Wave Project / Rollout Project, Hybrid Deployment (Two-Tier ERP), Upgrade

| ID | WBS | Task | Duration | Start | Finish | Predecessors | Resources | Workstream |
| --- | --- | --- | --- | --- | --- | --- | --- | --- |
| 289 | 4.16 | **Artificial Intelligence setup in Test System** | 0d | 2024-07-24 08:00 | 2024-07-24 17:00 | 265 |  | Integration |
| 290 | 4.16.1 | Prepare System for SAP Build Process Automation | 8h | 2024-07-24 08:00 | 2024-07-24 17:00 | 244 | Integration Implementation Expert | Integration |
| 291 | 4.17 | **Analytics Configuration in the Development Tenant** | 0d | 2024-07-24 08:00 | 2024-07-24 17:00 | 219 |  | Analytics |
| 292 | 4.17.1 | Setup and Enable Embedded Analytics | 8h | 2024-07-24 08:00 | 2024-07-24 17:00 | 290 | Analytics Expert | Analytics |
| 293 | 4.17.2 | Configure Analytics in the Development Tenant | 8h | 2024-07-24 08:00 | 2024-07-24 17:00 | 222, 292 | Analytics Expert | Analytics |
| 294 | 4.18 | **Identity and Access Management Configuration in the Development System** | 0d | 2024-07-24 08:00 | 2024-07-24 17:00 | 267 |  | Application Design and Configuration |
| 295 | 4.18.1 | Configure Identity and Access Management in the Development System | 8h | 2024-07-24 08:00 | 2024-07-24 17:00 | 275 | Configuration Expert | Application Design and Configuration |
| 296 | 4.19 | **Extension Development and Transport** | 0d | 2024-07-24 08:00 | 2024-07-24 17:00 | 239 |  | Extensibility |
| 297 | 4.19.1 | Develop and Transport Key-User Extensions | 8h | 2024-07-24 08:00 | 2024-07-24 17:00 | 240 | Extensibility Expert | Extensibility |
| 298 | 4.19.2 | Develop and Transport Developer Extensions | 8h | 2024-07-24 08:00 | 2024-07-24 17:00 | 297 | Extensibility Expert | Extensibility |
| 299 | 4.19.3 | Develop and Transport Side-by-Side Extensions | 8h | 2024-07-24 08:00 | 2024-07-24 17:00 | 298 | Extensibility Expert | Extensibility |
| 300 | 4.20 | **Data Migration in the Development Tenant** | 0d | 2024-07-24 08:00 | 2024-07-24 17:00 |  |  | Data Management |
| 301 | 4.20.1 | Execute Data Migration in the Development Tenant of SAP S/4HANA Cloud | 8h | 2024-07-24 08:00 | 2024-07-24 17:00 | 222, 275 | Data Migration Expert | Data Management |
| 302 | 4.20.2 | Transport the Data Migration Project in the Test Tenant (Direct Transfer) | 8h | 2024-07-24 08:00 | 2024-07-24 17:00 | 301 | Data Migration Expert | Data Management |
| 303 | 4.21 | **Analytics Configuration in the Test System** | 0d | 2024-07-24 08:00 | 2024-07-24 17:00 | 291 |  | Analytics |
| 304 | 4.21.1 | Configure Analytics in the Test System | 8h | 2024-07-24 08:00 | 2024-07-24 17:00 | 293 | Analytics Expert | Analytics |
| 305 | 4.22 | **Integration Setup in the Production System** | 0d | 2024-07-24 08:00 | 2024-07-24 17:00 | 265 |  | Integration |
| 306 | 4.22.1 | Set Up Integrations in the Production System | 8h | 2024-07-24 08:00 | 2024-07-24 17:00 | 266 | Integration Implementation Expert | Integration |
| 307 | 4.23 | **Artificial Intelligence Setup in Production System** | 0d | 2024-07-24 08:00 | 2024-07-24 17:00 | 267 |  | Integration |
| 308 | 4.23.1 | Deploy SAP Build Process Automation scripts in Production Tenant | 8h | 2024-07-24 08:00 | 2024-07-24 17:00 | 290 | Integration Implementation Expert | Integration |
| 309 | 4.24 | **Test Preparation** | 0d | 2024-07-24 08:00 | 2024-07-24 17:00 |  |  | Testing |
| 310 | 4.24.1 | Prepare Testing Prerequisites | 8h | 2024-07-24 08:00 | 2024-07-24 17:00 |  | Testing Expert | Testing |
| 311 | 4.24.2 | Set Up and Integrate the Automation Tool | 8h | 2024-07-24 08:00 | 2024-07-24 17:00 | 310 | Testing Expert | Testing |
| 312 | 4.24.3 | Create Test Process with Test Automation Tool | 8h | 2024-07-24 08:00 | 2024-07-24 17:00 | 311 | Testing Expert | Testing |
| 313 | 4.24.4 | Create Test Plan | 8h | 2024-07-24 08:00 | 2024-07-24 17:00 | 312 | Testing Expert | Testing |
| 314 | 4.24.5 | Change Test Data Using Data Variant | 8h | 2024-07-24 08:00 | 2024-07-24 17:00 | 313 | Testing Expert | Testing |
| 315 | 4.24.6 | Establish Readiness for User Acceptance Test | 8h | 2024-07-24 08:00 | 2024-07-24 17:00 | 314 | Project Lead | Solution Adoption |

Notes:
- 289: The purpose of this deliverable is to get the Test system ready for running SAP Build Process Automation Bots. This include the installation of all applications as discussed in Artificial Intelligence (AI) Setup deliverable in Explore phase and importing the necessary SAP delivered Package(s). / Tags: 2nd Wave Project / Rollout Project, Artificial Intelligence Technology
- 290: The purpose of this task is to make the Test Tenant ready for execution and testing of various SAP Build Process Automation related Bots. Prerequisites: Scope item(s) related to SAP Build Process Automation are identified. Procedure: Connect the Desktop Agent to the Test Tenant for SAP Build Process Automation to test the scenarios according to the scope items identified. Create a Project, manage the Agent and create automations as defined in the configuration guide of the corresponding scope item. Use the Test Scripts attached to the scope item to confirm completeness of automation capability. / Tags: 2nd Wave Project / Rollout Project, Artificial Intelligence Technology
- 291: The purpose of this deliverable is the configuration of Analytics as detailed and signed off in the Explore phase. / Tags: 2nd Wave Project / Rollout Project
- 292: The purpose of this task is to enable embedded analytics in the solution. Procedure: Follow and review the configuration, technical setup, and enablement published in the SAP Signavio Process Navigator via the following path: Embedded Analytics with SAP S/4HANA accelerator > navigate to the “Accelerators” section > choose the Technical Setup and Enablement for SAP S/4HANA Embedded Analytics file.
- 293: The purpose of this task is to configure Analytics according to the previously developed setup guides. Procedure: Configure reports to the specifications determined in the Explore phase. Execute pre-delivered test scripts where available. Procedure Notes: This task needs to be executed for all reports. / Tags: 2nd Wave Project / Rollout Project
- 294: The purpose of this deliverable is to create, size, and test the business roles in the system according to the previously developed concept. All business roles will be created and maintained only in the Development System and afterwards transported via download and upload into the Test System and then forwarded to the Production System. / Tags: 2nd Wave Project / Rollout Project, Identity and Access Management, Transport Management
- 295: The purpose of this task is to create, maintain restriction field values, and test the business roles in the Development System. Prerequisites: All technical information on the identity and access management have been collected and signed off by the customer. Apps: Business Catalogs Maintain Business Roles Business Role Templates Procedure: Create the custom business roles based on the naming convention and the identified workplaces. The assignment of the business catalogs is based on the Application-Workplace List. Refer to the Help - Manage Your SAP S/4HANA Cloud - Maintain Business Roles accelerator for more details related to the creation and maintenance of custom business roles. Ensure that all required associated catalogs are identified and assigned to the custom business roles. It is recommended to perform a completeness test as part of this step. Define and maintain restriction field values for the custom business roles. Create the required Test Users for each workplace in the Development System and assign the required business roles. Plan and organize the authorization testing throughout all business areas. The testing should include the following: Functional tests of end-to-end processes of the applications Verification of completeness of the business roles Conduct negative testing for sensitive data Execute the authorization tests through the business areas managed by the Authorization Coordinators. Responsibilities are assigned after the test schedule, and test scripts are created. Refine and validate the production business role assignment plan after the responsible line of businesses has tested and signed off the business roles. Business roles are transported from the Development System to Test System and then to the Production System during the configuration sprints and will be assigned during the cutover to production. Procedure Notes: Associated catalogs are additional business catalogs required by business users to perform additional tasks in the respective end-to-end processes. The assignment of the associated catalog to the business roles is optional and should only be assigned if required. Test of completeness is to perform all required business-relevant tasks with unrestricted authorizations. Please use one business role per test case and Test User. If you can't perform all business-relevant tasks, this means that you don't have all associated business catalogs assigned to the business role. It is recommended to use the Business Role Templates only in the Starter System and Development System (e.g., for the fit-to-standard workshop and testing in general). For the business roles in the Production System, it is strongly recommended to create custom business roles based on the identified workplaces. As part of compliance, these custom business roles should then be created and maintained only in the Development System, transported into the Test System, and then forwarded into the Production System via Software Collections. Changing business roles directly in the Production System could cause an error that would put the productive environment and the productive data at greater risk. During the release upgrade, the Business Roles cannot be exported and imported into a Test System that is on a higher release version. Refer to accelerator Help - Export Software Collection for additional information. / Tags: 2nd Wave Project / Rollout Project, Identity and Access Management, Transport Management
- 296: The purpose of this deliverable is the setup of extensions in the Development System and the creation of setup guides, if needed. The following topics are covered within the deliverable Development and setup of the extension in the Development System. Documentation of all actions to implement, transport and test the extension in Test Tenant. / Tags: 2nd Wave Project / Rollout Project, Transport Management
- 297: The purpose of the task is to develop and setup Key-User extensions in the Development system (Customizing Tenant). Apps Used: Export Software Collection (Customizing tenant of Development System) Import Collection (Test System and Production System) Procedure Develop and setup the Key-User extension in the Development System(Customizing Tenant). Refer the help documentation available via the Help - Key User Extensibility accelerator Move content to Test/Production System Using the Export Software Collection application in the Customizing Tenant of the Development System, export the forms, extensions or other objects associated with the current transport. A complete list of the objects moved via Export Software Collection app is available in the application With the Import Collection application in the Test system, the transport can be imported. After E2E, SIT and UAT testing in the Test System, click ‘Forward’ button in the Import Collection application in Test System to send all the changes (configuration and extensibility) to the Production System. In the Production System, use the Import Collection app to import the queued changes. Repeat the process for each development sprint Procedure Note(s): Key User Extensions can only be created in the customizing tenant and can build on top of the client independent developer extensibility objects released in the development client. Key User Extension transports created in the Development System two releases prior to the target system version needs to be recreated in the upgraded development system (in sync with the target systems) before it can be imported into Test and Production System During Release Upgrades, certain objects cannot be imported on a system that is on a higher release than the source system. These object types can be identified using the ‘Extensibility Settings’ app. Please refer the following accelerators for additional information Help - Export Software Collection Help - Transport Dependencies SAP Note 3481049 - SAP S/4HANA Cloud in a 3-system landscape: Release Restriction Note In SAP Cloud ALM , 'Features' App can be used to bundle dependent transports of different transport types e.g., Customizing and Key User Extensibility. Exported transports can be assigned to Features and the Feature Traceability App provides a quick overview of the deployment status per Feature. Prerequisite is the creation of Communication Arrangement SAP Cloud ALM - Change and Deployment Management Integration (SAP_COM_0690). / Tags: 2nd Wave Project / Rollout Project, Transport Management
- 298: The purpose of the task is to develop extensions in the Development Tenant using On-stack developer extensibility. Apps Used: Transport Organizer in ABAP Development Tools (ADT) Import Collection (Test System and Production System) Git-Enabled CTS App (gCTS) Procedure Download and install the front-end components of ABAP Development Tools (ADT) Create an ABAP cloud project with ADT to connect to the ABAP system. Refer section Connect to the ABAP System in accelerator Help - Developer Extensibility Create an ABAP package. Refer section Tasks→Working with ABAP Packages→Creating ABAP Packages in SAP - ABAP Development User Guide Build your corresponding Development Object Perform technical testing in Development Tenant and perform functional unit tests in Customizing tenant of the Development System. Use ABAP Development tools (ADT) to execute unit tests and to evaluate the results concerning functional correctness and code coverage by leveraging the the ABAP Unit framework. Please refer Accelerator Help - Unit Testing with ABAP Unit for additional details ABAP Test Cockpit (ATC) can be used to check the quality of the ABAP development objects during the following scenarios During Development During Transport Release During Central ATC Run It is recommended that the ATC configuration should be set to block the release of transports containing Prio 1 Errors (Red). Please refer Accelerator Help - Checking Quality of ABAP Code with ATC for additional details Perform functional unit tests in Customizing tenant of the Development System. Transport Content to Test/Production System Release workbench transports in ADT With the Import Collection application in the Test system the transport can be imported. After E2E, SIT and UAT testing in the Test System, click ‘Forward’ button in the Import Collection application in Test System to send all the changes (configuration and extensibility) to the Production System. In the Production System, use the Import Collection app to import the queued changes. Repeat the process for each development sprint. If you want to consume an extension developed by the Partner using Multi-Off Delivery and delivered in a Git repository, you can use the Git-enabled Change and Transport System (gCTS) to pull the extension into your system. Follow Section ‘Consuming ABAP Extensions in Multi-Off Delivery’ in the accelerator SAP Help: Multi-Off Delivery to import the object from the Git Repository. Procedure Note(s): From the development tenant in the development system, no transport of customizing and key user extensibility objects is possible Key User Artifacts cannot be consumed from Development Tenant. Field Extensibility is one of the known exceptions to this guideline. Key User Extensions can build upon the Client Independent Developer Extensibility objects released in the development tenant. Please refer accelerator Help - Transport Dependencies for additional details on Object Dependencies A default customizing transport request is technically required but not used to transport content to any other system Developer extension transports created in Customizing Tenant of Development System two releases prior to the target system need to be recreated in the upgraded development system (in sync with the target systems) before it can be imported into Test and Production System In SAP Cloud ALM , 'Features' App can be used to bundle dependent transports of different transport types e.g., Customizing and Key User Extensibility. Exported transports can be assigned to Features and the Feature Traceability App provides a quick overview of the deployment status per Feature. Prerequisite is the creation of Communication Arrangement SAP Cloud ALM - Change and Deployment Management Integration (SAP_COM_0690). / Tags: 2nd Wave Project / Rollout Project, Transport Management
- 299: The purpose of the task is to develop and set up a side-by-side extensions Procedure Develop and set up the side-by-side extension in the development environment based on requirements collected in the Collect Details for Extensions task Refer the SAP Extensibility Explorer and Extend SAP S/4HANA in the cloud and on premise with ABAP based extensions accelerators for additional guidance on development of extensions using the side by side scenario. Procedure Note(s) If there are developer extensibility or key user extensibility scenarios that integrate or depend on side by side extensions, they have to be tested in the customizing tenant of SAP S/4HANA Cloud system. SAP Cloud ALM is integrated with Cloud Transport Management Service to conveniently move side-by-side extensions with e.g., SAP BTP ABAP Environment, based on Features. Please check the Setup & Administration Guide of SAP Cloud ALM to learn more about the integration. / Tags: 2nd Wave Project / Rollout Project, Transport Management
- 300: The purpose of this deliverable is to develop, test, and execute the data migration programs and processes defined in the Explore phase. This consists of iterative data migration and testing cycles focused on the analysis of data, refinement of business rules, and processes designed to move, cleanse, transform, and enrich legacy data required to support the various test cycles and ultimately the production cutover. The test cycles enable the migration team to improve data quality, develop a detailed cutover sequencing plan, exercise data reconciliation and validation required to support the production cutover. / Tags: 2nd Wave Project / Rollout Project, Hybrid Deployment (Two-Tier ERP)
- 301: The purpose of this task is to execute data migration using the data migration cockpit. Data can be migrated using staging tables or through direct transfer. Procedure: Data Migration Using Staging Tables Review the information in Accel ID = S4H_2035. If using an SAP or a third party ETL tool to fill the staging tables, follow the ‘Set-up instructions’ provided with Data Migration to SAP S/4HANA from Staging (‏2Q2‏). Follow the procedure in the ‘Test Script’ accessible via the Data Migration to SAP S/4HANA from Staging (‏2Q2‏) to migrate the various migration objects. Below is a summary of the steps. Create the migration project. Select the migration objects. Populate the staging tables with the data files or alternatively via SAP or 3rd party tools. Process any open mapping tasks to ensure that the source data is mapped correctly. Simulate data migration. Execute data migration. Note the uptime and downtime restrictions related to the Hotfix Collection Deployment. Review status of your migration projects and objects in the Data Migration Status app. Verify migrated data for accuracy and completeness. Document the process and sequence for each object in the cutover plan. Data Migration Using Direct Transfer Review the information in Accel ID = S4H_2035. Follow the “Set up instructions” accessible via the Data Migration to SAP S/4HANA from SAP (BH3) accelerator. A communication arrangement is required to use the direct transfer approach. Follow the procedure in the ‘Test Script’ accessible via the Data Migration to SAP S/4HANA from SAP (BH3) accelerator to migrate the various migration objects. Below is a summary of the steps. Create the migration project. Select a communication arrangement. Select the migration objects that are relevant for your migration project. Select data. Process any open mapping tasks to ensure that the source data is mapped correctly. Simulate data migration. Execute data migration. Note the uptime and downtime restrictions related to the Hotfix Collection Deployment. Document the process and sequence for each object in the cutover plan. Procedure Note(s): See the accelerator SAP S/4HANA Cloud - Migration Cockpit - Cookbook and Help - Data Migration for step-by-step guidance. Consider planned system maintenance windows before executing data migration in order to avoid terminations. See SAP Note 3024158 - Blue-Green Deployment for Hotfix Collection for RISE with SAP S/4HANA Cloud and Software Lifecycle Management for more information. Check for object changes after a release by using the Help - Release Comparison of Migration Object Templates accelerator. Customers transitioning from SAP Business ByDesign can refer Blog : Guide for Proposed Migration - SAP Business ByDesign to S/4HANA Public Cloud (Step 4 onwards). The parallel project line can be used for additional data migration testing. See accelerator Parallel Project Line (PPL) in SAP S/4HANA Cloud (restricted access) and Project Experience - Parallel Project Line (restricted access) for more information on parallel project line. / Tags: 2nd Wave Project / Rollout Project, ByDesign to S/4HANA Cloud Transition (Partner), Parallel Project Line
- 302: This task is only relevant for migration using Direct Transfer. The purpose of this task is to transport the data migration project to the target tenant. Procedure: Follow the procedure in Help - Transporting Projects to the Test System to move the migration project to another tenant.
- 303: The purpose of this deliverable is the configuration of Analytics as configured in the Development System. / Tags: 2nd Wave Project / Rollout Project
- 304: The purpose of this task is to configure Analytics according to the previously developed setup guides. Procedure: Configure to the specifications determined in the Development System. Execute pre-delivered test scripts where available. Test and evaluate the analytics report(s) with the available data. Capture and release the custom objects in the transport request (TR). Procedure Note(s): All configuration related transports need to be captured in a transport request. All standard and custom configuration needs to be transported to the Production System. / Tags: 2nd Wave Project / Rollout Project
- 305: The purpose of this deliverable is to set up the Integration in Production system. This can optionally be included in the cutover list. In case you chose to use the Cloud Integration Automation Service follow the instruction of the Service. / Tags: 2nd Wave Project / Rollout Project
- 306: The purpose of the task is the set up of integrations in the Production System. Prerequisites: Tested integration scenarios in Test system. Procedure: Setup the integration according to the setup guide used for setup in the Test Tenant. Setup the monitoring using Application Interface Framework (AIF) by assigning recipients to users in the tile " Assign Recipients" in "Message Monitoring." Procedure Note(s): This task needs to be performed for each signed off and tested integration. A fiori app 'Message monitoring for Integration Experts' can be alternatively used for monitoring integrations. / Tags: 2nd Wave Project / Rollout Project, Hybrid Deployment (Two-Tier ERP), Industry Cloud Apps
- 307: The purpose of this deliverable is to get the production system ready for running SAP Build Process Automation Bots. This include the installation of all applications as discussed in Artificial Intelligence (AI) Setup deliverable in Explore phase and importing the necessary SAP delivered Package(s). / Tags: 2nd Wave Project / Rollout Project, Artificial Intelligence Technology
- 308: The purpose of this task is to make the Production Tenant ready for running and schedule to run the various SAP Build Process Automation related Bots. Prerequisites: All the SAP SAP Build Process Automation Packages are deployed in the Production Tenant. All the SAP SAP Build Process Automation are already tested in Test Tenant and signed off by the customer. Procedure: Install all the necessary applications which are needed to execute the prepackaged SAP Build Process Automation Bots or custom Bots. Configure the Agent and SAP Build Process Automation Tenant as specified in test scripts of individual scope item and schedule the Bot. / Tags: 2nd Wave Project / Rollout Project, Artificial Intelligence Technology
- 309: The purpose of this deliverable is to ensure readiness for testing activities. This involves configuring a test automation tool, outlining test scripts, and developing a tailored Test Plan to suit your requirements. SAP provides a range of tools, including Test Management within SAP Cloud ALM, and supplementary resources like the Manual Test Script template, to aid in your preparation for testing tasks. / Tags: 2nd Wave Project / Rollout Project
- 310: The purpose of this task is to prepare the prerequisites for testing. This is to ensure the availability of testers, Test Management Systems like SAP Cloud ALM (if used), or to ensure the availability and accessibility of the Testing Automation Tool(s) (if used). In order to ensure the availability of testers and provide key knowledge transfer, a kick-off meeting is advisable during this project phase. The Test Phase Kick Off Template accelerator can be used to prepare and execute the kick-off Meeting. If test automation is in scope, then the technical resources should also be planned if any. If using SAP Cloud ALM as a Test Management System, then the test preparation should take place in the tool directly. You can use the project scope to easily identify the business processes which require testing. You can also view all the requirements created during the fit-to-standard workshops and created dedicated test cases for these requirements. Prerequisites: Define test scenarios and test data Apps Used: SAP Cloud ALM (if used) Test Preparation, Requirements, and Processes Selected Test Automation Tool(s) (if used) Procedure: Confirm the availability of testers and perform knowledge transfers. Confirm test tool setup. Leverage the Test Phase Kick-Off Template accelerator for the kick-off meeting preparation and execution. If using SAP Cloud ALM, prepare test cases based on process flow, application activities, and requirements. / Tags: 2nd Wave Project / Rollout Project
- 311: The purpose of this task is to enable the selected test automation tool(s) from the Test Strategy. The setup and enablement process may vary based on the selected tools. If using a third-party automation testing tool, dedicated accelerators should be provided by the tool vendors. SAP offers the Test Automation Tool for SAP S/4HANA Cloud. The test tool is natively part of the SAP S/4HANA Cloud Quality System. You can integrate the Test Automation Tool with SAP Cloud ALM upon setting up users. SAP Cloud ALM supports this integration to gain an overview of your test cases in the Test Preparation app. It enables you to execute them directly from the Test Execution app. Apps Used: Test Your Processes Test Preparation (SAP Cloud ALM) Test Execution (SAP Cloud ALM) Procedure: Create Users and Configure Test Automation Tool for the SAP S/4HANA Cloud solution. For more details, see the Help - Testing in SAP S/4HANA Cloud accelerator. Set up an integration between SAP S/4HANA Cloud Test Automation Tool and SAP Cloud ALM. For more details, see the Integrating Automated Test Case steps from the SAP Cloud ALM for Implementation Expert Portal - Test Management accelerator. Refer to the SAP Community - SAP S/4HANA Cloud Automation Testing accelerator for information, content, and forums regarding test automation. Procedure Note(s): Add business/test users with the Maintain users option in the Test Your Processes App to set up the Test Automation Tool. Note that these users must be business users (a technical user is insufficient) and must have the appropriate roles to launch the SAP S/4HANA Cloud applications under testing. Two-factor authentication for the Test Automation Tool can also be configured based on the system requirement. For any issues in setting up the test tool or in performing test executions with the tool, create an incident under component ‘CA-CTT-S4C.’ For additional information and blogs on the Test Automation Tool, refer to the Blogs - SAP S/4HANA Cloud Test Automation Tool Tag in the SAP Community accelerator. If you are implementing Hybrid two-tier Deployment Scenarios, the SAP S/4HANA Cloud Test Automation Tool can automate the steps executed in the SAP S/4HANA Cloud system. / Tags: 2nd Wave Project / Rollout Project, Hybrid Deployment (Two-Tier ERP), Parallel Project Line
- 312: The purpose of this task is to manage Test Processes within the Test Automation Tool. Each test process comprises several steps, each of which involves a series of system-related actions. Procedure: Integrate standard automated test scripts into a test plan and modify the necessary data, primarily organizational and master data. For more information, refer to the Help - Testing in SAP S/4HANA Cloud and select the Test Your Processes section. If standard test scripts cannot be directly adopted, consider the following options: Check if Standard test scripts can be partially adopted by creating a custom test process. This can be done by copying standard test processes and modifying them by adding or deleting test process steps and editing action data in test process steps. Create a new automated test script using a recording functionality and incorporate it into the test plan. For more information, refer to the Help - Testing in SAP S/4HANA Cloud and select the Manage Your Test Processes section. Procedure Note(s): The apps Manage Your Test Processes and Test Your Processes are not available during the Explore phase or in the Starter System. These apps will become accessible after provisioning the Test System in the Realize phase. SAP advises modifying standard test processes by adding or deleting existing process steps and using the Data Variant feature to swap test data. After a release upgrade, the customer must manually update any custom-created process steps. The SAP Community - SAP S/4HANA Cloud Automation Testing contains information on standard automated test scripts, coverage of steps, and associated data bindings. Review the Accelerator Test Automation Tool Guide to understand how the SAP S/4HANA Cloud Test Automation Tool works. / Tags: 2nd Wave Project / Rollout Project, Parallel Project Line
- 313: The purpose of this task is to develop a comprehensive test plan, which involves organizing a sequence of standard or customized test cases/test scripts in a specific manner to outline the entire business process. Test plans are sets of test cases executed together to represent end-to-end business processes in specific test cycles, helping you run your testing activities in iterations. Test plans consist of groups of test cases executed together to define end-to-end business processes within specific test cycles. This approach facilitates iterative testing activities, encompassing various test cases such as Automated Test Cases, Manual Test Cases, and Test Cases executed on integrated systems during integration scenarios. The test plan holds immense significance as an artifact during the testing process as it enables monitoring the successful execution of tests. Procedure: Review the end-to-end business processes and define the scope of the Test Plan. If you use SAP Cloud ALM as your Test Management Tool: Create the Test Cases in the SAP Cloud ALM > Test Preparation App either manually or by integrating automation providers with SAP Cloud ALM. Create test plans to categorize test cases in the Test Plan Overview section of SAP Cloud ALM > Test Preparation App. You can find additional information on SAP Cloud ALM Test Plans available in the Help - SAP Cloud ALM Test Plans accelerator. If you are managing Test Plans Manually or using a third-party Test Management Tool: Create the test plan and add the relevant business processes to it. Different test plans should be created for the different phases of the project (i.e., User Acceptance Tests, Regression Tests, Performance Tests, etc.). Procedure Note(s): SAP Cloud ALM currently supports the integration with the following automation providers. Test automation tool for SAP S/4HANA Cloud: Test all solution processes from the solution scenario SAP Best Practices for SAP S/4HANA Cloud. Tricentis Test Automation for SAP integrated with SAP Cloud ALM: Test all browser-based SAP solutions and applications. For more details, see the Automated Test Cases in SAP Cloud ALM accelerator. / Tags: 2nd Wave Project / Rollout Project, Parallel Project Line
- 314: The purpose of this task is to edit test data using data variants. A data variant can be created to change test data used in test actions. An existing data variant can be edited, copied, and deleted. To ease changes, it is possible to download data variants into a spreadsheet to perform changes and upload the updated version. Apps Used: Test Your Processes Test Data Container Procedure: Review or edit data from the Data Variants table in the Test Your Processes application. In the Manage Variant section, Edit variant description, values, and data binding criteria (if applicable). Procedure Note(s): For more details, see the Help - Testing in SAP S/4HANA Cloud accelerator and select the Test Your Processes and Test Data Container sections. Alternatively, you can edit a data variant using Microsoft Excel. For additional information and blogs on the Test Automation Tool and Test Data Container, refer to the Blogs - SAP S/4HANA Cloud Test Automation Tool Tag in the SAP Community accelerator. / Tags: 2nd Wave Project / Rollout Project, Parallel Project Line
- 315: The purpose of this task is to deliver the ‘Readiness for UAT’ survey, to establish whether the testing team is ready to conduct their User Acceptance Test (UAT) activities. Corrective measures derived from the findings report will allow stakeholders to ensure UAT runs smoothly and within the designated timeframe. Procedure: Review the recommendations of the ‘Readiness for UAT’ section of the XM Transformation Procedures accelerator. Identify the survey and reporting recipient groups, listed in the above section of the accelerator, and inform them they are participating in the XM transformation program. Provide these groups (especially report recipients) with enablement on how to use the Readiness for UAT survey and/or interpret the reporting results. Go to the ‘Survey Q’ tab of the XM Transformation Survey Questions accelerator and locate the survey questions, by filtering on the ‘Readiness for UAT’ column. Adapt the survey to the current transformation, finalize and publish. Distribute the Readiness for UAT survey. Once the survey response collection period is over, finalize the dashboard and use it to communicate the feedback to report recipients, with follow-up meetings to discuss the findings and recommending corrective measures accordingly. Document the outcomes in an executive summary for Sponsor and Steering Committee quarterly business review activities. Procedure Note(s): If the process is unclear, engage with the XM Advisory experts from your XM vendor, SAP or implementation partner for assistance. / Tags: 2nd Wave Project / Rollout Project, XM Transformation

| ID | WBS | Task | Duration | Start | Finish | Predecessors | Resources | Workstream |
| --- | --- | --- | --- | --- | --- | --- | --- | --- |
| 316 | 4.25 | **Data Migration in the Test Tenant** | 0d | 2024-07-24 08:00 | 2024-07-24 17:00 |  |  | Data Management |
| 317 | 4.25.1 | Execute Data Migration in the Test Tenant of SAP S/4HANA Cloud | 8h | 2024-07-24 08:00 | 2024-07-24 17:00 | 302, 315 | Data Migration Expert | Data Management |
| 318 | 4.25.2 | Conduct Final Data Quality Assessment | 8h | 2024-07-24 08:00 | 2024-07-24 17:00 | 317 | Data Migration Expert | Data Management |
| 319 | 4.25.3 | Recreate the Data Migration Project in the Production Tenant (Staging Tables) | 8h | 2024-07-24 08:00 | 2024-07-24 17:00 | 318 | Data Migration Expert | Data Management |
| 320 | 4.25.4 | Transport the Data Migration Project in the Production Tenant (Direct Transfer) | 8h | 2024-07-24 08:00 | 2024-07-24 17:00 | 319 | Data Migration Expert | Data Management |
| 321 | 4.26 | **Test Execution** | 0d | 2024-07-24 08:00 | 2024-07-24 17:00 |  |  | Testing |
| 322 | 4.26.1 | Execute the Test Cases within SAP S/4HANA Cloud | 8h | 2024-07-24 08:00 | 2024-07-24 17:00 | 318, 320 | Testing Expert | Testing |
| 323 | 4.26.2 | Defect Management and Re-testing for SAP S/4HANA Cloud | 8h | 2024-07-24 08:00 | 2024-07-24 17:00 | 322 | Business Process Expert; Extensibility Expert; Testing Expert; Configuration Expert | Testing |
| 324 | 4.26.3 | Test Execution Analysis and Reporting for SAP S/4HANA Cloud | 8h | 2024-07-24 08:00 | 2024-07-24 17:00 | 323 | Testing Expert | Testing |
| 325 | 4.27 | **Solution Walkthrough** | 0d | 2024-07-24 08:00 | 2024-07-24 17:00 | 321 |  | Application Design and Configuration |
| 326 | 4.27.1 | Prepare for Solution Walkthrough | 8h | 2024-07-24 08:00 | 2024-07-24 17:00 | 324 | Business Process Expert | Application Design and Configuration |
| 327 | 4.27.2 | Conduct Solution Walkthrough | 8h | 2024-07-24 08:00 | 2024-07-24 17:00 | 326 | Business Process Expert | Application Design and Configuration |
| 328 | 4.28 | **Enablement Delivery** | 0d | 2024-07-24 08:00 | 2024-07-24 17:00 |  |  | Solution Adoption |
| 329 | 4.28.1 | Plan Learning Logistics | 8h | 2024-07-24 08:00 | 2024-07-24 17:00 | 252, 327 | Education Expert | Solution Adoption |
| 330 | 4.28.2 | Deliver Enablement | 8h | 2024-07-24 08:00 | 2024-07-24 17:00 | 329 | Education Expert | Solution Adoption |
| 331 | 4.28.3 | Assess Training Satisfaction | 8h | 2024-07-24 08:00 | 2024-07-24 17:00 | 330 | Project Lead | Solution Adoption |
| 332 | 4.29 | **Support Operations and Handover Plan** | 0d | 2024-07-24 08:00 | 2024-07-24 17:00 | 219 |  | Operations and Support |
| 333 | 4.29.1 | Establish Support and Operation Processes | 8h | 2024-07-24 08:00 | 2024-07-24 17:00 | 220 | Project Lead | Operations and Support |
| 334 | 4.30 | **Cutover Preparation** | 0d | 2024-07-24 08:00 | 2024-07-24 17:00 | 332 |  | Data Management |
| 335 | 4.30.1 | Create Cutover Plan and Documentation | 8h | 2024-07-24 08:00 | 2024-07-24 17:00 | 275, 308, 320 | Project Lead | Data Management |
| 336 | 4.31 | **Analytics Configuration in the Production System** | 0d | 2024-07-24 08:00 | 2024-07-24 17:00 | 321 |  | Analytics |
| 337 | 4.31.1 | Verify Analytics in the Production System | 8h | 2024-07-24 08:00 | 2024-07-24 17:00 | 318 | Analytics Expert | Analytics |
| 338 | 4.32 | **Solution Extension Deployment in Production System** | 0d | 2024-07-24 08:00 | 2024-07-24 17:00 | 296 |  | Extensibility |
| 339 | 4.32.1 | Deploy Solution Extensions | 8h | 2024-07-24 08:00 | 2024-07-24 17:00 | 337 | Extensibility Expert | Extensibility |

Notes:
- 316: The purpose of this deliverable is to execute data migration in the test tenant so that the data can be used and validated in the end-to-end scenario testing. The execution sequence adheres to the migration plan that will be used in the production cutover and is adjusted based on any deficiencies found. Process execution times are also determined and included in the plan. / Tags: 2nd Wave Project / Rollout Project, Hybrid Deployment (Two-Tier ERP)
- 317: The purpose of this task is to execute data migration using the staging tables or/and direct transfer approach. Procedure: Data Migration Using Staging Tables Follow the procedure in the ‘Test Script’ accessible via the Data Migration to SAP S/4HANA from Staging (‏2Q2‏) to migrate the various migration objects. Below is a summary of the steps. Create the migration project. Select the migration objects. Populate the staging tables with the data files or alternatively via SAP or 3rd party tools. Process any open mapping tasks to ensure that the source data is mapped correctly. Simulate data migration. Execute data migration. Note the uptime and downtime restrictions related to the Hotfix Collection Deployment. Review status of your migration projects and objects in the Data Migration Status app. Verify migrated data for accuracy and completeness. Verify the process and sequence for each object in the cutover plan. Data Migration Using Direct Transfer Follow the “Set up instructions” accessible via the Data Migration to SAP S/4HANA from SAP (BH3) accelerator. A communication arrangement is required to use the direct transfer approach. Complete the step below: Note the project and migration objects were created with the import of the project transport. Select a communication arrangement. Select data. Process any open mapping tasks to ensure that the source data is mapped correctly. Simulate data migration. Execute data migration. Note the uptime and downtime restrictions related to the Hotfix Collection Deployment. Verify migrated data for accuracy and completeness – check ‘Migration Results’ button. Verify the process and sequence for each object in the cutover plan. Procedure Note(s): See the accelerator SAP S/4HANA Cloud - Migration Cockpit - Cookbook for step by step guidance. Consider planned system maintenance windows before executing data migration in order to avoid terminations. See SAP Note 3024158 - Blue-Green Deployment for Hotfix Collection for RISE with SAP S/4HANA Cloud and Software Lifecycle Management for more information. Check for object changes after a release by using the Help - Release Comparison of Migration Object Templates accelerator. Customers transitioning from SAP Business ByDesign can refer Blog : Guide for Proposed Migration - SAP Business ByDesign to S/4HANA Public Cloud (Step 4 onwards). / Tags: 2nd Wave Project / Rollout Project, ByDesign to S/4HANA Cloud Transition (Partner), Parallel Project Line
- 318: The purpose of this task is to verify the quality of the data sets once all objects have been migrated into all integrated systems. The stakeholders are notified that data migration is completes and business scenario testing can begin. Procedure: Conduct a final quality assessment with the data owners documenting the findings and action items. Report the final findings to key stakeholders. Finalize documentation of data migration processes. Finalize the data cutover sequence and plan. / Tags: 2nd Wave Project / Rollout Project, Hybrid Deployment (Two-Tier ERP)
- 319: This task is only relevant for migration using staging tables. The purpose of this task is to recreate the data migration project in the target tenant when the staging tables process is used. Procedure: Manually recreate the project and assign the relevant objects in the target tenant. / Tags: 2nd Wave Project / Rollout Project
- 320: This task is only relevant for migration using Direct Transfer. The purpose of this task is to transport the data migration project to the target tenant. Procedure: Follow the procedure in Help - Transporting Projects to the Test System to move the migration project to another tenant.
- 321: The purpose of this deliverable is to simulate business activities to validate that the configured solution and related business processes will satisfy the business operating requirements. Test execution during the Realize phase is a significant activity where the previous planning and preparation activities come together to test the system. This is where planned and prepared tests are executed, statuses are recorded, and defects are raised, fixed, and tested. It's important to highlight the responsible testing resources and document the steps and results since this can be used in the following deliverable for end-user enablement activities. / Tags: 2nd Wave Project / Rollout Project
- 322: The purpose of this task is to carry out testing within SAP S/4HANA Cloud for the test cases specified in the Test Plan created during the Test Preparation Deliverable and oversee the execution of the tests. As a Testing Expert, you can execute and monitor the progress and the result of both manual and Automated test cases. Procedure: Validate if the necessary test data is maintained. If you are executing Manual Test Cases: If SAP Cloud ALM is utilized, executing the manual test cases developed in the Test Preparation Deliverable is possible using SAP Cloud ALM > Test Execution App. You can find additional information on executing manual test cases in the Execute Manual Test Cases steps available in the SAP Cloud ALM for Implementation Expert Portal - Test Management accelerator. If you do not use SAP Cloud ALM, Record your Testing result manually. Please use Manual Test Script Template.xlsx Accelerator to record the results of your Manual Test Cases. If you are executing Automated Test Cases: If SAP Cloud ALM is utilized, the automated test cases can be executed through the connected test automation tool using the SAP Cloud ALM > Test Execution App. Further instructions on executing automated test cases can be found in the Execute Automated Test Cases steps available in the SAP Cloud ALM for Implementation Expert Portal - Test Management accelerator. If you do not use SAP Cloud ALM, Execute the Test Cases (Known as Test Plan in the Test Automation Tool) directly from the Test Automation Tool by executing the test plans from the Test Your Processes App within SAP S/4HANA Cloud System. For more details, see the Test Your Processes steps from the Help - Testing in SAP S/4HANA Cloud Accelerator. Procedure Note(s): Review the Blog - SAP S/4HANA Cloud Test Automation Tool - FAQ Blog Series accelerator for frequently asked questions on the Test Automation Tool. Please validate the Not Supported APIs.xlsx accelerator to verify the roster of APIs that the Test Automation Tool does not endorse. For additional information and blogs on the Test Automation Tool, refer to the Blogs - SAP S/4HANA Cloud Test Automation Tool Tag in the SAP Community accelerator. / Tags: 2nd Wave Project / Rollout Project, Parallel Project Line
- 323: The purpose of this task is to detect any errors during the automated test execution in the SAP S/4HANA Cloud->Test Your Processes, document them in SAP Cloud ALM->Defect, and address them during the test plan execution. Resolving these issues will involve a collaborative effort from a cross-functional team comprising Testing Experts, Configuration Experts, and Business Process Experts, who will hold regular meetings to discuss necessary actions. Procedure: If you use SAP Cloud ALM, Identify the test plan "With Errors" in the Test Execution App and click on Open Execution Log to view a detailed action log in the SAP S/4HANA Cloud Test Automation Tool. Create a Defect in SAP Cloud ALM->Defects; for more details, see the Defects section from SAP Cloud ALM for Implementation Expert Portal - Test Management accelerator. Resolve all failed Test Plans(s) and fix them per the detailed action log. Once all errors have been fixed, re-run the test plan. If the retest is successful, the defect status can be set to Close in SAP Cloud ALM->Defects. Procedure Note(s): Regular defect triage meetings are held to discuss defect resolution. Any defects that must be communicated to SAP should be reported via the SAP Support Portal accelerator. If you experience any test tool-related issues, please create an incident with component CA-CTT-S4C. Other defects should refer to the relevant application component. / Tags: 2nd Wave Project / Rollout Project, Parallel Project Line
- 324: The purpose of this task is to analyze and provide updates/reports on the advancement of test execution conducted within SAP S/4HANA Cloud at various phases, beginning with the creation of test scripts to the assessment of test execution outcomes and defect management. As a Testing Expert, you can analyze and report on both manual and automated test cases. Apps Used: Analyze Automated Test Results SAP Cloud ALM > Test Execution Analysis Procedure: If SAP Cloud ALM is your preferred Test Management tool, you can leverage several analytical dashboards and cards, including Test Preparation Overview and Test Execution Overview, to report on testing progress. To learn how to make the most of these dashboards and cards, refer to the SAP Cloud ALM for Implementation Expert Portal – Test Management accelerator. If you use the S/4HANA Cloud Test Automation Tool, you can utilize the Analyze Automated Test Results app within the Automation-Administrator group to access several dashboards for generating, reviewing, and evaluating test results reports. For more information, refer to the Help - Testing in SAP S/4HANA Cloud accelerator. / Tags: 2nd Wave Project / Rollout Project, Parallel Project Line, Upgrade
- 325: The purpose of this deliverable is to demonstrate the configured solution to the customer project team and management for solution acceptance. / Tags: 2nd Wave Project / Rollout Project
- 326: The purpose of this task is to prepare the key business processes and data needed to demonstrate the functionality to the customer project team and executives. Typically, the customer presents to respective stakeholders their understanding of the solution and how it will be used to run the business. Procedure: Schedule the walkthrough meeting. Decide on the processes to demonstrate in a live system based on importance to the business. The processes should cover the critical business processes at a minimum Determine, jointly, data needs across all teams and select data for demonstration of the processes. It is best to connect the scenarios into a complete story with consistent data. Set-up the processes. If integration or enhancements are required but not completed, a conceptual walk-through can be created to explain how the process will work Create walkthrough overview presentation to supplement the demonstration of the solution to the customer. / Tags: 2nd Wave Project / Rollout Project
- 327: The purpose of this task is to demonstrate the configured solution to the stakeholders and gain final approval that the solution satisfies the business needs. Procedure: Demonstrate the processes to the stakeholders. Typically, the implementation team leads the meeting and demonstrates how the solution will fulfill the business requirements. Some slides maybe necessary to help explain difficult topics, but the focus is always on the system actions. Document and resolve issues. Obtain final sign-off from the customer for the solution. / Tags: 2nd Wave Project / Rollout Project
- 328: The purpose of this deliverable is to cover all of the different methods of enablement delivery available to an organization. Some examples include onsite classroom learning, virtual classroom learning, e-learning self-enablement, blended learning, short micro videos, webinars, social collaboration, blogs, and on the job coaching. Each enablement delivery should cover the following aspects: Train the Trainer - soft skills for trainers to learn all the tips and tricks for effective training delivery, both in person and virtually. Pilot delivery - dry run of the course, either virtually or in person. User acceptance testing training - usually solution overview, basics and navigation, high level introduction to how testing works before UAT starts. Knowledge transfer - an SAP trainer delivers content and knowledge transfer to the trainer. Coaching - one-on-one with users, answering general queries or covering specific areas; can also include floorwalking - where trainers are made available to walk around the customer’s office to respond to individual queries, problems and tasks, post implementation. / Tags: 2nd Wave Project / Rollout Project
- 329: The purpose of this task is to consider all of the training, planning and logistics required to deliver enablement content and courses. Procedure: Review both Managing Enablement Delivery and Enablement Delivery Overview accelerator to gain insight into recognizing the essential elements and prerequisites for delivering enablement. Schedule and book learning rooms and virtual classrooms. Plan the logistics for course administration, invitation management, attendance tracking processes, and course feedback processes. / Tags: 2nd Wave Project / Rollout Project
- 330: The purpose of this task is to equip the designated trainers and end-user with the knowledge and expertise needed to perform their roles effectively. Procedure: Ensure effective knowledge transfer to all users utilizing the most efficient delivery method available. Enhance system acceptance and adoption by providing hands-on experience. Obtain feedback and facilitate ongoing enhancements to learning enablement activities. Pilot the business-critical courses. This provides benefits by allowing for rehearsal and ensuring the final testing of learning content in the chosen delivery mode. Initiate 'Train-the-Trainer' to equip the designated trainers with the knowledge and expertise to deliver effective instructor led learning, whether it be classroom led or virtual online environment. Deliver enablement using the appropriate deliver method tailored to the audience, typically determined during the Learning Needs Analysis for Users) / Tags: 2nd Wave Project / Rollout Project
- 331: The purpose of this task is to deliver the Training Satisfaction survey to each end user who takes training. This will help safeguard the adoption of the solution by end users and assess their satisfaction with training content, activities, and time given to absorb the knowledge transfer. Furthermore, the Training Satisfaction survey also asks participants about their opinion on the solution in terms of ease of use, usefulness and whether they would recommend the solution (Net Promoter Score). Prerequisites: Training on the solution has been delivered to the survey cohort Procedure: Review the recommendations of the ‘Training Satisfaction’ section of the XM Transformation Procedures accelerator. Identify the survey and reporting recipient groups, listed in the above section of the accelerator, and inform them they are participating in the XM transformation program. Provide these groups (especially report recipients) with enablement on how to use the Training Satisfaction survey and/or interpret the reporting results. Go to the ‘Survey Q’ tab of the XM Transformation Survey Questions accelerator and locate the survey questions, by filtering on the ‘Training Satisfaction’ column. Adapt the survey to the current transformation, finalize and publish. Distribute the Training Satisfaction survey. Once the survey response collection period is over, finalize the dashboard and use it to communicate the feedback to report recipients, with follow-up meetings to discuss the findings and recommending corrective measures accordingly. Document the outcomes in an executive summary for Sponsor and Steering Committee quarterly business review activities. Procedure Note(s): If the process is unclear, engage with the XM Advisory experts from: your XM vendor, SAP or implementation partner for assistance. / Tags: 2nd Wave Project / Rollout Project, XM Transformation
- 332: The purpose of this deliverable is to establish technical operations monitoring and support processes and to ensure that the post-production support organization has its strategy in place. / Tags: 2nd Wave Project / Rollout Project, GROW Adoption Plan
- 333: The purpose of this task is to ensure support operations and tools are in place to support go-live and running the new solution efficiently and effectively. The customer organization must be able to: Communicate problems internally Troubleshoot data issues or improper setup of object Research issues Escalate to SAP support if no solution/cause can be found Procedure: Specify the different level of customer’s support structure required and finalize hiring and onboarding process A help desk, typically 2 to 4 weeks after the go live of any new implementation project or enhancement projects. A key user model to act as first line support for business user, go-to person in day to day business activities and onboarding of new hires. A Customer CoE, a key component of continuous improvement to realize more business benefit from SAP solution implementations and improvements. Setup knowledge transfer to prepare the support resources prepare to run the new solution. Knowledge transfer is done through a combination of activities, including formal training, self-study, shadowing, and on-the-job training. Document operation handbook and test support processes and procedures. This includes incident management, problem management, access management, change management, and test management Implement support tools. Reference SAP Cloud ALM for Operations accelerator for functionality to monitor process, provide alerts and prevent disruption. / Tags: 2nd Wave Project / Rollout Project, GROW Adoption Plan
- 334: The purpose of this deliverable is to document the strategy, scope, and timelines for moving from the "as-is" solution to the "to-be" solution and the post-go live support period immediately following go-live. / Tags: 2nd Wave Project / Rollout Project, Hybrid Deployment (Two-Tier ERP)
- 335: The purpose of this task is to develop and document the cutover plan for moving from the current (legacy) solution to the new solution and the post-go live support period. This includes the following activities: Determining scope and timeline Setting up and initializing the production system Setting up and verifying interface connections and integrated applications Data migration User creation Closing the legacy systems Completing all required documentation for regulatory purposes (if required) Planning timeline and meeting schedule for sequencing and simulating the cutover schedule It is important that each team begin the development of the cutover schedule when starting configuration and maintain the list throughout the implementation to avoid missing critical details. Estimated durations should also be kept and refined so that the final schedule can calculated down to the minute. Procedure: Review the How to Approach Remote Cutover accelerator. Create a strategy document including the areas impacted by the cutover. See accelerator Cutover Strategy Template.pptx for an example. Create a draft cutover schedule that documents the end-to-end activities of the cutover. The following are commonly found in a cutover plan. Schedule times and durations Prerequisite steps for the production conversion Closing the legacy systems End-user lockout Business data conversion Post-conversion validation reports (e.g. checking for business data consistency) Go/No-Go decisions Ramp-Up activities (e.g. batch jobs, interfaces, etc.) User unlock Planned system maintenance windows Review roles and responsibilities. Every task within the cutover plan should have an assigned owner, estimated duration, and identified dependencies. The owner of each task should validate and approve the task to ensure they understand their responsibilities. Simulate or test the plan. Multiple iterations may be beneficial. Finalize the plan and associated documentation. Procedure Note(s): Planned system maintenance windows should be considered when planning data migration in order to avoid terminations. See product specific maintenance schedules in the accelerator section. Relevant go-live tasks from integrated applications (BTP apps, Industry Cloud apps, third-party, etc.) are included in the cutover plan resulting in a complete cutover list. / Tags: 2nd Wave Project / Rollout Project, Hybrid Deployment (Two-Tier ERP), Industry Cloud Apps, Parallel Project Line
- 336: The purpose of this deliverable is the configuration of Analytics in the Production System. / Tags: 2nd Wave Project / Rollout Project
- 337: The purpose of this task is to verify the analytics in the Production system according to the previously developed setup guides for a successful run. Prerequisites: Successful import of the transport request in the Production system Successful testing of reports in the Test system Procedure: Execute pre-delivered test scripts where available. Execute custom reports to the specifications which were run through in the previous system. Procedure Note(s): All documentation needs to be delivered upon successful completion which includes the Functional and Technical Specification documents. / Tags: 2nd Wave Project / Rollout Project
- 338: The purpose of this deliverable is to deploy and validate any solution extensions into the Production system of the customer landscape. / Tags: 2nd Wave Project / Rollout Project
- 339: The purpose of this task is to deploy solution extensions in the production system. Prerequisite: Successful testing of extension scenarios. Apps Used: Import Collection Procedure: Using the Import Collection application in Test System to forward the extension scenario related transport to Production System. In the Production System, use Import Collection app to import the queued changes. Repeat the process for each development sprint / Tags: 2nd Wave Project / Rollout Project

| ID | WBS | Task | Duration | Start | Finish | Predecessors | Resources |
| --- | --- | --- | --- | --- | --- | --- | --- |
| 340 | 4.33 | **Phase Closure and Sign-Off Phase Deliverables** | 0d | 2024-07-24 08:00 | 2024-07-24 17:00 | 321 |  |
| 341 | 4.33.1 | Conduct Project Quality Gate | 8h | 2024-07-24 08:00 | 2024-07-24 17:00 | 229, 277, 282, 284, 288, 323, 333, 335, 337, 339 | Project Lead |
| 342 | 4.33.2 | Assess Project Performance | 8h | 2024-07-24 08:00 | 2024-07-24 17:00 | 341 | Project Lead |
| 343 | 4.33.3 | Obtain Customer Sign-Off for Phase Completion | 8h | 2024-07-24 08:00 | 2024-07-24 17:00 | 341 | Project Lead |
| 344 | 5 | **Deploy** | 0d | 2024-07-24 08:00 | 2024-07-24 17:00 |  |  |
| 345 | 5.1 | **Execution/Monitoring of Project** | 0d | 2024-07-24 08:00 | 2024-07-24 17:00 | 340 |  |
| 346 | 5.1.1 | Review the SAP S/4HANA Cloud Onboarding Journey | 8h | 2024-07-24 08:00 | 2024-07-24 17:00 | 225 | Project Lead |
| 347 | 5.1.2 | Direct and Manage Project Execution | 8h | 2024-07-24 08:00 | 2024-07-24 17:00 | 343 | Project Lead |
| 348 | 5.1.3 | Manage Project Issues, Risks, and Changes | 8h | 2024-07-24 08:00 | 2024-07-24 17:00 | 347 | Project Lead |
| 349 | 5.1.4 | Update Project Management Documents | 8h | 2024-07-24 08:00 | 2024-07-24 17:00 | 348 | Project Lead |
| 350 | 5.1.5 | Communicate Project Status and Progress | 8h | 2024-07-24 08:00 | 2024-07-24 17:00 | 349 | Project Lead |
| 351 | 5.2 | **Operations Readiness** | 0d | 2024-07-24 08:00 | 2024-07-24 17:00 |  |  |
| 352 | 5.2.1 | Tracking Goals | 8h | 2024-07-24 08:00 | 2024-07-24 17:00 | 350 | Project Lead |
| 353 | 5.3 | **Production Cutover** | 0d | 2024-07-24 08:00 | 2024-07-24 17:00 | 340 |  |
| 354 | 5.3.1 | Execute Cutover Tasks per the Cutover Plan | 8h | 2024-07-24 08:00 | 2024-07-24 17:00 | 335, 343 | Project Lead |
| 355 | 5.4 | **System Go-Live** | 0d | 2024-07-24 08:00 | 2024-07-24 17:00 | 353 |  |
| 356 | 5.4.1 | Set Production System to Live | 8h | 2024-07-24 08:00 | 2024-07-24 17:00 | 354 | System Administrator |
| 357 | 5.5 | **Phase Closure and Sign-Off Phase Deliverables** | 0d | 2024-07-24 08:00 | 2024-07-24 17:00 | 355 |  |
| 358 | 5.5.1 | Conduct Project Quality Gate | 8h | 2024-07-24 08:00 | 2024-07-24 17:00 | 350, 356 | Project Lead |
| 359 | 5.5.2 | Assess Project Performance | 8h | 2024-07-24 08:00 | 2024-07-24 17:00 | 358 | Project Lead |
| 360 | 5.5.3 | Obtain Customer Sign-Off for Phase/Project Completion | 8h | 2024-07-24 08:00 | 2024-07-24 17:00 | 358 | Project Lead |
| 361 | 5.5.4 | S/4HANA Cloud Public Edition - Published July 24, 2024 | 8h | 2024-07-24 08:00 | 2024-07-24 17:00 | 360 | Project Lead |
| 362 | 6 | **Run** | 0d | 2024-07-24 08:00 | 2024-07-24 17:00 |  |  |
| 363 | 6.1 | **Cloud Operation Framework** | 0d | 2024-07-24 08:00 | 2024-07-24 17:00 | 357 |  |
| 364 | 6.1.1 | Establish Operation Center | 8h | 2024-07-24 08:00 | 2024-07-24 17:00 | 360 | Project Lead |
| 365 | 6.1.2 | Access SAP Support Service | 8h | 2024-07-24 08:00 | 2024-07-24 17:00 | 364 | Project Lead |

Notes:
- 340: The purpose of the phase closure and sign-off deliverable is to. Ensure that all required deliverables from this phase and the project are complete and accurate, and close any outstanding issues Identify lessons learned during the phase to prepare for formal phase closure Capture customer feedback and potential Customer References / Workstream: Project Management / Tags: 2nd Wave Project / Rollout Project, GROW Adoption Plan
- 341: The purpose of the Quality Gate is to ensure that both compliance and project management standards are being upheld within projects. A Quality Gate is a checklist milestone at the end of a project phase . Prior to moving into the next phase each project manager demonstrates that they have been compliant with the mandatory deliverables associated with a methodology while ensuring best practice standards have been applied to ensure quality. Procedure: Review the QGate Checklist Concept SAP Activate accelerator to ensure an understanding on what should be covered during the Quality Gate. Areas covered should include: Specifically checking deliverables been completed with recommended practices Assuring project planning Validating open risks and issues, and measuring customer satisfaction Conduct the Quality Gate utilizing the applicable Quality Gate Template accelerator. / Workstream: Project Management / Tags: 2nd Wave Project / Rollout Project, GROW Adoption Plan, Industry Cloud Apps
- 342: The purpose of this task is to deliver the Project Performance survey to the appropriate stakeholder groups throughout the remainder of the implementation. This includes the core project management team and each team working to transform a ‘Line of Business’ (LoB) business process (supply chain, finance, etc). Each team will provide project team-related feedback in terms of governance, processes and empowerment during the Explore, Realize and Deploy phases. Procedure: Review the recommendations of the ‘Project Performance’ section of the XM Transformation Procedures accelerator. Identify the survey and reporting recipient groups, listed in the above section of the accelerator, and inform them they are participating in the XM transformation program. Provide these groups (especially report recipients) with enablement on how to use the Project Performance survey and/or interpret the reporting results. Go to the ‘Survey Q’ tab of the XM Transformation Survey Questions accelerator and locate the survey questions, by filtering on the ‘Project Performance’ column. Adapt the survey to the current transformation, finalize and publish. Determine the appropriate frequency of survey (at least quarterly or at end of a phase), noting where other surveys (i.e. Solution Validation) incorporate the same questions, so that they do not coincide with what is already distributed to these same user. Distribute the Project Performance survey. Once the survey response collection period is over, finalize the dashboard and use it to communicate the feedback to report recipients, with follow-up meetings to discuss the findings and recommend corrective measures accordingly. Document the outcomes in an executive summary for Sponsor and Steering Committee quarterly business review activities. Procedure Note(s): If the process is unclear, engage with the XM Advisory experts from: your XM vendor, SAP or implementation partner for assistance. For LoB teams only, the ‘Tracking Goals’ survey takes over from the Project Performance survey, at that phase. / Workstream: Solution Adoption / Tags: 2nd Wave Project / Rollout Project, XM Transformation
- 343: The purpose of this task is to conduct a formal closure of the project phase and sign-off the deliverables completed during the phase. When sign-off is obtained, the project can proceed to the next phase. Procedure: Ensure that all required deliverables from this phase and the project are complete and accurate, and close any outstanding issues. Ensure the Q-Gate was completed and identify lessons learned during the phase. Capture customer feedback and potential customer references. Use the Phase Sign-Off Accelerator to document and store in the project repository. / Workstream: Project Management / Tags: 2nd Wave Project / Rollout Project, GROW Adoption Plan
- 344: The purpose of this phase is to set up the production system, conduct cutover activities, confirm customer organization readiness, and to switch business operations to the new system. Deploy Phase Activities: Finalize the solution and business processes for production go-live Resolve all crucial open issues Conduct system tests Proceed with cutover activities including data migration Execute transition and cutover plans including organizational change management (OCM) plans Complete all scheduled end user training Track and report on value delivery Develop post-go live support plan
- 345: The purpose of this deliverable is for the project team to carry out the planned and approved project work and measures project performance to identify variances from the plan. The execution goal is to manage the scope of the work to be done, while monitoring the execution, identifying variances from the plan, monitoring quality results, controlling progress against the plan, controlling changes throughout the project, assess and respond to risks, and communicate the project status. The Project Management Plan developed during the Prepare phase for each of the PM knowledge areas, guide the team's approach to management, execution, monitoring, and control of project activities. This methodology provides steps to be considered when each activity is engaged and supported by the team's monitoring/controlling plans. The project manager is responsible for ensuring that the monitoring/controlling plans developed in the planning phase are applied at the appropriate level of control. / Workstream: Project Management / Tags: 2nd Wave Project / Rollout Project, GROW Adoption Plan
- 346: The purpose of this task is to provide users with the essential knowledge and resources required to successfully navigate and contribute to projects and implementations involving SAP S/4HANA Cloud. Procedure: Explore the SAP methodology and gain familiarity with assessing final activities for solution go live, identification of SAP offerings & services to support go live, and post go live resources using the 5th Onboarding session - Project Guidance one pager accelerator. Review the SAP S/4HANA Cloud Onboarding Journey one pager accelerator to get familiar with the onboarding journey from the welcome & introduction all the way to go-live preparation. Tune into both live and recorded onboarding webinars using the SAP S/4HANA Cloud Public Edition Onboarding Resource Center accelerator. / Workstream: Project Management / Tags: GROW Adoption Plan
- 347: The purpose of this task is to execute the project management plan and accomplish the work defined in the project scope statement for the project manager and the project team. Procedure: In executing the project work, the project team will perform the following types of activities: Perform project tasks to reach project objectives Expend effort and funds to accomplish project objectives Staff, train, and manage the project team members assigned to the project Obtain, manage, and utilize resources Implement and execute the planned methods and standards Create, control, verify, and validate project deliverables Manage the scope of the approved work Manage risks and implement risk response activities Manage issues to closure Adapt approved changes into the scope, plans, and project environment Establish and manage internal and external communications Collect project data and report on progress and performance In monitoring/controlling work results, the project team performs the following types of activities: Compare actual project performance to the project management plan Assess performance to determine whether corrective or preventive actions are necessary Monitor and control project risks and issues Provide metrics to support progress and performance reporting and forecasting Monitor implementation of approved changes Take corrective action as needed See topic ‘Analytics’ in the SAP Cloud ALM for Implementation - Expert Portal accelerator for more information on project monitoring in SAP Cloud ALM. Management plans developed during the Prepare phase guide the team's approach to management, execution, and control of project activities. Note: See the “Prepare Project Management Plan” task in Prepare phase for details. / Workstream: Project Management / Tags: 2nd Wave Project / Rollout Project
- 348: The purpose of this task is to manage project issues, risks, and changes. A consistent and thorough approach to managing project issues is essential for an effective project management system. Efficient issue management entails the appropriate managerial decision-making and progress tracking in line with the project's issue management procedure. Identified issues are centralized and maintained within a single environment. Procedure: Utilize a dedicated issue tracking document based on the Open Issues List Template.xls accelerator. The management of issues entails the following steps: An issue is raised and appropriately categorized based on its relevance to system conversion, solution implementation, or solution operations within SAP technology. This issue is logged in the issue tracking tool, either by SAP, a customer, or an implementation partner. During the issue's creation, the individual raising the issue assigns its priority and identifies the responsible person for resolving it. The Project Manager conducts regular follow-ups on issues, in addition to adhering to the standard issue management process outlined in the project's management plans. Critical issues are reviewed as part of the input for each Quality Gate review meeting. Review and update open issues regularly, and communicate these updates to the relevant stakeholder groups as part of the routine project reporting and communication process. Issue tracking enhances visibility and transparency regarding open issues, problems, action items, and associated action plans for the project management team. Use a centralized issue tracking system to oversee and maintain lists of issues that require action and resolution, thereby guaranteeing the project's success. / Workstream: Project Management / Tags: 2nd Wave Project / Rollout Project, GROW Adoption Plan
- 349: The purpose of this task is to ensure that the project manager keeps the key project management documents up-to-date. The project management documents are, together, a comprehensive body of project documents that include the project schedule, budget/cost information, monitoring/controlling plans for each of the nine knowledge areas of the Project Management Body of Knowledge (PMBOK), and other information as appropriate. The project management plan document developed for each of the knowledge areas provide the foundation for the consistent application of project management practices. Procedure: Refine the project schedule, the project budget, and provide appropriate updates to the management plans, scope document and business case to reflect the detailed scope information created during the project. Includes updates to: Project management plan Project WBS Project schedule Project budget Business case Scope document Backlog document (created in Explore phase) / Workstream: Project Management / Tags: 2nd Wave Project / Rollout Project
- 350: The purpose of this task is to communicate project status and progress. Throughout the project, several project performance reports need to be produced for different purposes and audiences, as defined in the project communication plan. The project manager and project team are responsible for clearly communicating the progress of the key activities, completion of the deliverables, and status against the schedule and budget. Procedure: Produce team member status updates typically every week and share them with the team lead. It is recommended that this report is kept very lightweight and provided to the team lead via e-mail or in a team meeting. Report team status reports on regular cadence, typically weekly. The team status reports are prepared by the team leads and are delivered to the project manager as an input for the project status report. The team status report may be reviewed in regular team review with the Project Manager or provided in a predefined format. Use the project status report template for project status report. Create the project status report on weekly basis, based on the input from individual teams and additional information like issues list, risk list, etc. Prepare executive status report on monthly or quarterly cadence and provide it to the project executive steering group. Generally, In this report re-use the key information from the weekly project status report. Expand on the value and benefits of the program and include discussion of the decisions that are needed from the executive steering group. Additionally, throughout the project, as more is known, review and update the project communication matrix. The communication matrix documents the project team’s approach to communication. It captures the analysis completed as part of communications planning and serves as a tool to guide the project team throughout the project. / Workstream: Project Management / Tags: 2nd Wave Project / Rollout Project
- 351: The purpose of this deliverable is to help check the customer’s ability to operate the new SAP solution as of Go-Live. / Workstream: Operations and Support / Tags: 2nd Wave Project / Rollout Project, GROW Adoption Plan
- 352: The purpose of this task is to track whether the team is operationally ready for the cutover and go-live tasks. Conducted at the beginning and again at the end of the Deploy phase, the ‘Tracking Goals’ survey also supports Organizational Change Management activities and invites participants to give recommendations for improvement. Prerequisites: The Readiness for UAT survey results from the Realize phase have been gathered and communicated The recommendations and findings from the Readiness for UAT feedback are understood and, where applicable, corrective actions have been taken. Procedure: Review the recommendations of the ‘Tracking Goals’ section of the XM Transformation Procedures accelerator. Identify the survey and reporting recipient groups, listed in the above section of the accelerator, and inform them they are participating in the XM transformation program. Provide these groups (especially report recipients) with enablement on how to use the Readiness for UAT survey and/or interpret the reporting results. Go to the ‘Survey Q’ tab of the XM Transformation Survey Questions accelerator and locate the survey questions, by filtering on the ‘Tracking Goals’ column. Adapt the survey to the current transformation, finalize and publish. Distribute the Tracking Goals survey. Once the survey response collection period is over, finalize the dashboard and use it to communicate the feedback to report recipients, with follow-up meetings to discuss the findings and recommending corrective measures accordingly. Document the outcomes in an executive summary for Sponsor and Steering Committee quarterly business review activities. Procedure Note(s): If the process is unclear, engage with the XM Advisory experts from your XM vendor, SAP or implementation partner for assistance. / Workstream: Solution Adoption / Tags: 2nd Wave Project / Rollout Project, GROW Adoption Plan, XM Transformation
- 353: The purpose of this deliverable is to execute the cutover plan and ready the business and system for productive use. The cutover plan contains both business process tasks as well as system tasks. It is executed in the days prior to the go-live date. Examples of potential tasks in the cutover list are as follows. Based on the solution, not all may be applicable. Setting up and initializing the production system Setting up and verifying interface connections Migration or creation of master data Migration of order objects (i.e. purchase orders, sales orders, etc) User creation/access Go/no go decision points Closing the legacy systems Notification of impacted 3rd parties Completing all required documentation for regulatory purposes / Workstream: Data Management, Extensibility, Integration, Operations and Support / Tags: 2nd Wave Project / Rollout Project, Hybrid Deployment (Two-Tier ERP), Identity and Access Management
- 354: The purpose of this task is to cutover to the productive system, obtain the customer approval (sign-off), validate that the go-live acceptance criteria have been met, and confirm the successful go-live. Procedure: Execute the cutover to Production following the task defined in the cutover plan. Document the actual duration of each step to support future projects. Capture any variances to the plan along with the decision maker who approved the change. The cutover manager(s) should proactively notify task owners of upcoming tasks, to ensure their availability. Regularly communicate status to stakeholders. Test and validate the systems after the cutover has finished. Obtain the production approval sign-off, which documents the agreement with the stakeholders that cutover tasks have been successfully executed. / Workstream: Data Management / Tags: 2nd Wave Project / Rollout Project, Hybrid Deployment (Two-Tier ERP)
- 355: The purpose of this deliverable is to set the SAP S/4HANA Cloud system to a Run status which notifies SAP support that Production system is being used for productive business operations. / Workstream: Technical Architecture & Infrastructure / Tags: 2nd Wave Project / Rollout Project
- 356: The purpose of this task is to confirm the Productive system is Live and in Run mode. Procedure: Ensure all project activities of the implementation project are set to ‘Completed.’ Execute Go-Live communications. Procedure Note(s): Change projects can still be created in the Development System and transported to the Test System, and forwarded to the Production System. However, additional diligence is necessary when configuring and testing new processes not to impact the current operations. Short transport sprints (1 to 2 weeks) are still recommended when configuring new functionality. / Workstream: Technical Architecture & Infrastructure / Tags: 2nd Wave Project / Rollout Project
- 357: The purpose of this deliverable is to formally close the phase and conduct deliverable sign-off. During this time the project team will: Ensure that all required deliverables from this phase and the project are complete and accurate, and close any outstanding issues Identify lessons learned during the phase Capture customer feedback and identify potential customer references / Workstream: Project Management / Tags: 2nd Wave Project / Rollout Project, GROW Adoption Plan
- 358: The purpose of this task is to conduct regular quality checks at defined or critical stages of the project lifecycle to assess the health of the project. Procedure: Review the QGate Checklist Concept SAP Activate accelerator to ensure an understanding on what should be covered during the Quality Gate. Areas covered should include: Specifically checking deliverables been completed with recommended practices Assuring project planning Validating open risks and issues, and measuring customer satisfaction Conduct the Quality Gate utilizing the applicable Quality Gate Template accelerator. / Workstream: Project Management / Tags: 2nd Wave Project / Rollout Project, GROW Adoption Plan, Industry Cloud Apps
- 359: The purpose of this task is to deliver the Project Performance survey to the appropriate stakeholder groups throughout the remainder of the implementation. This includes the core project management team and each team working to transform a ‘Line of Business’ (LoB) business process (supply chain, finance, etc). Each team will provide project team-related feedback in terms of governance, processes and empowerment during the Explore, Realize and Deploy phases. Procedure: Review the recommendations of the ‘Project Performance’ section of the XM Transformation Procedures accelerator. Identify the survey and reporting recipient groups, listed in the above section of the accelerator, and inform them they are participating in the XM transformation program. Provide these groups (especially report recipients) with enablement on how to use the Project Performance survey and/or interpret the reporting results. Go to the ‘Survey Q’ tab of the XM Transformation Survey Questions accelerator and locate the survey questions, by filtering on the ‘Project Performance’ column. Adapt the survey to the current transformation, finalize and publish. Determine the appropriate frequency of survey (at least quarterly or at end of a phase), noting where other surveys (i.e. Solution Validation) incorporate the same questions, so that they do not coincide with what is already distributed to these same user. Distribute the Project Performance survey. Once the survey response collection period is over, finalize the dashboard and use it to communicate the feedback to report recipients, with follow-up meetings to discuss the findings and recommend corrective measures accordingly. Document the outcomes in an executive summary for Sponsor and Steering Committee quarterly business review activities. Procedure Note(s): If the process is unclear, engage with the XM Advisory experts from: your XM vendor, SAP or implementation partner for assistance. For LoB teams only, the ‘Tracking Goals’ survey takes over from the Project Performance survey, at that phase. / Workstream: Solution Adoption / Tags: 2nd Wave Project / Rollout Project, XM Transformation
- 360: The purpose of this deliverable is to formally close the phase and conduct deliverable sign-off. Procedure: Ensure that all required deliverables from this phase and the project are complete and accurate, and close any outstanding issues Ensure Project Quality Gate was completed and identify lessons learned during the phase Capture customer feedback and identify potential customer references Formally close the project by obtaining final phase sign-off utilizing the Phase Sign-Off Template accelerator. / Workstream: Project Management / Tags: 2nd Wave Project / Rollout Project, GROW Adoption Plan
- 361: SAP Activate Content for SAP S/4HANA Cloud. Many thanks to all of the people that contribute and provide feedback!! Release Notes / Workstream: Project Management
- 362: The purpose of this phase is to further optimize and automate the operability of the solution. Operability is the ability to maintain IT systems in a functioning and operating condition, guaranteeing system availability and required performance levels to support the execution of the enterprise’s business operations. Run Phase Activities: Ongoing system operations Continuous change management Continuous learning Continuous improvement Release cycles
- 363: The purpose of this deliverable is to establish operation framework or center to manage and operate the S/4HANA Cloud Public Cloud to sustain business operations, continue solution adoption and make incremental value realization. It includes all activities involved in supporting and managing the lifecycle of providing service by SAP, customers' IT support organization and/or Partner to end users. / Workstream: Operations and Support / Tags: 2nd Wave Project / Rollout Project, GROW Adoption Plan
- 364: The purpose of this task is to understand the different roles, tasks and tools needed to establish an operation center. Procedure: Review Best Practices for Operations in Run Phase.pdf accelerator. Form your operation team with recommended personas and RACI matrix in the following operational areas: Monitoring - Monitor systems and processes and observe to detect changes over time. Reference tasks in Operate and Monitor deliverable for examples of ongoing system operation details. Incident management - Manage unplanned event or service interruption by restoring the service to its operational state and minimizing effects on end users. Change management - Seek to minimize the risk associated with changes, including changes to the IT infrastructure, processes, documents, supplier interfaces, etc. Service requests - Managing service requests and support an agreed quality of services, by way of handling user-initiated requests in an efficient and user-friendly manner. Reference task Access SAP Support Service task when creating request to SAP. Test management - Reference test preparation and test execution tasks in SAP Activate for Upgrade of SAP S/4HANA Cloud Public Edition (3-system landscape) on regression test during upgrade. Software lifecycle event management - Reference task Review and Process Hotfix Collection, Evaluate and Activate Feature from Continuous Delivery, and Prepare and Process Upgrade for details of managing release upgrade and updates. / Workstream: Operations and Support / Tags: GROW Adoption Plan
- 365: The purpose of the task is to find support and services provided by SAP when there is a need. SAP for Me is the starting point to find support and services that are available. The Services and Support Dashboard has various apps that allow customer search for Knowledge Based Articles and Notes (KBAs) before logging a case to contact SAP including Expert Chat or creating service request. In the More Resources tab there is My Trust Center that consolidates a customer's view of security and privacy measure, and compliance checks from Accel ID = INN_074. Under Systems and Provisioning Dashboard, customer can see their system(s) status and availability, and subscribe notifications to receive timely updates and remain informed. From Finance and Legal dashboard, customer can access agreement documents (i.e. SLA, Service Level Agreement). Customer can also check out SAP Support Offerings and Programs to engage experts from SAP to run the solution and support end users. Procedure: Access SAP for Me. Search Support Knowledge. Go to various different Dashboards for Legal, Service, Support, Systems related customer specific information. Log Case using Get Support app. Procedure Note(s): Check product specific accelerators when applicable. Review Accelerator SAP Note 3080379 - Customer Penetration Testing Request Process when there is a need to perform an annual penetration test (subject to approval from SAP). / Workstream: Operations and Support / Tags: 2nd Wave Project / Rollout Project

| ID | WBS | Task | Duration | Start | Finish | Predecessors | Resources |
| --- | --- | --- | --- | --- | --- | --- | --- |
| 366 | 6.2 | **Ongoing System Operations** | 0d | 2024-07-24 08:00 | 2024-07-24 17:00 | 357 |  |
| 367 | 6.2.1 | Check External Tax Partner Interface | 8h | 2024-07-24 08:00 | 2024-07-24 17:00 | 368 | System Administrator |
| 368 | 6.2.2 | Manage Posting Periods | 8h | 2024-07-24 08:00 | 2024-07-24 17:00 | 360 | System Administrator |
| 369 | 6.2.3 | Setup Routines and Adapt Changes for Data Protection | 8h | 2024-07-24 08:00 | 2024-07-24 17:00 | 368 | Business Process Expert; System Administrator; Configuration Expert |
| 370 | 6.2.4 | Review Upcoming Regulatory Changes | 8h | 2024-07-24 08:00 | 2024-07-24 17:00 | 367, 369 | System Administrator |
| 371 | 6.2.5 | Monitor SAP Build Process Automation Jobs | 8h | 2024-07-24 08:00 | 2024-07-24 17:00 | 356, 370 | Integration Implementation Expert |
| 372 | 6.2.6 | Continue to Improve and Innovate | 8h | 2024-07-24 08:00 | 2024-07-24 17:00 | 371 | Business Process Expert |
| 373 | 6.3 | **Release and Update Cycles for SAP S/4HANA Cloud** | 0d | 2024-07-24 08:00 | 2024-07-24 17:00 | 357 |  |
| 374 | 6.3.1 | Evaluate New Functionality | 8h | 2024-07-24 08:00 | 2024-07-24 17:00 | 360 | Business Process Expert |
| 375 | 6.3.2 | Review and Process Hotfix Collection | 8h | 2024-07-24 08:00 | 2024-07-24 17:00 | 374 | System Administrator |
| 376 | 6.3.3 | Review Reports for Release Updates | 8h | 2024-07-24 08:00 | 2024-07-24 17:00 | 375 | Analytics Expert |
| 377 | 6.3.4 | Evaluate and Activate Feature from Continuous Delivery | 8h | 2024-07-24 08:00 | 2024-07-24 17:00 | 360, 376 | System Administrator |
| 378 | 6.3.5 | Prepare and Process Upgrade | 8h | 2024-07-24 08:00 | 2024-07-24 17:00 | 374, 377 | Business Process Expert; System Administrator; Extensibility Expert |
| 379 | 6.4 | **Value Management** | 0d | 2024-07-24 08:00 | 2024-07-24 17:00 |  |  |
| 380 | 6.4.1 | Perform Benchmarking Assessment for Value Realization Comparison | 8h | 2024-07-24 08:00 | 2024-07-24 17:00 | 360 | Business Process Expert |
| 381 | 6.4.2 | Assess Solution Performance | 8h | 2024-07-24 08:00 | 2024-07-24 17:00 | 380 | Project Lead |
| 382 | 6.4.3 | Monitor Functional Usage Adoption and Consumption | 8h | 2024-07-24 08:00 | 2024-07-24 17:00 | 381 | Project Lead |

Notes:
- 366: The purpose of this deliverable is to perform routine actions to ensure that the system is running as expected by leveraging the established support and operation processes. / Workstream: Application Design and Configuration, Data Management, Integration, Operations and Support, Technical Architecture & Infrastructure / Tags: 2nd Wave Project / Rollout Project, Artificial Intelligence Technology, GROW Adoption Plan, Upgrade
- 367: This task is relevant for customers working with an external tax partner. The purpose of this task is to check for data inconsistencies between the SAP S/4HANA Cloud system and the external tax partner interface being used. The 'Manage External Tax Postings' app provides customer with a simple way to check for data inconsistencies between their SAP S/4HANA Cloud system and their tax calculation engine. This should occur weekly and before the month end as errors can impact tax reporting in the external tax partner solution. Apps Used: Manage External Tax Postings Schedule Tax Jobs Procedure: Open the Manage External Tax Postings app. Press "Go" to generate the report and review the 'Reason for Hold" column. If there is one posting with status "Failed with Error", it will keep the other posting pending. Failed updates need to be recognized soon.From the 'Failed with Error' link, customers will be able to determine if the error is an internal error or an external error from the tax partner side. This report can be scheduled to be run in the background via the Schedule Tax Jobs app to display a List of Documents for the External Tax System." Review the Help - Manage External Tax Postings accelerator for more information on how to use the app. Procedure Note(s): The 'Manage External Tax Postings' app doesn't appear the SAP Fiori launchpad by default. It has to first be assigned to the S/4HANA Cloud Home Page. / Workstream: Technical Architecture & Infrastructure / Tags: 2nd Wave Project / Rollout Project, Upgrade
- 368: The purpose of this task is to open and close posting periods at the beginning of each period to ensure that journal entries are posted to proper posting periods. This is necessary periodically (for example, monthly) to continue posting transactions to the ledger. See the Help – Manage Posting Periods and Period-End Closing - Plant (BEI) accelerators for additional information. Procedure: In the Manage Posting Periods app, do a search to display posting period variants. Select a posting period variant you want to change, and choose Set Posting Periods > Open Periods. Change the fiscal year period to open a posting period. Save your changes. Procedure Note(s): The process can be scheduled to avoid manual periodic intervention. To schedule background jobs, choose Set Posting Periods > Schedule Recurrence. Opening a posting period will automatically close the previous period. In addition to normal periods, you can change adjustment periods and CO periods to meet your needs. To see the detailed change log for T001B- Manage Posting Period, create an Service Request with the Subject ‘Providing change Log for T001B: Manage Posting Period’, Description 'Dear Cloud operations team, please provide table logs in S/4HANA Cloud system – special case T001B Manage Posting Periods between period <y> and <x>. Please use internal KBA - 2844952 as a reference' on component XX-S4C-OPR-SRV. / Workstream: Technical Architecture & Infrastructure / Tags: 2nd Wave Project / Rollout Project, Upgrade
- 369: The purpose of this task is to define routines for data protection activities, monitor the results, and continuously review the internal data protection requirements as well as the external regulations to adjust data protection configurations. Procedure: Define data archiving routines. This step defines how often and when data archiving should be executed using “Manage Archiving Variant” app. Define data destruction routines. This step defines how often and when data destruction should be executed using APP “Manage Archiving Variant” and “ILM Destruction”. Define master data blocking routines. This step defines routine for executing APP “Block Master Data: Business Partner” and APP “Block master Data: Customer / Supplier”. Monitor data access to sensitive personal information via APP “Read Access Logging Monitor”. Review business processes and include new ILM objects and EoP applications in the configuration scope. Review internal and external data protection requirements to update residence policies and retention policies. Procedure Note(s): Data protection activities are not one-time. Update Design and Configuration Documentation for Data Protection to reflect adjustments in configuration settings for the latest policy changes. / Workstream: Operations and Support
- 370: The purpose of this task is to enable users to monitor, assess the business impact, and plan the next steps to ensure compliance. The changes are available in the regulatory change manager tool, which provides contextualized regulatory changes across the globe to help customers to rapidly adapt to new and evolving regulations that. This tool should be checked periodically based on the change frequency of the required countries. Automated email notifications can be enabled in the tool to keep track of relevant regulatory changes. Prerequisite: Have an S-User or P-User ID. Procedure: Watch the “Overview Video” and read about “What is Regulatory Change Manager” in Accel ID = S4H_461. Access the Regulatory Change Manager tool and personalize your view and notifications. Monitor the regulatory changes related to your countries and determine action plans. Implement action plans where necessary. / Workstream: Operations and Support / Tags: 2nd Wave Project / Rollout Project, Upgrade
- 371: The purpose of this task is to monitor the SAP Build Process Automation Jobs A job is scheduled to execute SAP Build Process Automation Bots at a specified day and time in Set up Artificial Intelligence in Production System deliverable of the Realize phase. Procedure: Login to SAP Build Process Automation Tenant and monitor the job in 'Monitor' Tab. SAP Build offers several interlinked views for Process and Workflow Instances, Automation Jobs, Automation Overview, Visibility Scenarios, Business Rules, Triggers, and Acquired Events. All can be accessed using dedicated tiles in the SAP Build Work Zone. Procedure Note(s): See the 'Monitoring Processes' section within the accelerator Help - SAP Build Process Automation for additional information. / Workstream: Integration / Tags: 2nd Wave Project / Rollout Project, Artificial Intelligence Technology, Upgrade
- 372: The purpose of this task is to continually improve the business process efficiencies by expanding the use of system functionality. Procedure: Set up a new organization model like Customer Center of Expertise to provide transparency and efficiency in implementing improvements and innovations to meet business objectives and goals. Reference Value Management deliverable to monitor usage, perform benchmarking, and assess solution performance. Evaluate new functionality for improvement projects. Reference task Evaluate New Functionality under Release and Upgrade Cycle deliverable. Improve with SAP Continuous Influence by continuously suggest improvements directly to SAP development teams. Create new project. Procedure Note(s): Build upon backlog started during initial implementation to keep track of new change requests and innovations with Innovation Backlog in Run Phase.xlsx template. Use tag “2nd Wave Project” for a complete list of tasks to setup your new improvement project. Customer may choose to switch to "simple" transport mode in the Run phase when there are mainly configuration transports from SAP update and upgrade of business content. Make sure to re-evaluate the transport mode when starting a new project. Switch to “flexible” mode if rolling out multiple countries, or when involving extension developments with complex business process activations. Reference Help - Transport Modes for more details. / Workstream: Application Design and Configuration / Tags: GROW Adoption Plan
- 373: The purpose of the deliverable is to manage updates and upgrades of SAP S/4HANA Cloud. With 3-system landscape architecture, software and business configuration or content lifecycles are decoupled. Software updates of S/4HANA systems and reference content upgrades in SAP Central Business Configuration are governed by SAP with predefined schedule. Active business content updates and upgrades are deployed by SAP and scheduled for imports that can be revised by customer. The Release Navigator consolidates essential release content from SAP Product Engineering, SAP User Assistance, SAP Learning, SAP Enterprise Support and other areas of the SAP ecosystem organized by Lines of Business (LoB’s), Industries, and Cross-Topics. Built-in guided tours, created with native SAP Enable Now software, will teach you how to use various SAP tools and websites to locate content when a release comes. The following Release Navigators are available for SAP S/4HANA Cloud Public Edition and SAP Business Technology Platform Release Navigator for SAP S/4HANA Cloud Public Edition Release Navigator for SAP Business Technology Platform Use the accelerator Help - How to get the most of the Release Navigator for SAP BTP for useful information on the usage of Release Navigator. SAP Activate for Upgrade of SAP S/4HANA Cloud Public Edition (3-system landscape) roadmap highlights steps before, after during an upgrade. Also reference the Automation Settings and Planned System Behavior for Lifecycle Events accelerator for transport management related details. / Workstream: Application Design and Configuration, Operations and Support, Technical Architecture & Infrastructure / Tags: 2nd Wave Project / Rollout Project, GROW Adoption Plan, Upgrade
- 374: The purpose of this task is to evaluate new features and functions that are released. These new features and functions are deployed during upgrades and periodic updates. It is important to evaluate new features and functions for the following purposes: Determine new functions and features for implementation to meet continuously changing business needs. Fulfill delta requirements that require custom development efforts and didn't make to the project backlog. Replace custom developments with SAP standard functions to reduce implementation and maintenance efforts. Procedure: Review product road map for features and functions planned for upcoming release using SAP S/4HANA Cloud Road Map Explorer. Use What's New Viewer accelerator to review the latest features and functions that are released with updates and upgrades. Some features require activation. Refer to the Evaluate and Activate Feature from Continuous Delivery task for additional details. Others need to be deployed from SAP Central Business Configuration. Refer to task Review and Process Hotfix Collection and Prepare and Process Upgrade for business content activation details. Understand the impact of the changes to your current implementation scope by accessing the SAP S/4HANA Cloud Release Assessment and Scope Dependency accelerator via S-user ID. Check SAP S/4HANA Cloud Release Restriction accelerator to be aware of exception cases with current release. Reference Upgrade and Maintenance Schedule accelerator to find out the release time of new functionalities. Initiate planning of project to introduce new feature and function to users. Procedure Note(s): Use Valid as Of filter in What's New Viewer to select the respective release(s). Updates are indicated by a suffix like .1, .2, following major release number. For example, SAP S/4HANA Cloud 2108.1 is the first update after major release 2108. Impact analysis is based on customer's used and activated scope in Test or Production System. Reference Blog - Release Assessment and Scope Dependency posts in SAP community to see updated information with regard to the tool. For customer using SAP Cloud ALM, access Upcoming Event card or tile in the Overview app to see upcoming upgrades and use the Impact Assessment link to access the RASD from SAP Cloud ALM. / Workstream: Application Design and Configuration / Tags: 2nd Wave Project / Rollout Project, GROW Adoption Plan, Upgrade
- 375: The purpose of the task is to review information associated with the release of hotfix collection that is deployed to all systems on the same weekend every 2 weeks in the months where no upgrade is planned. Customer should use this information to: Inform the user about the timing of a fix to a previously reported issue Allow planning of business activities around downtime Plan ongoing project tasks around systems' lock phase period before downtime Complete changes in SAP Central Business Configuration and align configuration in all SAP S/4HANA Cloud systems Procedure: Follow the steps described in Knowledge-Based Articles for Known Regression Issues accelerator to understand possible workarounds and find out the Hotfix Collection delivery date when a fix to a previously reported issue will be delivered. Review information in Upgrade and Maintenance Schedule for the latest on: Starter, Development, Test and Production system downtimes. System locks for Import and Export of transports in Development, Test and Production System locks for Configuration and Extensibility Refrain from scheduling activities into development sprints and plan around the downtime and system lock phase period. Check limitation and recommendation details (i.e transports, scope activation, etc) before and during the SAP pre-processing window in the Software Lifecycle Management accelerator. If business content is included in the Hotfix Collection: Notification message of ongoing update will appear in SAP Central Business Configuration Project Experience UI. These updates will be automatically deployed to SAP S/4HANA Cloud Starter system (if not retired) and Development system. A Transport Request is created in Customizing Tenant of the system during deployment. This Transport Request of updated content and associated Task are automatically released upon successful checks performed in the background. This Transport Request is scheduled to be imported to Test System, forwarded to Production System, and then imported to Production System. Customer can revise or suspend the default schedule for moving the transport across the landscape using Import Collection app. In case of error during deployment, SAP Cloud Operations team will be notified to address with customer. Task within the Transport Request can only be released by SAP. Additional Transport Request may be created by SAP to fix issue. Customer may need to release dependent transports and release transport request(s) related to the content updates manually. Procedure Note(s): When reference to Production system, activities are only applicable to live customer. It is recommended as a good practice to immediately deploy business content updates to all S/4HANA system each time when there is one. To view a list of corrections included in the Hotfix Collection, go to the Patch Collection Information note in the useful link section of the Upgrade and Maintenance Schedule accelerator, and download the pdf document that contains a list of affected component ID and description of corrections. Access to Business Process Configuration app from SAP Central Business Configuration is possible until SAP S/4HANA Cloud system enters down-time. Check Upgrade and Maintenance Schedule accelerator for exact timing. Organizational structure enhancements, adding new scope or country/region is possible until the content update is triggered and the project in SAP Central Business Configuration is locked. Check SAP Note - 3215993 - Software Update & Upgrade for actual project block timing. Reference Hotfix Collection Deployment Restrictions for a summary of limitations on project activities. / Workstream: Operations and Support / Tags: 2nd Wave Project / Rollout Project
- 376: The purpose of this task is to review the reports for any product release enhancements and/or changes as it relates to standard and custom reports. As enhancements of the solution are released or retired, the project team should verify the reports are running as expected or if there are any areas of the reports which need to be updated or modified accordingly such as new reporting features, new filtering options, and new content which can be reported on within the solution. Procedure Step(s): Review the latest release notes for the solution to ensure there is no impact to the reports which are used in the project such as features, display, filtering, tables, and data. Review all custom reports to ensure the latest product features do not impact the reports in the solution and make any adjustments as necessary to run the reports successfully. Review any errors which occur when running the reports and correct them. Once errors are corrected, test and run the report to ensure errors have been resolved. Procedure Note(s): This task should be routinely reviewed with each solution release where updates are applicable. Any reports which are running slowly can be due to many reasons including: selection from large data set, reporting errors, and/or connection errors, etc. Note errors which reports may be generating to analyze and to avoid them in the future. / Workstream: Analytics
- 377: The purpose of this task is to evaluate and activate, when needed, new functionalities provided in frequent updates from SAP between major upgrades. These updates will give customers access to new capabilities in a nondisruptive manner. Continuous Delivery for S/4HANA Cloud accelerator provides an overview of this service. Some features require customer activation when initially released. Functionality which can be activated has the following characteristics: It is by default not available in the customer system landscape until it is activated in Activate Features app. Activation needs to be performed in each system, Starter (if not retired yet), Development, Test and Production system, respectively. Activation of functionality via this app is NOT reversible. Proper testing should be executed before activation in Production system. A toggle introduced in an update has a limited lifetime. In the next release or the one following, the functionality will be released for all customers. Procedure: Use the What's New Viewer accelerator to get an overview of new and updated features and functions. Understand the impact of the changes to your current implementation scope by using the SAP S/4HANA Cloud Release Assessment and Scope Dependency accelerator via S-user ID. Reference Upgrade and Maintenance Schedule accelerator to find out the release time of new features. Use "Preparation Required" filter in What's New Viewer accelerator to view feature requires preparation work from customer. Follow steps in the Help - Activate Features accelerator to switch on selected feature, when applicable. Perform activation and business configuration setting adjustments from SAP Central Business Configuration, when applicable. Test and release the new feature. Procedure Note(s): Use the "Valid as Of" filter in What's New Viewer to select the respective continuous delivery service(s). An update version is indicated by the release upgrade followed by a suffix such as .1, or .2. For example, SAP S/4HANA Cloud 2108.1 is the first update after major release 2108. Availability of feature updates can be found in the Upgrade and Maintenance Schedule with label YYMM.n, indicating continuous delivery service n for product version YYMM. Feature updates are executed the same way as Hotfix Collection technically. Reference task Review and Process Hotfix Collection for transport request behavior and process for content updates. Impact analysis is based on customer's used and activated scopes in the Test or Production System. Reference Blog - Release Assessment and Scope Dependency posts in SAP community to see updated information with regard to the tool. Customers have the option to perform regression test, if desired, by leveraging the Post Upgrade Tests from the Test Your Process app, under the Post Upgrade Test tab. To access Activate Features app, search it in tree view of Implementation Activities app in S/4HANA Cloud or Business Process Configuration app in SAP Central Business Configuration, Product-Specific Configuration phase. / Workstream: Application Design and Configuration, Operations and Support / Tags: 2nd Wave Project / Rollout Project, Upgrade
- 378: The purpose of the task is to execute periodic upgrade of S/4HANA Cloud. Customer should use the specific Upgrade project in SAP Cloud ALM and tasks from SAP Activate S/4HANA Cloud Upgrade roadmap to prepare for the upgrade, complete regression testing, update business roles and business content when appropriate. It is recommended to start the preparation steps at least 2 weeks before the start of Test system upgrade. It is a best practice to have a dedicated sprint for upgrade related activities and focusing on regression testing. Procedure: Review Upgrade and Maintenance Schedule - 3 System Landscape accelerator for actual timing and Software Lifecycle Management accelerator for behind-the-scenes details. Launch and start upgrade project. Follow tasks in SAP Activate for Upgrade of S/4HANA Cloud roadmap to prepare and complete regression testing in Test System. Revise business roles immediately after the software upgrade in Production system. See task in upgrade roadmap for more details. Plan and execute the business content upgrade with regression testing before the next major release. See task in upgrade roadmap for more details. Procedure Note(s): To access the upgrade roadmap from SAP Activate Roadmap Viewer main page, go to Explore All Roadmaps and select the Upgrade Methodology tab. For customer who uses SAP Cloud ALM, select ‘SAP S/4HANA Cloud 3-system landscape - Upgrade task template' when setting up project in Projects and Setup app. For customer who has an existing ERP system and adopting a Two-Tier enterprise resource planning (ERP) strategy for the S/4HANA Cloud implementation, it is important to notify users running the existing ERP system with regard to the downtime and plan business and project activities accordingly. / Workstream: Operations and Support / Tags: 2nd Wave Project / Rollout Project, Hybrid Deployment (Two-Tier ERP), Upgrade
- 379: The purpose of the deliverable is to ensure the customer plans for long-term value management strategy. Review previous recommendations to determine if the benefits have been realized and what further opportunities should be fed back into the continuous learning phase. This would help in ensuring expected benefits are realized in the long term, and that any gaps which might develop are addressed. / Workstream: Solution Adoption / Tags: 2nd Wave Project / Rollout Project, GROW Adoption Plan
- 380: The purpose of this task is to re-evaluate the business process benchmarking collaboratively with Line of Business heads. This exercise helps to understand the benefits realized on the process maturity and the key performance indicators after the implementation of SAP S/4HANA Cloud by comparing the results taken during the Discover phase. The SAP S/4HANA Benchmarking Assessment includes key business performance metrics and best practices for all process areas covered by SAP S/4HANA, such as: Procurement, Sales, Service, R&D Engineering, Supply Chain, Manufacturing, Asset Management, Finance, Human Resources, and Information Technology. Upon participation, you will receive a personalized scorecard in real-time showcasing the Key Performance Indicator (KPI) analysis and process maturity gap on best practices in comparison to industry peers. Prerequisites: The SAP S/4HANA Cloud Benchmarking Assessment was performed during the Discover phase or before the go-live of the SAP S/4HANA Cloud solution to establish a baseline of the business processes. Procedure: Fill out the SAP S/4HANA Benchmarking Assessment. Review the SAP S/4HANA Cloud Benchmarking Assessment – Overview accelerator for further step by step information on how to fill out the assessment. Download the results and compare the results from the baseline assessment to determine the value realized. Leverage continuous benchmarking tools and scorecards for on-going value realization efforts. Procedure Note(s): For any questions about the SAP S/4HANA Benchmarking Assessment or SAP’s Performance Benchmarking Program, please contact valuemanagement@sap.com. / Workstream: Solution Adoption / Tags: 2nd Wave Project / Rollout Project, GROW Adoption Plan
- 381: The purpose of this task is to periodically deliver a Solution Performance survey to the end users, so that their feedback can drive improvements in solution usability, stability, speed, support, compatibility etc. The results will offer important insight into how the solution can be improved, throughout the Run phase. Prerequisites: The solution is live for customer end-users. Procedure: Review the recommendations of the ‘Solution Performance’ section of the XM Transformation Procedures accelerator. Identify the survey and reporting recipient groups, listed in the above section of the accelerator, and inform them they are participating in the XM transformation program. Provide these groups (especially report recipients) with enablement on how to use the Readiness for UAT survey and/or interpret the reporting results. Go to the ‘Survey Q’ tab of the XM Transformation Survey Questions accelerator and locate the survey questions, by filtering on the ‘Solution Performance’ column. Adapt the survey to the current transformation, finalize and publish. Distribute the Solution Performance survey. Once the survey response collection period is over, finalize the dashboard and use it to communicate the feedback to report recipients, with follow-up meetings to discuss the findings and recommending corrective measures accordingly. Procedure Note(s): If the process is unclear, engage with the XM Advisory experts from your XM vendor, SAP or implementation partner for assistance. If the customer prefers, and has the technology, they can set up the Solution Performance survey as a continuous feedback tab inside the solution, rather than ask end users to answer a periodic survey. / Workstream: Solution Adoption / Tags: 2nd Wave Project / Rollout Project, XM Transformation
- 382: The purpose of this task is to monitor the customer’s adoption and consumption based on functional usage data, enabling them to make informed decisions according to their own usage patterns. Procedure: Login in to SAP for Me using your S-user. Navigate to Usage Dashboard using the Usage Dashboard accelerator. Review the Blog - Customer Usage Dashboard 2nd Edition for SAP S/4HANA Cloud Public Edition for more information on what's new. Procedure Note(s): In the usage dashboard for SAP S/4HANA Cloud Public Edition, we provide the following usage data: Monthly Active Users: This table displays the number of active versus valid users over the past 12 months. Valid users are business users with assigned business content and are license–relevant who may not log into the system, while active users have logged in at least once during a given month. Most Used Apps: This table shows the full list of applications used by your organization over the past 12 months. You can select any monthly interval from the past 12 months to see how many times each application was started by the end-users within that period. Feature Usage (Scope Item Usage): This table shows the usage of scope items (referred to as a “Feature“ on SAP for Me) for your SAP S/4HANA Cloud Public Edition. This table includes: Feature Name: Clicking on the name navigates you to the Accel ID = S4H_2087. DDA Status: Displays whether the scope items identified during the sales cycle using the Digital Discovery Assessment (DDA) tool were “selected” or “not selected.” Activation Status: Shows the activation status of the scope item. L6M & L12M Usage Status: Indicates the usage status of the corresponding scope items over the last 6 months (L6M) and last 12 months (L12M)> The data is pre-filtered to show activated and used scope items first. You can also filter by activation status to find active or inactive scope items, and by usage status to see if the scope items have been used within the last 6 or 12 months. Publish Date: May 2024 / Workstream: Solution Adoption / Tags: GROW Adoption Plan
